# trWorkbench 1.0

How a schedule from MS Project changed from version to version. A marks actual dates.

## Version 1 (saved 2008-04-30)

| ID | WBS | Task | Duration | Start | Finish | Predecessors | Complete | Total float | Constraint |
| --- | --- | --- | --- | --- | --- | --- | --- | --- | --- |
| 1 | 1 | **TrWorkbench 1.0** | 45d? | 2008-03-19 A | 2008-05-20 |  | 1% | 0d |  |
| 2 | 1.1 | **Inception phase** | 23d? | 2008-03-19 A | 2008-04-18 |  | 5% | 20d |  |
| 3 | 1.1.1 | **Inception Iteration 1** | 23d? | 2008-03-19 A | 2008-04-18 |  | 5% | 20d |  |
| 4 | 1.1.1.1 | **Requirements** | 16d? | 2008-03-19 A | 2008-04-09 |  | 29% | 27d |  |
| 5 |  | Develop Vision | 2d? | 2008-03-19 A | 2008-03-20 A |  | 100% |  |  |
| 6 |  | Find Actors and Use Cases | 2d | 2008-03-19 A | 2008-03-20 A |  | 100% |  |  |
| 7 |  | Detail a Use Case (multiple) | 5d | 2008-03-27 | 2008-04-02 | 6 |  | 27d | finish no earlier than 2008-04-02 |
| 8 |  | Finalize Use Case Model | 5d | 2008-04-03 | 2008-04-09 | 7 |  | 8d | start no earlier than 2008-04-02 |
| 9 | 1.1.1.2 | **Analysis and Design** | 18d | 2008-03-26 | 2008-04-18 |  |  | 20d |  |
| 10 |  | Architectural Analysis | 4d | 2008-03-26 | 2008-03-31 |  |  | 15d | start no earlier than 2008-03-26 |
| 11 | 1.1.1.2.2 | **Construct Architectural Proof of Concept** | 17d | 2008-03-27 | 2008-04-18 |  |  | 20d |  |
| 12 |  | Investigate clinical data representation approaches | 12d | 2008-03-27 | 2008-04-11 |  |  | 1d | start no earlier than 2008-03-27 |
| 13 |  | Analyse genomic data storage and retrieval | 8d | 2008-04-02 | 2008-04-11 |  |  | 6d | finish no earlier than 2008-04-11 |
| 14 |  | Define integrated object model (clinical, genomic, imaging) | 5d | 2008-04-14 | 2008-04-18 | 12 |  | 1d |  |
| 15 | 1.1.1.3 | **UI Analysis** | 7d? | 2008-03-27 | 2008-04-04 |  |  | 30d |  |
| 16 |  | Analysis of existing caIntegrator UI and Analysis tools (KM Plots, GenePattern etc) | 7d? | 2008-03-27 | 2008-04-04 |  |  | 11d | finish no earlier than 2008-04-04 |
| 17 | 1.1.1.4 | **Project Management** | 23d? | 2008-03-19 | 2008-04-18 |  |  | 20d |  |
| 18 |  | Develop Iteration Plan: I1 | 3d | 2008-03-19 | 2008-03-21 |  |  | 21d |  |
| 19 |  | Identify and Assess Risks | 10d | 2008-03-24 | 2008-04-04 |  |  | 11d | finish no earlier than 2008-04-04 |
| 20 |  | Develop Iteration Plan: E1 | 5d? | 2008-04-14 | 2008-04-18 |  |  | 1d | finish no earlier than 2008-04-18 |
| 21 |  | Assess Iteration | 1d? | 2008-04-18 | 2008-04-18 |  |  | 1d | start no earlier than 2008-04-18 |
| 22 | 1.1.1.5 | **Environment** | 5d? | 2008-04-14 | 2008-04-18 |  |  | 20d |  |
| 23 |  | Setup Tools | 5d? | 2008-04-14 | 2008-04-18 |  |  | 1d | finish no earlier than 2008-04-18 |
| 24 |  | Inception Complete | 1d? | 2008-04-18 | 2008-04-18 |  |  | 2d | finish no earlier than 2008-04-18 |
| 25 | 1.3 | **Elaboration Phase** | 22d? | 2008-04-21 | 2008-05-20 | 24 |  | 0d |  |
| 26 | 1.3.1 | **Elaboration - Iteration 1** | 21d? | 2008-04-21 | 2008-05-19 |  |  | 1d |  |
| 27 | 1.3.1.1 | **Project Management** | 20d? | 2008-04-21 | 2008-05-16 |  |  | 2d |  |
| 28 |  | Iteration Plan | 4d? | 2008-04-28 | 2008-05-01 |  |  | 11d | start no earlier than 2008-04-28 |
| 29 |  | Risk Management | 17d? | 2008-04-24 | 2008-05-16 |  |  | 2d | start no earlier than 2008-04-24 |
| 30 |  | Manage communication (listserv, skype etc) | 20d? | 2008-04-21 | 2008-05-16 |  |  | 2d | finish no earlier than 2008-05-16 |
| 31 | 1.3.1.2 | **Requirements** | 8d? | 2008-04-28 | 2008-05-07 |  |  | 7d |  |
| 32 | 1.3.1.2.1 | **Revise Inception Use Cases** | 3d? | 2008-04-28 | 2008-04-30 |  |  | 12d |  |
| 33 |  | Gene Expression | 3d? | 2008-04-28 | 2008-04-30 |  |  | 12d | start no earlier than 2008-04-28 |
| 34 | 1.3.1.2.2 | **Elaboration Use Case definition** | 8d? | 2008-04-28 | 2008-05-07 |  |  | 7d |  |
| 35 |  | Imaging | 8d? | 2008-04-28 | 2008-05-07 |  |  | 7d | finish no earlier than 2008-05-07 |
| 36 |  | Methylation data | 8d? | 2008-04-28 | 2008-05-07 |  |  | 7d | start no earlier than 2008-04-28 |
| 37 |  | Update study | 8d? | 2008-04-28 | 2008-05-07 |  |  | 7d | start no earlier than 2008-04-28 |
| 38 |  | Security requirements | 8d? | 2008-04-28 | 2008-05-07 |  |  | 7d | start no earlier than 2008-04-28 |
| 39 | 1.3.1.3 | **Analysis and Design** | 10d? | 2008-04-21 | 2008-05-02 |  |  | 2d |  |
| 40 |  | Identify subsystems | 10d? | 2008-04-21 | 2008-05-02 |  |  | 2d | finish no earlier than 2008-05-02 |
| 41 |  | Identify risk characteristics | 8d? | 2008-04-21 | 2008-04-30 |  |  | 2d | start no earlier than 2008-04-21 |
| 42 | 1.3.1.3.3 | **Use-case design** | 10d | 2008-04-21 | 2008-05-02 |  |  | 2d |  |
| 43 |  | manage queries (create and execute genomic with clinical) | 10d | 2008-04-21 | 2008-05-02 |  |  | 2d | finish no earlier than 2008-05-02 |
| 44 |  | Perform Analysis (genepattern) | 10d | 2008-04-21 | 2008-05-02 |  |  | 2d |  |
| 45 |  | Object Model | 10d | 2008-04-21 | 2008-05-02 |  |  | 2d |  |
| 46 |  | Implementation model | 10d | 2008-04-21 | 2008-05-02 |  |  | 2d |  |
| 47 | 1.3.1.4 | **Implementation** | 15d? | 2008-04-28 | 2008-05-16 |  |  | 2d |  |
| 48 |  | HTP data management | 10d | 2008-05-05 | 2008-05-16 | 39 |  | 2d |  |
| 49 |  | Query | 10d | 2008-05-05 | 2008-05-16 | 39 |  | 2d |  |
| 50 |  | caCore Code Generation | 5d? | 2008-04-28 | 2008-05-02 |  |  | 10d | start no earlier than 2008-04-28 |
| 51 |  | JUnit testing | 3d | 2008-05-14 | 2008-05-16 | 39 |  | 2d | start no earlier than 2008-05-14 |
| 52 | 1.3.1.5 | **Test** | 3d | 2008-05-14 | 2008-05-16 |  |  | 0d |  |
| 53 |  | Selenium testing framework(stretch) | 3d | 2008-05-14 | 2008-05-16 | 39 |  | 0d | finish no earlier than 2008-05-16 |
| 54 | 1.3.1.6 | **Environment** | 4d | 2008-04-28 | 2008-05-01 |  |  | 11d |  |
| 55 |  | Eclipse configuration | 2d | 2008-04-29 | 2008-04-30 |  |  | 12d | finish no earlier than 2008-04-30 |
| 56 |  | CI environment | 2d | 2008-04-28 | 2008-04-29 |  |  | 13d | finish no earlier than 2008-04-29 |
| 57 |  | ANT | 2d | 2008-04-30 | 2008-05-01 |  |  | 11d | finish no earlier than 2008-05-01 |
| 58 | 1.3.1.7 | **Configuration and Change Management** | 1d? | 2008-05-16 | 2008-05-16 |  |  | 2d |  |
| 59 |  | Set up defect tracker | 1d? | 2008-05-16 | 2008-05-16 |  |  | 2d | finish no earlier than 2008-05-16 |
| 60 |  | Set up feature request tracker | 1d? | 2008-05-16 | 2008-05-16 |  |  | 2d | finish no earlier than 2008-05-16 |
| 61 | 1.3.1.8 | **Deployment** | 8d | 2008-04-21 | 2008-04-30 |  |  | 12d |  |
| 62 |  | Get DEV environment | 8d | 2008-04-21 | 2008-04-30 |  |  | 12d | finish no earlier than 2008-04-30 |
| 63 |  | ARC document (Draft) | 3d | 2008-04-28 | 2008-04-30 |  |  | 12d | start no earlier than 2008-04-28 |
| 64 |  | Elaboration 1 Complete | 1d? | 2008-05-19 | 2008-05-19 | 52 |  | 0d |  |
| 65 | 1.3.2 | **Elaboration - Iteration 2** | 1d? | 2008-05-20 | 2008-05-20 | 64 |  | 0d |  |
| 66 |  | Project Management | 1d? | 2008-05-20 | 2008-05-20 |  |  | 0d |  |
| 67 |  | Requirements | 1d? | 2008-05-20 | 2008-05-20 |  |  | 0d |  |
| 68 |  | Analysis and Design | 1d? | 2008-05-20 | 2008-05-20 |  |  | 0d |  |
| 69 |  | Implementation | 1d? | 2008-05-20 | 2008-05-20 |  |  | 0d |  |
| 70 |  | Test | 1d? | 2008-05-20 | 2008-05-20 |  |  | 0d |  |

| ID | Task | Duration | Start | Finish | Total float |
| --- | --- | --- | --- | --- | --- |
| 71 | Environment | 1d? | 2008-05-20 | 2008-05-20 | 0d |
| 72 | Configuration and Change Management | 1d? | 2008-05-20 | 2008-05-20 | 0d |
| 73 | Elaboration 2 Complete | 1d? | 2008-05-20 | 2008-05-20 | 0d |

## Version 2 (saved 2008-04-30)

Last finish stays 2008-05-20.

Removed: 51 JUnit testing

Changed:

| ID | Task | Finish | Duration | Complete | Total float |
| --- | --- | --- | --- | --- | --- |
| 1 | **TrWorkbench 1.0** |  |  | 1% → 2% |  |
| 32 | **Revise Inception Use Cases** | 2008-04-30 → 2008-05-01 (+1d) | 3d? → 4d |  | 12d → 13d |
| 33 | Gene Expression | 2008-04-30 → 2008-05-01 (+1d) | 3d? → 4d |  | 12d → 13d |

## Version 3 (saved 2008-05-01)

Note of the change: Added task for external system access

Last finish stays 2008-05-20.

Added:

| ID | Task | Duration | Start | Finish | Constraint | Resources |
| --- | --- | --- | --- | --- | --- | --- |
| 63 | Identify and setup access for NCIA, caArray and CTMS | 7d | 2008-05-02 | 2008-05-12 | start no earlier than 2008-05-02 | Shine Jacob |

Changed:

| ID | Task | Finish | Duration | Complete | Total float | Other |
| --- | --- | --- | --- | --- | --- | --- |
| 1 | **caIntegrator2 1.0** |  |  | 2% → 1% |  | was named TrWorkbench 1.0 |
| 60 | **Deployment** | 2008-04-30 → 2008-05-12 (+12d) | 8d → 16d |  | 14d → 6d |  |

## Version 4 (saved 2008-05-07)

Note of the change: updated schedule to add caDSR metadata

Last finish 2008-05-20 → 2008-05-23 (+3d).

Added:

| ID | Task | Duration | Start | Finish | Constraint | Resources |
| --- | --- | --- | --- | --- | --- | --- |
| 46 | caDSR metadata management | 8d | 2008-04-30 | 2008-05-09 | start no earlier than 2008-04-30 | Michael Holck |

Changed:

| ID | Task | Start | Finish | Duration | Total float |
| --- | --- | --- | --- | --- | --- |
| 1 | **caIntegrator2 1.0** |  | 2008-05-20 → 2008-05-23 (+3d) | 45d? → 48d? |  |
| 25 | **Elaboration Phase** |  | 2008-05-20 → 2008-05-23 (+3d) | 22d? → 25d? |  |
| 26 | **Elaboration - Iteration 1** |  | 2008-05-19 → 2008-05-23 (+4d) | 21d? → 25d? | 1d → 0d |
| 39 | **Analysis and Design** |  | 2008-05-02 → 2008-05-09 (+7d) | 10d? → 15d? | 2d → 0d |
| 48 | **Implementation** |  | 2008-05-16 → 2008-05-23 (+7d) | 15d? → 20d? | 2d → 0d |
| 49 | HTP data management | 2008-05-05 → 2008-05-12 (+7d) | 2008-05-16 → 2008-05-23 (+7d) |  | 2d → 0d |
| 50 | Query | 2008-05-05 → 2008-05-12 (+7d) | 2008-05-16 → 2008-05-23 (+7d) |  | 2d → 0d |

## Version 5 (saved 2008-05-08)

Note of the change: Corrected 'date' issue for E1

Last finish 2008-05-23 → 2008-05-19 (-4d).

Changed:

| ID | Task | Start | Finish | Duration | Total float | Predecessors | Other |
| --- | --- | --- | --- | --- | --- | --- | --- |
| 1 | **caIntegrator2 1.0** |  | 2008-05-23 → 2008-05-19 (-4d) | 48d? → 44d? |  |  |  |
| 25 | **Elaboration Phase** |  | 2008-05-23 → 2008-05-19 (-4d) | 25d? → 21d? |  |  |  |
| 26 | **Elaboration - Iteration 1** |  | 2008-05-23 → 2008-05-16 (-7d) | 25d? → 20d? | 0d → 1d |  |  |
| 48 | **Implementation** |  | 2008-05-23 → 2008-05-16 (-7d) | 20d? → 15d? | 0d → 1d |  |  |
| 49 | HTP data management | 2008-05-12 → 2008-05-05 (-7d) | 2008-05-23 → 2008-05-16 (-7d) |  | 0d → 1d | 39 → none | constraint none → start no earlier than 2008-05-05 |
| 50 | Query | 2008-05-12 → 2008-05-05 (-7d) | 2008-05-23 → 2008-05-16 (-7d) |  | 0d → 1d | 39 → none | constraint none → start no earlier than 2008-05-05 |
| 65 | Elaboration 1 Complete | 2008-05-19 → 2008-05-16 (-3d) | 2008-05-19 → 2008-05-16 (-3d) | 1d? → 0d | 3d → 0d |  |  |
| 66 | **Elaboration - Iteration 2** | 2008-05-20 → 2008-05-19 (-1d) | 2008-05-20 → 2008-05-19 (-1d) |  | 3d → 0d |  |  |
| 67 | Project Management | 2008-05-20 → 2008-05-19 (-1d) | 2008-05-20 → 2008-05-19 (-1d) |  | 3d → 0d |  |  |
| 68 | Requirements | 2008-05-20 → 2008-05-19 (-1d) | 2008-05-20 → 2008-05-19 (-1d) |  | 3d → 0d |  |  |
| 69 | Analysis and Design | 2008-05-20 → 2008-05-19 (-1d) | 2008-05-20 → 2008-05-19 (-1d) |  | 3d → 0d |  |  |
| 70 | Implementation | 2008-05-20 → 2008-05-19 (-1d) | 2008-05-20 → 2008-05-19 (-1d) |  | 3d → 0d |  |  |
| 71 | Test | 2008-05-20 → 2008-05-19 (-1d) | 2008-05-20 → 2008-05-19 (-1d) |  | 3d → 0d |  |  |
| 72 | Environment | 2008-05-20 → 2008-05-19 (-1d) | 2008-05-20 → 2008-05-19 (-1d) |  | 3d → 0d |  |  |
| 73 | Configuration and Change Management | 2008-05-20 → 2008-05-19 (-1d) | 2008-05-20 → 2008-05-19 (-1d) |  | 3d → 0d |  |  |
| 74 | Elaboration 2 Complete | 2008-05-20 → 2008-05-19 (-1d) | 2008-05-20 → 2008-05-19 (-1d) |  | 3d → 0d |  |  |

## Version 6 (saved 2008-05-22)

Last finish stays 2008-05-19. Complete tasks 2 → 10.

Added:

| ID | Task | Duration | Start | Finish |
| --- | --- | --- | --- | --- |
| 68 | Schedule | 1d? | 2008-05-19 | 2008-05-19 |
| 69 | Iteration Plan | 1d? | 2008-05-19 | 2008-05-19 |
| 72 | Requirements Management Plan | 1d? | 2008-05-19 | 2008-05-19 |
| 73 | requirements management environment | 1d? | 2008-05-19 | 2008-05-19 |
| 74 | Wireframes for UC: Deploy Study | 1d? | 2008-05-19 | 2008-05-19 |
| 75 | Wireframes for UC: Use Workspace | 1d? | 2008-05-19 | 2008-05-19 |
| 76 | Wireframes for UC: Manage Queries | 1d? | 2008-05-19 | 2008-05-19 |
| 77 | Wireframes for UC: Perform Analysis | 1d? | 2008-05-19 | 2008-05-19 |
| 78 | Review wireframes | 1d? | 2008-05-19 | 2008-05-19 |
| 79 | Revise/Finalize UI | 1d? | 2008-05-19 | 2008-05-19 |
| 80 | Develop User Interface | 1d? | 2008-05-19 | 2008-05-19 |
| 81 | **Analysis and Design** | 1d? | 2008-05-19 | 2008-05-19 |
| 82 | Use-Case Design: Deploy Study | 1d? | 2008-05-19 | 2008-05-19 |
| 83 | Use-Case Design: Manage Queries | 1d? | 2008-05-19 | 2008-05-19 |
| 84 | Use-Case Design: Use Workspace | 1d? | 2008-05-19 | 2008-05-19 |
| 85 | Design Review - Team | 1d? | 2008-05-19 | 2008-05-19 |
| 86 | Model Review | 1d? | 2008-05-19 | 2008-05-19 |
| 87 | Software Architecture Document | 1d? | 2008-05-19 | 2008-05-19 |

Changed:

| ID | Task | Start | Finish | Complete | Total float | Other |
| --- | --- | --- | --- | --- | --- | --- |
| 1 | **caIntegrator2 1.0** |  |  | 1% → 32% |  |  |
| 25 | **Elaboration Phase** | 2008-04-21 A |  | 0% → 41% |  |  |
| 26 | **Elaboration - Iteration 1** | 2008-04-21 A |  | 0% → 46% |  |  |
| 27 | **Project Management** | 2008-04-21 A | 2008-05-16 A | 0% → 100% | 1d → none |  |
| 28 | Iteration Plan | 2008-04-28 A | 2008-05-01 A | 0% → 100% | 12d → none |  |
| 29 | Risk Management | 2008-04-24 A | 2008-05-16 A | 0% → 100% | 1d → none |  |
| 30 | Manage communication (listserv, skype etc) | 2008-04-21 A | 2008-05-16 A | 0% → 100% | 1d → none |  |
| 31 | **Requirements** | 2008-04-28 A |  | 0% → 11% |  |  |
| 34 | **Elaboration Use Case definition** | 2008-04-28 A |  | 0% → 13% |  |  |
| 35 | Imaging | 2008-04-28 A |  | 0% → 50% |  |  |
| 39 | **Analysis and Design** | 2008-04-21 A |  | 0% → 70% |  |  |
| 40 | Identify subsystems | 2008-04-21 A | 2008-05-02 A | 0% → 100% | 7d → none |  |
| 41 | Identify risk characteristics | 2008-04-21 A | 2008-04-30 A | 0% → 100% | 9d → none |  |
| 45 | Object Model | 2008-04-21 A | 2008-05-02 A | 0% → 100% | 7d → none |  |
| 46 | caDSR metadata management | 2008-04-30 A | 2008-05-09 A | 0% → 100% | 2d → none |  |
| 47 | Implementation model | 2008-04-21 A | 2008-05-02 A | 0% → 100% | 7d → none |  |
| 70 | Risk Management |  |  |  |  | was named Requirements |
| 71 | **Requirements** |  |  |  |  | was named Analysis and Design |

## Version 7 (saved 2008-05-23)

Note of the change: Elaboration 2 plan

Last finish 2008-05-19 → 2008-06-13 (+25d). Complete tasks 10 → 21.

Added:

| ID | Task | Duration | Start | Finish | Predecessors | Constraint | Resources |
| --- | --- | --- | --- | --- | --- | --- | --- |
| 71 | E2 Iteration Assessment | 1d? | 2008-06-13 | 2008-06-13 |  | finish no earlier than 2008-06-13 | SJ |
| 81 | Set uprequirements management environment | 1d? | 2008-05-29 | 2008-05-29 |  | start no earlier than 2008-05-29 | ET |
| 90 | Complete caCORE integration | 5d? | 2008-05-19 | 2008-05-23 |  | start no earlier than 2008-05-19 | MH |
| 91 | HTP data management | 1d? | 2008-05-23 | 2008-05-23 |  | finish no earlier than 2008-05-23 | ET |
| 92 | Prototype NCIA integration | 2d | 2008-05-22 | 2008-05-23 |  | start no earlier than 2008-05-22 | TJ |
| 93 | Implement ArrayDataService Subsystem | 2d | 2008-05-30 | 2008-06-02 | 81 | start no earlier than 2008-05-30 | ET |
| 94 | Implement Deploy Study | 7d | 2008-05-27 | 2008-06-04 |  | start no earlier than 2008-05-27 | ET; MH; TJ |
| 95 | Implement Use Workspace | 3d | 2008-06-05 | 2008-06-09 | 94 |  | TJ; MH |
| 96 | Implement Manage Queries | 4d | 2008-06-10 | 2008-06-13 | 95 |  | TJ; MH |
| 97 | Implement Perform Data Analysis: simple GenePattern integration | 1d? | 2008-05-19 | 2008-05-19 |  |  | TBD1 |
| 99 | Performance/load test Manage Queries | 1d? | 2008-06-13 | 2008-06-13 |  | start no earlier than 2008-06-13 |  |
| 101 | Write Development Case | 1d? | 2008-06-09 | 2008-06-09 |  | start no earlier than 2008-06-09 | ET |
| 102 | Configure nightly build | 1d? | 2008-05-19 | 2008-05-19 |  |  | ET |
| 104 | Set up defect tracker | 1d? | 2008-05-28 | 2008-05-28 |  | start no earlier than 2008-05-28 | SJ; ET |
| 105 | Set up feature request tracker | 1d? | 2008-05-29 | 2008-05-29 | 104 |  | SJ; ET |
| 106 | **Deployment** | 2d | 2008-06-11 | 2008-06-12 |  |  |  |
| 107 | Deploy to DEV tier | 2d | 2008-06-11 | 2008-06-12 |  | start no earlier than 2008-06-11 | ET |

Removed: 73 requirements management environment

Changed:

| ID | Task | Start | Finish | Duration | Complete | Total float | Predecessors | Other |
| --- | --- | --- | --- | --- | --- | --- | --- | --- |
| 1 | **caIntegrator2 1.0** |  | 2008-05-19 → 2008-06-13 (+25d) | 44d? → 62d? | 32% → 47% |  |  |  |
| 5 | Develop Vision |  |  |  |  |  |  | resources Subha Madhavan → SM |
| 6 | Find Actors and Use Cases |  |  |  |  |  |  | resources Eric Tavela → ET |
| 7 | Detail a Use Case (multiple) |  |  |  |  | 28d → 46d |  | resources Eric Tavela → ET |
| 8 | Finalize Use Case Model |  |  |  |  | 8d → 46d |  | resources Eric Tavela → ET |
| 10 | Architectural Analysis |  |  |  |  | 15d → 53d |  | resources Eric Tavela [50%]; Michael Holck [50%] → ET [50%]; MH [50%] |
| 12 | Investigate clinical data representation approaches |  |  |  |  | 1d → 39d |  | resources Michael Holck → MH |
| 13 | Analyse genomic data storage and retrieval |  |  |  |  | 6d → 44d |  | resources Eric Tavela; Michael Holck; TJ Andrews → ET; MH; TJ |
| 14 | Define integrated object model (clinical, genomic, imaging) |  |  |  |  | 1d → 39d |  | resources Eric Tavela; Michael Holck; TJ Andrews → ET; MH; TJ |
| 16 | Analysis of existing caIntegrator UI and Analysis tools (KM Plots, GenePattern etc) |  |  |  |  | 11d → 49d |  | resources TJ Andrews → TJ |
| 18 | Develop Iteration Plan: I1 |  |  |  |  | 21d → 59d |  | resources Shine Jacob → SJ |
| 19 | Identify and Assess Risks |  |  |  |  | 11d → 49d |  | resources Shine Jacob → SJ |
| 20 | Develop Iteration Plan: E1 |  |  |  |  | 1d → 39d |  | resources Shine Jacob → SJ |
| 21 | Assess Iteration |  |  |  |  | 1d → 39d |  | resources Shine Jacob → SJ |
| 25 | **Elaboration Phase** |  | 2008-05-19 → 2008-06-13 (+25d) | 21d? → 39d? | 41% → 59% |  |  |  |
| 26 | **Elaboration - Iteration 1** |  |  |  | 46% → 80% | 1d → 19d |  |  |
| 28 | Iteration Plan |  |  |  |  |  |  | resources Shine Jacob → SJ |
| 29 | Risk Management |  |  |  |  |  |  | resources Shine Jacob → SJ |
| 30 | Manage communication (listserv, skype etc) |  |  |  |  |  |  | resources Shine Jacob → SJ |
| 31 | **Requirements** |  |  |  | 11% → 33% | 8d → 26d |  |  |
| 32 | **Revise Inception Use Cases** | 2008-04-28 A | 2008-05-01 A |  | 0% → 100% | 12d → none |  |  |
| 33 | Gene Expression | 2008-04-28 A | 2008-05-01 A |  | 0% → 100% | 12d → none |  | resources Eric Tavela → ET |
| 34 | **Elaboration Use Case definition** |  |  |  | 13% → 25% | 8d → 26d |  |  |
| 35 | Imaging |  | 2008-05-07 A |  | 50% → 100% | 8d → none |  | resources Eric Tavela → ET |
| 36 | Methylation data |  |  |  |  | 8d → 26d |  | resources Eric Tavela → ET |
| 37 | Update study |  |  |  |  | 8d → 26d |  | resources Eric Tavela → ET |
| 38 | Security requirements |  |  |  |  | 8d → 26d |  | resources Eric Tavela → ET |
| 39 | **Analysis and Design** |  |  |  | 70% → 85% | 2d → 7d |  |  |
| 40 | Identify subsystems |  |  |  |  |  |  | resources Michael Holck → MH |
| 41 | Identify risk characteristics |  |  |  |  |  |  | resources Michael Holck → MH |
| 42 | **Use-case design** | 2008-04-21 A |  |  | 0% → 50% | 7d → 12d |  |  |
| 43 | manage queries (create and execute genomic with clinical) |  |  |  |  | 7d → 12d |  | resources Michael Holck; Eric Tavela → MH; ET |
| 44 | Perform Analysis (genepattern) | 2008-04-21 A | 2008-05-02 A |  | 0% → 100% | 7d → none |  | resources Michael Holck; TJ Andrews → MH; TJ |
| 45 | Object Model |  |  |  |  |  |  | resources Michael Holck → MH |
| 46 | caDSR metadata management |  |  |  |  |  |  | resources Michael Holck → MH |
| 47 | Implementation model |  |  |  |  |  |  | resources Michael Holck → MH |
| 48 | **Implementation** | 2008-04-28 A |  |  | 0% → 96% | 1d → 19d |  |  |
| 49 | HTP data management | 2008-05-05 A | 2008-05-16 A |  | 0% → 100% | 1d → none |  | resources Eric Tavela → ET |
| 50 | Query | 2008-05-05 A | 2008-05-16 A |  | 0% → 100% | 1d → none |  | resources Eric Tavela; TJ Andrews → ET; TJ |
| 51 | caCore Code Generation | 2008-04-28 A |  |  | 0% → 80% | 11d → 29d |  | resources Eric Tavela → ET |
| 54 | **Environment** | 2008-04-28 A | 2008-05-01 A |  | 0% → 100% | 12d → none |  |  |
| 55 | Eclipse configuration | 2008-04-29 A | 2008-04-30 A |  | 0% → 100% | 13d → none |  | resources Eric Tavela → ET |
| 56 | CI environment | 2008-04-28 A | 2008-04-29 A |  | 0% → 100% | 14d → none |  | resources Eric Tavela → ET |
| 57 | ANT | 2008-04-30 A | 2008-05-01 A |  | 0% → 100% | 12d → none |  | resources Eric Tavela → ET |
| 59 | Set up defect tracker |  |  |  |  | 1d → 19d |  | resources Eric Tavela → ET |
| 60 | Set up feature request tracker |  |  |  |  | 1d → 19d |  | resources Eric Tavela → ET |
| 61 | **Deployment** | 2008-04-21 A | 2008-05-12 A |  | 0% → 100% | 5d → none |  |  |
| 62 | Get DEV environment | 2008-04-21 A | 2008-04-30 A |  | 0% → 100% | 13d → none |  | resources Shine Jacob → SJ |
| 63 | ARC document (Draft) | 2008-04-28 A | 2008-04-30 A |  | 0% → 100% | 13d → none |  | resources Shine Jacob → SJ |
| 64 | Identify and setup access for NCIA, caArray and CTMS | 2008-05-02 A | 2008-05-12 A |  | 0% → 100% | 5d → none |  | resources Shine Jacob → SJ |
| 66 | **Elaboration - Iteration 2** |  | 2008-05-19 → 2008-06-13 (+25d) | 1d? → 19d? |  |  |  |  |
| 67 | **Project Management** | 2008-05-19 → 2008-05-22 (+3d) | 2008-05-19 → 2008-06-13 (+25d) | 1d? → 16d? |  |  |  |  |
| 68 | Schedule | 2008-05-19 → 2008-05-22 (+3d) | 2008-05-19 → 2008-05-23 (+4d) | 1d? → 2d |  | 0d → 13d |  | constraint none → start no earlier than 2008-05-22; resources none → SJ |
| 69 | Iteration Plan | 2008-05-19 → 2008-05-27 (+8d) | 2008-05-19 → 2008-05-27 (+8d) |  |  | 0d → 13d | none → 68 | resources none → SJ |
| 70 | Risk Management | 2008-05-19 → 2008-06-13 (+25d) | 2008-05-19 → 2008-06-13 (+25d) |  |  |  |  | constraint none → finish no earlier than 2008-06-13; resources none → SJ |
| 72 | **Requirements** | 2008-05-19 → 2008-05-23 (+4d) | 2008-05-19 → 2008-06-12 (+24d) | 1d? → 14d? |  | 0d → 2d |  |  |
| 73 | Wireframes for UC: Deploy Study | 2008-05-19 → 2008-05-23 (+4d) | 2008-05-19 → 2008-05-27 (+8d) | 1d? → 2d |  | 0d → 11d |  | constraint none → start no earlier than 2008-05-23; resources none → WF |
| 74 | Wireframes for UC: Use Workspace | 2008-05-19 → 2008-05-23 (+4d) | 2008-05-19 → 2008-05-27 (+8d) | 1d? → 2d |  | 0d → 1d |  | constraint none → start no earlier than 2008-05-23; resources none → MR |
| 75 | Wireframes for UC: Manage Queries | 2008-05-19 → 2008-05-28 (+9d) | 2008-05-19 → 2008-05-29 (+10d) | 1d? → 2d |  | 0d → 11d | none → 73 | resources none → WF |
| 76 | Wireframes for UC: Perform Analysis | 2008-05-19 → 2008-05-28 (+9d) | 2008-05-19 → 2008-05-29 (+10d) | 1d? → 2d |  | 0d → 1d | none → 74 | resources none → MR |
| 77 | Review wireframes | 2008-05-19 → 2008-05-30 (+11d) | 2008-05-19 → 2008-06-02 (+14d) | 1d? → 2d |  | 0d → 1d | none → 76 | resources none → WF; MR; SM |
| 78 | Revise/Finalize UI | 2008-05-19 → 2008-06-03 (+15d) | 2008-05-19 → 2008-06-05 (+17d) | 1d? → 3d |  | 0d → 1d | none → 77 | resources none → MR; WF |
| 79 | Develop User Interface | 2008-05-19 → 2008-06-06 (+18d) | 2008-05-19 → 2008-06-12 (+24d) | 1d? → 5d |  | 0d → 1d | none → 78 | resources none → MR |
| 80 | Requirements Management Plan | 2008-05-19 → 2008-05-28 (+9d) | 2008-05-19 → 2008-05-28 (+9d) |  |  | 0d → 12d |  | constraint none → start no earlier than 2008-05-28; resources none → ET |
| 82 | **Analysis and Design** | 2008-05-19 → 2008-05-22 (+3d) | 2008-05-19 → 2008-06-02 (+14d) | 1d? → 7d? |  | 0d → 9d |  |  |
| 83 | Use-Case Design: Deploy Study | 2008-05-19 → 2008-05-22 (+3d) | 2008-05-19 → 2008-05-22 (+3d) |  |  | 0d → 13d |  | constraint none → start no earlier than 2008-05-22; resources none → ET |
| 84 | Use-Case Design: Manage Queries | 2008-05-19 → 2008-05-23 (+4d) | 2008-05-19 → 2008-05-23 (+4d) |  |  | 0d → 13d | none → 83 | resources none → ET |
| 85 | Use-Case Design: Use Workspace | 2008-05-19 → 2008-05-27 (+8d) | 2008-05-19 → 2008-05-27 (+8d) |  |  | 0d → 13d | none → 84 | resources none → ET |
| 86 | Design Review - Team | 2008-05-19 → 2008-05-27 (+8d) | 2008-05-19 → 2008-05-27 (+8d) |  |  | 0d → 13d |  | constraint none → start no earlier than 2008-05-27 |
| 87 | Model Review | 2008-05-19 → 2008-05-27 (+8d) | 2008-05-19 → 2008-05-27 (+8d) |  |  | 0d → 13d |  | constraint none → start no earlier than 2008-05-27 |

| ID | Task | Start | Finish | Duration | Total float | Other |
| --- | --- | --- | --- | --- | --- | --- |
| 88 | Software Architecture Document | 2008-05-19 → 2008-05-27 (+8d) | 2008-05-19 → 2008-06-02 (+14d) | 1d? → 5d | 0d → 9d | constraint none → finish no earlier than 2008-06-02; resources none → MH |
| 89 | **Implementation** |  | 2008-05-19 → 2008-06-13 (+25d) | 1d? → 19d? |  |  |
| 98 | **Test** | 2008-05-19 → 2008-06-13 (+25d) | 2008-05-19 → 2008-06-13 (+25d) |  |  |  |
| 100 | **Environment** |  | 2008-05-19 → 2008-06-09 (+21d) | 1d? → 15d? | 0d → 5d |  |
| 103 | **Configuration and Change Management** | 2008-05-19 → 2008-05-28 (+9d) | 2008-05-19 → 2008-05-29 (+10d) | 1d? → 2d? | 0d → 12d |  |
| 108 | Elaboration 2 Complete | 2008-05-19 → 2008-06-13 (+25d) | 2008-05-19 → 2008-06-13 (+25d) |  |  | constraint none → start no earlier than 2008-06-13 |

## Version 8 (saved 2008-05-28)

Note of the change: Added new tasks for Vision document, Storyboard, Poster etc

Last finish stays 2008-06-13.

Added:

| ID | Task | Duration | Start | Finish | Predecessors | Constraint | Resources |
| --- | --- | --- | --- | --- | --- | --- | --- |
| 73 | Modify Vision Document | 3d | 2008-05-28 | 2008-05-30 | 69 |  | SJ |
| 74 | Draft Storyboard for caIntegrator2 | 3d | 2008-06-02 | 2008-06-04 | 73 |  | SJ |
| 75 | Draft Poster for caBIG Annual meeting | 2d | 2008-06-05 | 2008-06-06 | 74 |  | SJ |
| 83 | Internal Review of Use Cases/Vision | 1d? | 2008-06-05 | 2008-06-05 |  | finish no earlier than 2008-06-05 |  |
| 84 | External Review of Use Cases/Vision | 1d? | 2008-06-12 | 2008-06-12 |  | finish no earlier than 2008-06-12 |  |

Changed:

| ID | Task | Complete |
| --- | --- | --- |
| 1 | **caIntegrator2 1.0** | 47% → 46% |
| 25 | **Elaboration Phase** | 59% → 57% |

## Version 9 (saved 2008-05-30)

Note of the change: Revised plan

Last finish 2008-06-13 → 2008-07-03 (+20d).

Added:

| ID | Task | Duration | Start | Finish | Constraint | Resources |
| --- | --- | --- | --- | --- | --- | --- |
| 86 | Use-Case Design: Perform Analysis | 2d | 2008-06-16 | 2008-06-17 | finish no earlier than 2008-06-17 | ET |
| 87 | Draft Software Architecture Document | 5d | 2008-05-27 | 2008-06-02 | start no earlier than 2008-05-27 | MH |
| 97 | Unit Tests/Functional Tests | 5d | 2008-06-27 | 2008-07-03 | finish no earlier than 2008-07-03 | ET |

Removed: 69 Iteration Plan; 76 Wireframes for UC: Deploy Study; 77 Wireframes for UC: Use Workspace; 78 Wireframes for UC: Manage Queries; 81 Revise/Finalize UI; 91 Design Review - Team; 92 Model Review; 96 HTP data management; 97 Prototype NCIA integration; 98 Implement ArrayDataService Subsystem

Changed:

| ID | Task | Start | Finish | Duration | Complete | Total float | Predecessors | Other |
| --- | --- | --- | --- | --- | --- | --- | --- | --- |
| 1 | **caIntegrator2 1.0** |  | 2008-06-13 → 2008-07-03 (+20d) | 62d? → 76d? | 46% → 44% |  |  |  |
| 25 | **Elaboration Phase** |  | 2008-06-13 → 2008-07-03 (+20d) | 39d? → 53d? | 57% → 54% |  |  |  |
| 66 | **Elaboration - Iteration 2** |  | 2008-06-13 → 2008-07-03 (+20d) | 19d? → 33d? |  |  |  |  |
| 67 | **Project Management** | 2008-05-22 → 2008-05-29 (+7d) |  | 16d? → 12d? |  | 0d → 14d |  |  |
| 68 | Schedule | 2008-05-22 → 2008-05-29 (+7d) | 2008-05-23 → 2008-05-30 (+7d) |  |  | 5d → 24d |  | constraint start no earlier than 2008-05-22 → finish no earlier than 2008-05-30 |
| 72 | Modify Vision Document | 2008-05-28 → 2008-06-02 (+5d) | 2008-05-30 → 2008-06-03 (+4d) | 3d → 2d |  | 5d → 18d | Iteration Plan → none | constraint none → start no earlier than 2008-06-02 |
| 73 | Draft Storyboard for caIntegrator2 | 2008-06-02 → 2008-06-04 (+2d) | 2008-06-04 → 2008-06-05 (+1d) | 3d → 2d |  | 5d → 18d |  |  |
| 74 | Draft Poster for caBIG Annual meeting | 2008-06-05 → 2008-06-06 (+1d) | 2008-06-06 → 2008-06-09 (+3d) |  |  | 5d → 18d |  |  |
| 75 | Wireframes for UC | 2008-05-28 → 2008-05-23 (-5d) | 2008-05-29 → 2008-06-03 (+5d) | 2d → 6.5d |  | 1d → 22.5d | Wireframes for UC: Use Workspace → none | was named Wireframes for UC: Perform Analysis; constraint none → start no earlier than 2008-05-23; resources MR → MR; WF |
| 76 | Review wireframes | 2008-05-30 → 2008-06-05 (+6d) | 2008-06-02 → 2008-06-12 (+10d) | 2d → 6d |  | 1d → 15d | 75 → none | constraint none → start no earlier than 2008-06-05 |
| 77 | Develop User Interface | 2008-06-06 → 2008-06-03 (-3d) |  | 5d → 8d |  | 1d → 15d | Revise/Finalize UI → none | constraint none → start no earlier than 2008-06-03 |
| 80 | Requirements Management Plan | 2008-05-28 → 2008-06-11 (+14d) | 2008-05-28 → 2008-06-11 (+14d) |  |  | 12d → 16d |  | constraint start no earlier than 2008-05-28 → start no earlier than 2008-06-11 |
| 81 | Set uprequirements management environment | 2008-05-29 → 2008-06-12 (+14d) | 2008-05-29 → 2008-06-12 (+14d) |  |  | 9d → 15d |  | constraint start no earlier than 2008-05-29 → start no earlier than 2008-06-12 |
| 82 | **Analysis and Design** | 2008-05-22 → 2008-05-27 (+5d) | 2008-06-02 → 2008-07-02 (+30d) | 7d? → 27d? |  | 9d → 1d |  |  |
| 83 | Use-Case Design: Use Workspace |  |  |  |  | 13d → 24d | 85 → none | constraint none → start no earlier than 2008-05-27 |
| 84 | Use-Case Design: Deploy Study | 2008-05-22 → 2008-05-29 (+7d) | 2008-05-22 → 2008-05-30 (+8d) | 1d? → 2d |  | 13d → 10d |  | constraint start no earlier than 2008-05-22 → start no earlier than 2008-05-29 |
| 85 | Use-Case Design: Manage Queries | 2008-05-23 → 2008-06-05 (+13d) | 2008-05-23 → 2008-06-06 (+14d) | 1d? → 2d |  | 13d → 7d |  | constraint none → finish no earlier than 2008-06-06 |
| 88 | Final Software Architecture Document | 2008-05-27 → 2008-06-30 (+34d) | 2008-06-02 → 2008-07-02 (+30d) | 5d → 3d |  | 9d → 1d |  | was named Software Architecture Document; constraint finish no earlier than 2008-06-02 → start no earlier than 2008-06-30 |
| 89 | **Implementation** |  | 2008-06-13 → 2008-07-03 (+20d) | 19d? → 33d? |  |  |  |  |
| 91 | Implement Deploy Study | 2008-05-27 → 2008-06-02 (+6d) | 2008-06-04 → 2008-06-10 (+6d) |  |  | 0d → 17d | none → 84 | constraint start no earlier than 2008-05-27 → start no earlier than 2008-06-02 |
| 92 | Implement Use Workspace | 2008-06-05 → 2008-06-11 (+6d) | 2008-06-09 → 2008-06-12 (+3d) | 3d → 2d |  | 0d → 15d | 91 → 83 | constraint none → start no earlier than 2008-06-11; resources TJ; MH → TJ; MH; ET |
| 93 | Implement Manage Queries | 2008-06-10 → 2008-06-16 (+6d) | 2008-06-13 → 2008-06-26 (+13d) | 4d → 9d |  | 0d → 2d | 92 → 85 | constraint none → start no earlier than 2008-06-16; resources TJ; MH → TJ; MH; ET |
| 94 | Implement Perform Data Analysis: simple GenePattern integration | 2008-05-19 → 2008-06-27 (+39d) | 2008-05-19 → 2008-07-03 (+45d) | 1d? → 5d |  | 18d → 0d | none → 86 | constraint none → start no earlier than 2008-06-27; resources TBD1 → TJ; MH |
| 95 | **Test** | 2008-06-13 → 2008-06-27 (+14d) | 2008-06-13 → 2008-07-03 (+20d) | 1d? → 5d |  |  |  |  |
| 96 | Performance/load test Manage Queries | 2008-06-13 → 2008-06-27 (+14d) | 2008-06-13 → 2008-07-01 (+18d) | 1d? → 3d |  | 0d → 2d | none → 93 | resources none → ET |
| 101 | **Configuration and Change Management** | 2008-05-28 → 2008-06-16 (+19d) | 2008-05-29 → 2008-06-17 (+19d) |  |  | 11d → 12d |  |  |
| 102 | Set up defect tracker | 2008-05-28 → 2008-06-16 (+19d) | 2008-05-28 → 2008-06-16 (+19d) |  |  | 11d → 12d |  | constraint start no earlier than 2008-05-28 → start no earlier than 2008-06-16 |
| 103 | Set up feature request tracker | 2008-05-29 → 2008-06-17 (+19d) | 2008-05-29 → 2008-06-17 (+19d) |  |  | 11d → 12d |  |  |
| 106 | Elaboration 2 Complete | 2008-06-13 → 2008-07-03 (+20d) | 2008-06-13 → 2008-07-03 (+20d) |  |  |  |  | constraint start no earlier than 2008-06-13 → start no earlier than 2008-07-03 |

## Version 10 (saved 2008-06-06)

Note of the change: Modified to reflect changes

Last finish stays 2008-07-03.

Changed:

| ID | Task | Start | Finish | Duration | Total float | Predecessors | Other |
| --- | --- | --- | --- | --- | --- | --- | --- |
| 71 | **Requirements** | 2008-05-23 → 2008-05-29 (+6d) | 2008-06-12 → 2008-06-13 (+1d) | 14d? → 11.5d? | 15d → 14d |  |  |
| 72 | Modify Vision Document | 2008-06-02 → 2008-06-06 (+4d) | 2008-06-03 → 2008-06-09 (+6d) |  |  |  | constraint start no earlier than 2008-06-02 → finish no earlier than 2008-06-09 |
| 73 | Draft Storyboard for caIntegrator2 | 2008-06-04 → 2008-06-12 (+8d) | 2008-06-05 → 2008-06-13 (+8d) |  | 18d → 14d |  | constraint none → start no earlier than 2008-06-12 |
| 74 | Draft Poster for caBIG Annual meeting |  |  |  |  |  | constraint none → finish no earlier than 2008-06-09 |
| 75 | Wireframes for UC | 2008-05-23 → 2008-05-29 (+6d) | 2008-06-03 → 2008-06-06 (+3d) |  | 22.5d → 19d |  | constraint start no earlier than 2008-05-23 → finish no earlier than 2008-06-06 |
| 80 | Requirements Management Plan | 2008-06-11 → 2008-06-03 (-8d) | 2008-06-11 → 2008-06-03 (-8d) | 1d? → 1d | 16d → 22d |  | constraint start no earlier than 2008-06-11 → start no earlier than 2008-06-03 |
| 81 | Set uprequirements management environment | 2008-06-12 → 2008-06-04 (-8d) | 2008-06-12 → 2008-06-04 (-8d) | 1d? → 1d | 15d → 21d |  | constraint start no earlier than 2008-06-12 → start no earlier than 2008-06-04 |
| 85 | Use-Case Design: Manage Queries | 2008-06-05 → 2008-06-11 (+6d) | 2008-06-06 → 2008-06-12 (+6d) |  | 7d → 3d | 84 → none | constraint finish no earlier than 2008-06-06 → start no earlier than 2008-06-11 |
| 86 | Use-Case Design: Perform Analysis | 2008-06-16 → 2008-06-17 (+1d) | 2008-06-17 → 2008-06-18 (+1d) |  | 7d → 6d |  | constraint finish no earlier than 2008-06-17 → start no earlier than 2008-06-17 |
| 98 | **Environment** | 2008-05-19 → 2008-06-19 (+31d) | 2008-06-09 → 2008-06-23 (+14d) | 15d? → 3d? | 18d → 8d |  |  |
| 99 | Write Development Case | 2008-06-09 → 2008-06-23 (+14d) | 2008-06-09 → 2008-06-23 (+14d) |  | 18d → 8d |  | constraint start no earlier than 2008-06-09 → start no earlier than 2008-06-23 |
| 100 | Configure nightly build | 2008-05-19 → 2008-06-19 (+31d) | 2008-05-19 → 2008-06-19 (+31d) |  | 32d → 10d |  | constraint none → start no earlier than 2008-06-19 |
| 104 | **Deployment** | 2008-06-11 → 2008-06-19 (+8d) | 2008-06-12 → 2008-06-20 (+8d) |  | 15d → 9d |  |  |
| 105 | Deploy to DEV tier | 2008-06-11 → 2008-06-19 (+8d) | 2008-06-12 → 2008-06-20 (+8d) |  | 15d → 9d |  | constraint start no earlier than 2008-06-11 → start no earlier than 2008-06-19 |

## Version 11 (saved 2008-07-07)

Note of the change: E3 Plan

Last finish 2008-07-03 → 2008-08-18 (+46d).

Added:

| ID | Task | Duration | Start | Finish | Predecessors | Constraint | Resources |
| --- | --- | --- | --- | --- | --- | --- | --- |
| 107 | **Elaboration - Iteration 3** | 31d? | 2008-07-07 | 2008-08-18 | 66 |  |  |
| 108 | **Project Management** | 3d | 2008-07-07 | 2008-07-09 |  |  |  |
| 109 | Schedule | 1d | 2008-07-07 | 2008-07-07 |  | finish no earlier than 2008-05-30 | SJ |
| 110 | Risk Management | 3d | 2008-07-07 | 2008-07-09 |  | finish no earlier than 2008-06-13 | SJ |
| 111 | E2 Iteration Assessment | 2d | 2008-07-07 | 2008-07-08 |  | finish no earlier than 2008-06-13 | SJ |
| 112 | **Requirements** | 29d? | 2008-07-07 | 2008-08-14 |  |  |  |
| 113 | Draft Storyboard for caIntegrator2 | 2d | 2008-07-10 | 2008-07-11 |  | start no earlier than 2008-07-10 | SJ |
| 114 | Wireframes for Perform Analysis | 10d? | 2008-07-07 | 2008-07-18 |  | start no earlier than 2008-07-07 | WF |
| 115 | Requirements for View Images | 10d? | 2008-07-14 | 2008-07-25 |  | finish no earlier than 2008-07-25 | WF |
| 116 | Review Vision Document | 1d | 2008-07-31 | 2008-07-31 |  | finish no earlier than 2008-07-31 | SJ |
| 117 | External Review of Use Cases/Vision | 1d? | 2008-08-14 | 2008-08-14 |  | finish no earlier than 2008-08-14 | SJ |
| 118 | **Analysis and Design** | 18d? | 2008-07-07 | 2008-07-30 |  |  |  |
| 119 | Use-Case Design: Manage Queries part 1 | 5d | 2008-07-07 | 2008-07-11 |  | start no earlier than 2008-07-07 | ET |
| 120 | Use-Case Design: Manage Queries part 2 | 5d | 2008-07-14 | 2008-07-18 | 119 |  | ET |
| 121 | Use-Case Design: Perform Analysis | 3d | 2008-07-21 | 2008-07-23 | 114 | start no earlier than 2008-07-18 | ET |
| 122 | Model Changes (UoM, Range Search) | 1d? | 2008-07-09 | 2008-07-09 |  | finish no earlier than 2008-07-09 | MH |
| 123 | Work with VCDE/Arc Mentor | 15d | 2008-07-07 | 2008-07-25 |  | start no earlier than 2008-07-07 | MH |
| 124 | Final Software Architecture Document | 3d | 2008-07-28 | 2008-07-30 |  | start no earlier than 2008-07-28 | MH |
| 125 | **Implementation** | 25d | 2008-07-07 | 2008-08-08 |  |  |  |
| 126 | **Implement Deploy Study** | 5d | 2008-07-07 | 2008-07-11 |  |  |  |
| 127 | Security - Authentication & Authorization | 5d | 2008-07-07 | 2008-07-11 |  |  | TJ |
| 128 | Mapping functionality (Genomics, NCIA), Retrieve Array Data, Feedback from review | 5d | 2008-07-07 | 2008-07-11 |  |  | ET |
| 129 | Datatype changes | 5d | 2008-07-07 | 2008-07-11 |  |  | ET |
| 130 | UI improvement for Deploy Study | 3d | 2008-07-14 | 2008-07-16 | 129 |  | MR |
| 131 | **Implement Manage Queries** | 20d | 2008-07-14 | 2008-08-08 |  |  |  |
| 132 | Query Creation (Creation & Persistence) | 10d | 2008-07-14 | 2008-07-25 | 119 | start no earlier than 2008-07-14 | TJ |
| 133 | UI | 10d | 2008-07-28 | 2008-08-08 | 120 | start no earlier than 2008-07-28 | TJ |
| 134 | Query Engine (for Hibernate & NetCDF) | 10d | 2008-07-21 | 2008-08-01 | 120 |  | ET |
| 135 | Browse Study | 5d | 2008-07-14 | 2008-07-18 |  | start no earlier than 2008-07-14 | TBD1 |
| 136 | Implement Perform Data Analysis: GenePattern integration & KM Plot | 10d | 2008-07-24 | 2008-08-06 | 121 |  | TBD1 |
| 137 | View Images | 5d | 2008-08-04 | 2008-08-08 | 115 | start no earlier than 2008-08-04 | TBD1 |
| 138 | **Test** | 20d | 2008-07-21 | 2008-08-15 |  |  |  |
| 139 | Performance/load test Manage Queries | 3d | 2008-08-11 | 2008-08-13 |  | start no earlier than 2008-08-11 | TBD1 |
| 140 | Unit Tests/Functional Tests | 5d | 2008-08-11 | 2008-08-15 |  | start no earlier than 2008-08-11 | TJ |
| 141 | QA Team Test | 20d | 2008-07-21 | 2008-08-15 |  | start no earlier than 2008-07-21 |  |
| 142 | **Environment** | 1d? | 2008-07-28 | 2008-07-28 |  |  |  |
| 143 | Configure nightly build | 1d? | 2008-07-28 | 2008-07-28 |  | start no earlier than 2008-07-28 | ET |
| 144 | **Configuration and Change Management** | 3d | 2008-07-14 | 2008-07-16 |  |  |  |
| 145 | Complete Feature Request/Tracking | 3d | 2008-07-14 | 2008-07-16 |  | start no earlier than 2008-07-14 | SJ |
| 146 | **Deployment** | 21d? | 2008-07-14 | 2008-08-11 |  |  |  |
| 147 | Deploy to DEV tier | 2d | 2008-07-14 | 2008-07-15 |  | start no earlier than 2008-07-14 | ET |
| 148 | Deploy to QA tier | 1d? | 2008-08-11 | 2008-08-11 |  | start no earlier than 2008-08-11 |  |
| 149 | Elaboration 3 Complete | 1d? | 2008-08-18 | 2008-08-18 | 141 | start no earlier than 2008-07-03 |  |

Changed:

| ID | Task | Finish | Duration | Complete | Total float | Predecessors |
| --- | --- | --- | --- | --- | --- | --- |
| 1 | **caIntegrator2 1.0** | 2008-07-03 → 2008-08-18 (+46d) | 76d? → 107d? | 44% → 30% |  |  |
| 25 | **Elaboration Phase** | 2008-07-03 → 2008-08-18 (+46d) | 53d? → 84d? | 54% → 34% |  |  |
| 73 | Draft Storyboard for caIntegrator2 |  |  |  | 14d → 20d | 72 → none |
| 74 | Draft Poster for caBIG Annual meeting |  |  |  | 18d → 24d | 73 → none |

## Version 12 (saved 2008-07-09)

Last finish 2008-08-18 → 2008-09-08 (+21d).

Added:

| ID | Task | Duration | Start | Finish | Predecessors | Constraint | Resources |
| --- | --- | --- | --- | --- | --- | --- | --- |
| 122 | Model Changes (Data Type Support) | 3d? | 2008-07-07 | 2008-07-09 |  | finish no earlier than 2008-07-09 | MH |
| 136 | Query to Hibernate Query translation | 15d | 2008-08-01 | 2008-08-21 |  | start no earlier than 2008-08-01 | TJ |
| 138 | Analysis job definition | 5d | 2008-08-04 | 2008-08-08 | 121 | start no earlier than 2008-08-04 | ML |
| 139 | Service tier components for general analysis job management | 5d | 2008-08-11 | 2008-08-15 |  | start no earlier than 2008-08-11 | ML |
| 140 | KM Plot Implementation | 5d | 2008-08-18 | 2008-08-22 |  | start no earlier than 2008-08-18 | ML |
| 141 | GenePattern integration | 5d | 2008-08-22 | 2008-08-28 |  | start no earlier than 2008-08-22 | TJ |

Changed:

| ID | Task | Start | Finish | Duration | Complete | Total float | Predecessors | Other |
| --- | --- | --- | --- | --- | --- | --- | --- | --- |
| 1 | **caIntegrator2 1.0** |  | 2008-08-18 → 2008-09-08 (+21d) | 107d? → 122d? | 30% → 28% |  |  |  |
| 25 | **Elaboration Phase** |  | 2008-08-18 → 2008-09-08 (+21d) | 84d? → 99d? | 34% → 31% |  |  |  |
| 107 | **Elaboration - Iteration 3** |  | 2008-08-18 → 2008-09-08 (+21d) | 31d? → 46d? |  |  |  |  |
| 108 | **Project Management** |  | 2008-07-09 → 2008-07-11 (+2d) | 3d → 5d |  | 26d → 35d |  |  |
| 111 | E2 Iteration Assessment | 2008-07-07 → 2008-07-10 (+3d) | 2008-07-08 → 2008-07-11 (+3d) |  |  | 31d → 34d |  | constraint finish no earlier than 2008-06-13 → start no earlier than 2008-07-10 |
| 113 | Draft Storyboard for caIntegrator2 | 2008-07-10 → 2008-07-14 (+4d) | 2008-07-11 → 2008-07-15 (+4d) |  |  | 26d → 32d |  | constraint start no earlier than 2008-07-10 → start no earlier than 2008-07-14 |
| 119 | Manage Queries-Supporting Class Model |  |  |  |  | 10d → 12d |  | was named Use-Case Design: Manage Queries part 1 |
| 120 | Use-Case Design:Manage Queries | 2008-07-14 → 2008-07-15 (+1d) | 2008-07-18 → 2008-07-17 (-1d) | 5d → 3d |  | 10d → 30d |  | was named Use-Case Design: Manage Queries part 2; constraint none → start no earlier than 2008-07-15 |
| 121 | Use-Case Design: Perform Analysis |  | 2008-07-23 → 2008-07-24 (+1d) | 3d → 4d |  | 16d → 7d |  |  |
| 123 | Model Changes (UoM, Range Search) | 2008-07-09 → 2008-07-07 (-2d) |  | 1d? → 3d? |  | 26d → 28d |  | constraint finish no earlier than 2008-07-09 → start no earlier than 2008-07-07 |
| 126 | **Implementation** |  | 2008-08-08 → 2008-08-28 (+20d) | 25d → 39d |  | 4d → 1d |  |  |
| 127 | **Implement Deploy Study** |  | 2008-07-11 → 2008-07-14 (+3d) | 5d → 6d |  | 21d → 34d |  |  |
| 129 | Datatype changes | 2008-07-07 → 2008-07-10 (+3d) | 2008-07-11 → 2008-07-14 (+3d) | 5d → 3d |  | 21d → 22d |  | constraint none → start no earlier than 2008-07-10 |
| 130 | Security - Authentication & Authorization |  |  |  |  | 28d → 26d |  | constraint none → start no earlier than 2008-07-07 |
| 131 | UI improvement for Deploy Study | 2008-07-14 → 2008-07-15 (+1d) | 2008-07-16 → 2008-07-17 (+1d) |  |  | 21d → 22d |  |  |
| 132 | **Implement Manage Queries** |  | 2008-08-08 → 2008-08-21 (+13d) | 20d → 29d |  | 4d → 6d |  |  |
| 133 | Front End |  | 2008-07-25 → 2008-08-01 (+7d) | 10d → 15d |  | 15d → 19d |  | was named Query Creation (Creation & Persistence); resources TJ → ML |
| 134 | General Service Tier (Query Creation & Persistence) | 2008-07-28 → 2008-07-14 (-14d) | 2008-08-08 → 2008-07-25 (-14d) |  |  | 4d → 16d |  | was named UI; constraint start no earlier than 2008-07-28 → start no earlier than 2008-07-14 |
| 135 | ArrayDataService search functionality | 2008-07-21 → 2008-07-25 (+4d) | 2008-08-01 → 2008-07-31 (-1d) | 10d → 5d |  | 10d → 20d |  | was named Query Engine (for Hibernate & NetCDF); constraint none → start no earlier than 2008-07-25 |
| 137 | **Implement Perform Data Analysis: GenePattern integration & KM Plot** | 2008-07-24 → 2008-08-04 (+11d) | 2008-08-06 → 2008-08-28 (+22d) | 10d → 19d |  | 6d → 1d | 121 → none | resources TBD1 → none |
| 143 | View Images | 2008-08-04 → 2008-08-01 (-3d) | 2008-08-08 → 2008-08-07 (-1d) |  |  | 4d → 16d |  | constraint start no earlier than 2008-08-04 → start no earlier than 2008-08-01 |
| 144 | **Test** | 2008-07-21 → 2008-07-14 (-7d) | 2008-08-15 → 2008-09-05 (+21d) | 20d → 40d |  |  |  |  |
| 145 | Performance/load test Manage Queries | 2008-08-11 → 2008-08-08 (-3d) | 2008-08-13 → 2008-08-12 (-1d) |  |  | 3d → 13d |  | constraint start no earlier than 2008-08-11 → start no earlier than 2008-08-08 |
| 146 | Unit Tests/Functional Tests | 2008-08-11 → 2008-08-18 (+7d) | 2008-08-15 → 2008-08-25 (+10d) | 5d → 6d |  | 1d → 4d |  | constraint start no earlier than 2008-08-11 → start no earlier than 2008-08-18; resources TJ → TBD1 |
| 147 | QA Team Test | 2008-07-21 → 2008-07-14 (-7d) | 2008-08-15 → 2008-09-05 (+21d) | 20d → 40d |  |  |  | constraint start no earlier than 2008-07-21 → finish no earlier than 2008-09-05; resources none → TBD2 |
| 152 | **Deployment** |  | 2008-08-11 → 2008-08-25 (+14d) | 21d? → 31d? |  | 5d → 4d |  |  |
| 154 | Deploy to QA tier | 2008-08-11 → 2008-08-25 (+14d) | 2008-08-11 → 2008-08-25 (+14d) |  |  | 5d → 4d |  | constraint start no earlier than 2008-08-11 → start no earlier than 2008-08-25; resources none → TBD2 |
| 155 | Elaboration 3 Complete | 2008-08-18 → 2008-09-08 (+21d) | 2008-08-18 → 2008-09-08 (+21d) |  |  |  |  |  |

## Version 13 (saved 2008-07-10)

Note of the change: Updated plan (Mark's vacation)

Last finish stays 2008-09-08.

Changed:

| ID | Task | Start | Finish | Duration | Total float | Other |
| --- | --- | --- | --- | --- | --- | --- |
| 126 | **Implementation** |  | 2008-08-28 → 2008-08-29 (+1d) | 39d → 40d | 1d → 6d |  |
| 137 | **Implement Perform Data Analysis: GenePattern integration & KM Plot** |  | 2008-08-28 → 2008-08-29 (+1d) | 19d → 20d | 1d → 6d |  |
| 139 | Service tier components for general analysis job management | 2008-08-11 → 2008-08-18 (+7d) | 2008-08-15 → 2008-08-22 (+7d) |  | 10d → 11d | constraint start no earlier than 2008-08-11 → start no earlier than 2008-08-18 |
| 140 | KM Plot Implementation | 2008-08-18 → 2008-08-25 (+7d) | 2008-08-22 → 2008-08-29 (+7d) |  | 5d → 6d | constraint start no earlier than 2008-08-18 → start no earlier than 2008-08-25 |

## Version 14 (saved 2008-08-06)

Note of the change: Modified project plan

Last finish 2008-09-08 → 2008-09-15 (+7d).

Added:

| ID | Task | Duration | Start | Finish | Constraint | Resources |
| --- | --- | --- | --- | --- | --- | --- |
| 112 | E3 Iteration Plan | 3d | 2008-08-11 | 2008-08-13 | start no earlier than 2008-08-11 | SJ |
| 116 | Finalize requirements for view images | 5d | 2008-08-25 | 2008-08-29 | start no earlier than 2008-08-25 | WF |
| 132 | NCIA mapping functionality | 7d | 2008-08-07 | 2008-08-15 | start no earlier than 2008-08-07 | SR |
| 133 | Genomics mapping functionality (debug) | 5d | 2008-07-07 | 2008-07-11 |  | JP |
| 134 | Data type drop-down and caDSR changes for data types | 3d | 2008-08-18 | 2008-08-20 | start no earlier than 2008-08-18 | SR |
| 142 | UI look and feel | 5d | 2008-08-13 | 2008-08-19 | start no earlier than 2008-08-13 | LN |

Changed:

| ID | Task | Start | Finish | Duration | Complete | Total float | Predecessors | Other |
| --- | --- | --- | --- | --- | --- | --- | --- | --- |
| 1 | **caIntegrator2 1.0** |  | 2008-09-08 → 2008-09-15 (+7d) | 122d? → 126d? | 28% → 27% |  |  |  |
| 25 | **Elaboration Phase** |  | 2008-09-08 → 2008-09-15 (+7d) | 99d? → 103d? | 31% → 30% |  |  |  |
| 107 | **Elaboration - Iteration 3** |  | 2008-09-08 → 2008-09-15 (+7d) | 46d? → 50d? |  |  |  |  |
| 108 | **Project Management** |  | 2008-07-11 → 2008-08-13 (+33d) | 5d → 28d |  | 35d → 22d |  |  |
| 111 | E2 Iteration Assessment | 2008-07-10 → 2008-08-07 (+28d) | 2008-07-11 → 2008-08-08 (+28d) |  |  | 34d → 25d |  | constraint start no earlier than 2008-07-10 → start no earlier than 2008-08-07 |
| 113 | **Requirements** |  | 2008-08-14 → 2008-09-04 (+21d) | 29d? → 43d? |  | 11d → 7d |  |  |
| 117 | Review Vision Document | 2008-07-31 → 2008-08-25 (+25d) | 2008-07-31 → 2008-08-25 (+25d) |  |  | 21d → 14d |  | constraint finish no earlier than 2008-07-31 → start no earlier than 2008-08-25 |
| 118 | Draft Storyboard for caIntegrator2 | 2008-07-14 → 2008-09-02 (+50d) | 2008-07-15 → 2008-09-03 (+50d) |  |  | 32d → 8d |  | constraint start no earlier than 2008-07-14 → start no earlier than 2008-09-01 |
| 119 | External Review of Use Cases/Vision | 2008-08-14 → 2008-09-04 (+21d) | 2008-08-14 → 2008-09-04 (+21d) |  |  | 11d → 7d |  | constraint finish no earlier than 2008-08-14 → start no earlier than 2008-09-04 |
| 120 | **Analysis and Design** |  | 2008-07-30 → 2008-08-22 (+23d) | 18d? → 35d? |  | 22d → 15d |  |  |
| 126 | Use-Case Design: Perform Analysis | 2008-07-21 → 2008-08-18 (+28d) | 2008-07-24 → 2008-08-22 (+29d) | 4d → 5d |  | 7d → 10d |  | constraint start no earlier than 2008-07-18 → start no earlier than 2008-08-18; resources ET → JP |
| 127 | Final Software Architecture Document |  |  |  |  | 13d → 32d |  | resources MH → JP |
| 128 | **Implementation** |  | 2008-08-29 → 2008-09-09 (+11d) | 40d → 46d |  | 6d → 4d |  |  |
| 129 | **Implement Deploy Study** |  | 2008-07-14 → 2008-08-25 (+42d) | 6d → 36d |  | 34d → 14d |  |  |
| 130 | Mapping functionality Genomics, Retrieve Array Data, Feedback from review |  |  |  |  | 26d → 45d |  | was named Mapping functionality (Genomics, NCIA), Retrieve Array Data, Feedback from review |
| 135 | UI improvement for Deploy Study | 2008-07-15 → 2008-08-21 (+37d) | 2008-07-17 → 2008-08-25 (+39d) |  |  | 22d → 14d | 131 → none | constraint none → start no earlier than 2008-08-21; resources MR → LN |
| 137 | **Implement Manage Queries** | 2008-07-14 → 2008-07-24 (+10d) | 2008-08-21 → 2008-08-26 (+5d) | 29d → 24d |  | 6d → 13d |  |  |
| 138 | Front End | 2008-07-14 → 2008-08-05 (+22d) | 2008-08-01 → 2008-08-25 (+24d) |  |  | 19d → 14d |  | constraint start no earlier than 2008-07-14 → start no earlier than 2008-08-05; resources ML → JP |
| 139 | General Service Tier (Query Creation & Persistence) | 2008-07-14 → 2008-08-06 (+23d) | 2008-07-25 → 2008-08-26 (+32d) |  |  | 16d → 13d |  | constraint start no earlier than 2008-07-14 → start no earlier than 2008-08-06; resources TJ → ML |
| 140 | Query to Hibernate Query translation | 2008-08-01 → 2008-07-24 (-8d) | 2008-08-21 → 2008-08-08 (-13d) | 15d → 12d |  | 5d → 25d |  | constraint start no earlier than 2008-08-01 → finish no earlier than 2008-08-08 |
| 141 | ArrayDataService search functionality | 2008-07-25 → 2008-08-11 (+17d) | 2008-07-31 → 2008-08-15 (+15d) |  |  |  | 122 → none | constraint start no earlier than 2008-07-25 → start no earlier than 2008-08-11; resources ET → TJ |
| 143 | **Implement Perform Data Analysis: GenePattern integration & KM Plot** | 2008-08-04 → 2008-08-18 (+14d) | 2008-08-29 → 2008-09-08 (+10d) | 20d → 15d |  | 6d → 5d |  |  |
| 144 | GenePattern integration | 2008-08-22 → 2008-08-18 (-4d) | 2008-08-28 → 2008-08-22 (-6d) |  |  | 1d → 15d |  | constraint start no earlier than 2008-08-22 → start no earlier than 2008-08-18 |
| 145 | Analysis job definition | 2008-08-04 → 2008-08-25 (+21d) | 2008-08-08 → 2008-08-29 (+21d) |  |  | 15d → 10d |  | resources ML → TJ |
| 146 | Service tier components for general analysis job management | 2008-08-18 → 2008-08-27 (+9d) | 2008-08-22 → 2008-09-03 (+12d) |  |  | 11d → 8d |  | constraint start no earlier than 2008-08-18 → start no earlier than 2008-08-27 |
| 147 | KM Plot Implementation | 2008-08-25 → 2008-09-02 (+8d) | 2008-08-29 → 2008-09-08 (+10d) |  |  | 6d → 5d |  | constraint start no earlier than 2008-08-25 → start no earlier than 2008-09-02; resources ML → TJ |
| 148 | Browse Study | 2008-07-14 → 2008-08-21 (+38d) | 2008-07-18 → 2008-08-27 (+40d) |  |  | 30d → 12d |  | constraint start no earlier than 2008-07-14 → start no earlier than 2008-08-21; resources TBD1 → SR |
| 149 | View Images | 2008-08-01 → 2008-09-03 (+33d) | 2008-08-07 → 2008-09-09 (+33d) |  |  | 16d → 4d | 115 → 116 | constraint start no earlier than 2008-08-01 → start no earlier than 2008-09-03; resources TBD1 → ML |
| 150 | **Test** | 2008-07-14 → 2008-08-11 (+28d) | 2008-09-05 → 2008-09-12 (+7d) | 40d → 24d |  |  |  |  |
| 151 | Performance/load test Manage Queries | 2008-08-08 → 2008-08-26 (+18d) | 2008-08-12 → 2008-09-02 (+21d) | 3d → 5d |  | 13d → 9d |  | constraint start no earlier than 2008-08-08 → start no earlier than 2008-08-26; resources TBD1 → JP |
| 152 | Unit Tests/Functional Tests | 2008-08-18 → 2008-08-26 (+8d) | 2008-08-25 → 2008-09-03 (+9d) |  |  | 4d → 8d |  | constraint start no earlier than 2008-08-18 → start no earlier than 2008-08-26; resources TBD1 → none |
| 153 | QA Team Test | 2008-07-14 → 2008-08-11 (+28d) | 2008-09-05 → 2008-09-12 (+7d) | 40d → 24d |  |  |  | constraint finish no earlier than 2008-09-05 → finish no earlier than 2008-09-12; resources TBD2 → none |
| 156 | **Configuration and Change Management** | 2008-07-14 → 2008-08-07 (+24d) | 2008-07-16 → 2008-08-11 (+26d) |  |  | 32d → 24d |  |  |
| 157 | Complete Feature Request/Tracking | 2008-07-14 → 2008-08-07 (+24d) | 2008-07-16 → 2008-08-11 (+26d) |  |  | 32d → 24d |  | constraint start no earlier than 2008-07-14 → start no earlier than 2008-08-07 |
| 160 | Deploy to QA tier |  |  |  |  | 4d → 14d |  | resources TBD2 → TBD |
| 161 | Elaboration 3 Complete | 2008-09-08 → 2008-09-15 (+7d) | 2008-09-08 → 2008-09-15 (+7d) |  |  |  |  |  |

## Version 15 (saved 2008-08-07)

Note of the change: Modified plan

Last finish stays 2008-09-15.

Added:

| ID | Task | Duration | Start | Finish | Constraint | Resources |
| --- | --- | --- | --- | --- | --- | --- |
| 135 | Asynchronous Study Deployment | 5d | 2008-08-21 | 2008-08-27 | start no earlier than 2008-08-21 | SR |

Changed:

| ID | Task | Start | Finish | Duration | Total float | Predecessors | Other |
| --- | --- | --- | --- | --- | --- | --- | --- |
| 129 | **Implement Deploy Study** |  | 2008-08-25 → 2008-08-27 (+2d) | 36d → 38d | 14d → 12d |  |  |
| 133 | Genomics mapping functionality (debug) | 2008-07-07 → 2008-08-05 (+29d) | 2008-07-11 → 2008-08-08 (+28d) | 5d → 4d | 45d → 25d |  | constraint none → start no earlier than 2008-08-05 |
| 139 | Front End |  |  |  |  |  | resources JP → JP; TJ |
| 144 | **Implement Perform Data Analysis: GenePattern integration & KM Plot** | 2008-08-18 → 2008-08-26 (+8d) | 2008-09-08 → 2008-09-09 (+1d) | 15d → 10d | 5d → 4d |  |  |
| 145 | GenePattern integration | 2008-08-18 → 2008-08-26 (+8d) | 2008-08-22 → 2008-09-02 (+11d) |  | 15d → 9d |  | constraint start no earlier than 2008-08-18 → start no earlier than 2008-08-26 |
| 146 | Analysis job definition | 2008-08-25 → 2008-08-26 (+1d) | 2008-08-29 → 2008-09-02 (+4d) |  | 10d → 9d |  | constraint start no earlier than 2008-08-04 → start no earlier than 2008-08-26; resources TJ → JP |
| 148 | KM Plot Implementation | 2008-09-02 → 2008-09-03 (+1d) | 2008-09-08 → 2008-09-09 (+1d) |  | 5d → 4d |  | constraint start no earlier than 2008-09-02 → start no earlier than 2008-09-03 |
| 149 | Browse Study | 2008-08-21 → 2008-08-28 (+7d) | 2008-08-27 → 2008-09-04 (+8d) |  | 12d → 7d |  | constraint start no earlier than 2008-08-21 → start no earlier than 2008-08-28 |
| 152 | Performance/load test Manage Queries |  |  |  |  |  | resources JP → ET |
| 159 | **Deployment** |  | 2008-08-25 → 2008-09-15 (+21d) | 31d? → 45d? | 14d → 0d |  |  |
| 161 | Deploy to QA tier | 2008-08-25 → 2008-09-15 (+21d) | 2008-08-25 → 2008-09-15 (+21d) |  | 14d → 0d | none → 154 |  |

## Version 16 (saved 2008-08-20)

Note of the change: marked the completed tasks

Last finish stays 2008-09-15. Complete tasks 21 → 37.

Changed:

| ID | Task | Start | Finish | Complete | Total float |
| --- | --- | --- | --- | --- | --- |
| 1 | **caIntegrator2 1.0** |  |  | 27% → 42% |  |
| 25 | **Elaboration Phase** |  |  | 30% → 47% |  |
| 107 | **Elaboration - Iteration 3** | 2008-07-07 A |  | 0% → 38% |  |
| 108 | **Project Management** | 2008-07-07 A | 2008-08-13 A | 0% → 100% | 22d → none |
| 109 | Schedule | 2008-07-07 A | 2008-07-07 A | 0% → 100% | 49d → none |
| 110 | Risk Management | 2008-07-07 A | 2008-07-09 A | 0% → 100% | 47d → none |
| 111 | E2 Iteration Assessment | 2008-08-07 A | 2008-08-08 A | 0% → 100% | 25d → none |
| 112 | E3 Iteration Plan | 2008-08-11 A | 2008-08-13 A | 0% → 100% | 22d → none |
| 113 | **Requirements** | 2008-07-07 A |  | 0% → 69% |  |
| 114 | Wireframes for Perform Analysis | 2008-07-07 A | 2008-07-18 A | 0% → 100% | 30d → none |
| 115 | Requirements for View Images | 2008-07-14 A | 2008-07-25 A | 0% → 100% | 35d → none |
| 120 | **Analysis and Design** | 2008-07-07 A |  | 0% → 78% |  |
| 121 | Manage Queries-Supporting Class Model | 2008-07-07 A | 2008-07-11 A | 0% → 100% | 42d → none |
| 122 | Use-Case Design:Manage Queries | 2008-07-15 A | 2008-07-17 A | 0% → 100% | 41d → none |
| 123 | Model Changes (Data Type Support) | 2008-07-07 A | 2008-07-09 A | 0% → 100% | 47d → none |
| 124 | Model Changes (UoM, Range Search) | 2008-07-07 A | 2008-07-09 A | 0% → 100% | 47d → none |
| 125 | Work with VCDE/Arc Mentor | 2008-07-07 A | 2008-07-25 A | 0% → 100% | 35d → none |
| 128 | **Implementation** | 2008-07-07 A |  | 0% → 26% |  |
| 129 | **Implement Deploy Study** | 2008-07-07 A |  | 0% → 40% |  |
| 130 | Mapping functionality Genomics, Retrieve Array Data, Feedback from review | 2008-07-07 A | 2008-07-11 A | 0% → 100% | 45d → none |
| 131 | Datatype changes | 2008-07-10 A | 2008-07-14 A | 0% → 100% | 44d → none |
| 133 | Genomics mapping functionality (debug) | 2008-08-05 A | 2008-08-08 A | 0% → 100% | 25d → none |
| 137 | Security - Authentication & Authorization | 2008-07-07 A | 2008-07-11 A | 0% → 100% | 45d → none |
| 138 | **Implement Manage Queries** | 2008-07-24 A |  | 0% → 26% |  |
| 141 | Query to Hibernate Query translation | 2008-07-24 A | 2008-08-08 A | 0% → 100% | 25d → none |

## Version 17 (saved 2008-08-21)

Last finish stays 2008-09-15. Complete tasks 37 → 38.

Added:

| ID | Task | Duration | Start | Finish | Constraint | Resources |
| --- | --- | --- | --- | --- | --- | --- |
| 117 | Requirements for Gene Summary data | 10d | 2008-08-18 | 2008-08-29 | start no earlier than 2008-08-18 | WF |
| 118 | Document various features discussed | 5d | 2008-08-25 | 2008-08-29 | start no earlier than 2008-08-25 | WF |
| 136 | Validation of Image ID with NCIA | 3d | 2008-08-20 | 2008-08-22 | start no earlier than 2008-08-20 | SR |
| 137 | Fix upload file mapping issues for array | 3d | 2008-08-25 | 2008-08-27 | start no earlier than 2008-08-25 | SR |
| 140 | Deploy Study Admin Tool (Control Samples, Survival length, Annotation load) | 1d? | 2008-07-07 | 2008-07-07 |  |  |
| 154 | get Image using GridTransfer | 5d | 2008-09-02 | 2008-09-08 | start no earlier than 2008-08-28 |  |

Removed: 136 UI improvement for Deploy Study; 149 Browse Study

Changed:

| ID | Task | Start | Finish | Duration | Complete | Total float | Other |
| --- | --- | --- | --- | --- | --- | --- | --- |
| 107 | **Elaboration - Iteration 3** |  |  |  | 38% → 39% |  |  |
| 113 | **Requirements** |  |  |  | 69% → 45% |  |  |
| 130 | **Implementation** |  | 2008-09-09 → 2008-09-11 (+2d) | 46d → 48d? | 26% → 32% | 4d → 2d |  |
| 131 | **Implement Deploy Study** |  | 2008-08-27 → 2008-09-02 (+6d) | 38d → 41d? | 40% → 56% | 12d → 9d |  |
| 134 | NCIA mapping functionality | 2008-08-07 A | 2008-08-15 A |  | 0% → 100% | 20d → none |  |
| 138 | Data type drop-down and caDSR changes for data types | 2008-08-18 → 2008-08-28 (+10d) | 2008-08-20 → 2008-09-02 (+13d) |  |  | 17d → 9d | constraint start no earlier than 2008-08-18 → start no earlier than 2008-08-28; resources SR → none |
| 142 | **Implement Manage Queries** |  | 2008-08-26 → 2008-09-11 (+16d) | 24d → 35d |  | 13d → 2d |  |
| 143 | Front End | 2008-08-05 → 2008-08-21 (+16d) | 2008-08-25 → 2008-09-11 (+17d) |  |  | 14d → 2d | constraint start no earlier than 2008-08-05 → start no earlier than 2008-08-21; resources JP; TJ → JP; ML |
| 147 | UI look and feel |  |  |  |  |  | resources LN → none |
| 153 | **View Images** | 2008-09-03 → 2008-09-02 (-1d) | 2008-09-09 → 2008-09-08 (-1d) |  |  | 4d → 5d | constraint start no earlier than 2008-09-03 → none |

## Version 18 (saved 2008-09-03)

Note of the change: modified version

Last finish stays 2008-09-15. Complete tasks 38 → 42.

Added:

| ID | Task | Duration | Start | Finish | Constraint | Resources |
| --- | --- | --- | --- | --- | --- | --- |
| 119 | Demo Presentations | 4d | 2008-09-08 | 2008-09-11 | start no earlier than 2008-09-08 | WF |
| 155 | Prepare Prep Data | 3d | 2008-09-02 | 2008-09-04 | start no earlier than 2008-09-02 | WF |

Removed: 139 Asynchronous Study Deployment; 140 Deploy Study Admin Tool (Control Samples, Survival length, Annotation load)

Changed:

| ID | Task | Start | Finish | Duration | Complete | Total float | Other |
| --- | --- | --- | --- | --- | --- | --- | --- |
| 1 | **caIntegrator2 1.0** |  |  |  | 42% → 43% |  |  |
| 25 | **Elaboration Phase** |  |  |  | 47% → 48% |  |  |
| 107 | **Elaboration - Iteration 3** |  |  |  | 39% → 42% |  |  |
| 113 | **Requirements** |  | 2008-09-04 → 2008-09-11 (+7d) | 43d? → 48d? | 45% → 73% | 7d → 2d |  |
| 117 | Requirements for Gene Summary data | 2008-08-18 A | 2008-08-29 A |  | 0% → 100% | 10d → none |  |
| 118 | Document various features discussed | 2008-08-25 A | 2008-08-29 A |  | 0% → 100% | 10d → none |  |
| 123 | **Analysis and Design** |  | 2008-08-22 → 2008-09-05 (+14d) | 35d? → 44d? | 78% → 63% | 15d → 6d |  |
| 129 | Use-Case Design: Perform Analysis |  | 2008-08-22 → 2008-09-05 (+14d) | 5d → 14d |  | 10d → 1d | constraint start no earlier than 2008-08-18 → finish no earlier than 2008-09-05; resources JP → ET |
| 131 | **Implementation** |  | 2008-09-11 → 2008-09-12 (+1d) | 48d? → 49d | 32% → 33% | 2d → 1d |  |
| 132 | **Implement Deploy Study** |  | 2008-09-02 → 2008-09-12 (+10d) | 41d? → 49d | 56% → 71% | 9d → 1d |  |
| 137 | Validation of Image ID with NCIA | 2008-08-20 A | 2008-08-22 A |  | 0% → 100% | 15d → none |  |
| 138 | Fix upload file mapping issues for array | 2008-08-25 A | 2008-08-27 A |  | 0% → 100% | 12d → none |  |
| 139 | Bug Fixes for Demo(Logo, caDSR type,NCIA annotation, Saved Queries in WS) | 2008-08-28 → 2008-08-29 (+1d) | 2008-09-02 → 2008-09-12 (+10d) | 3d → 10d |  | 9d → 1d | was named Data type drop-down and caDSR changes for data types; constraint start no earlier than 2008-08-28 → start no earlier than 2008-08-29 |
| 141 | **Implement Manage Queries** |  |  |  | 26% → 20% |  |  |
| 143 | General Service Tier (Query Creation & Persistence) | 2008-08-06 → 2008-08-18 (+12d) | 2008-08-26 → 2008-08-29 (+3d) |  |  | 13d → 10d | constraint start no earlier than 2008-08-06 → start no earlier than 2008-08-18; resources ML → TJ |
| 145 | ArrayDataService search functionality |  | 2008-08-15 → 2008-09-05 (+21d) | 5d → 19d |  | 20d → 6d | constraint start no earlier than 2008-08-11 → finish no earlier than 2008-09-05; resources TJ → TJ; ET |
| 146 | UI look and feel | 2008-08-13 → 2008-08-29 (+16d) | 2008-08-19 → 2008-09-05 (+17d) |  |  | 18d → 6d | constraint start no earlier than 2008-08-13 → finish no earlier than 2008-09-05; resources none → MR |
| 147 | **Implement Perform Data Analysis: GenePattern integration & KM Plot** | 2008-08-26 → 2008-08-27 (+1d) | 2008-09-09 → 2008-09-12 (+3d) | 10d → 12d |  | 4d → 1d |  |
| 148 | GenePattern integration | 2008-08-26 → 2008-09-08 (+13d) | 2008-09-02 → 2008-09-12 (+10d) |  |  | 9d → 1d | constraint start no earlier than 2008-08-26 → start no earlier than 2008-09-08 |
| 149 | Analysis job definition | 2008-08-26 → 2008-09-08 (+13d) | 2008-09-02 → 2008-09-12 (+10d) |  |  | 9d → 1d |  |
| 152 | **View Images** | 2008-09-02 → 2008-09-08 (+6d) | 2008-09-08 → 2008-09-12 (+4d) |  |  | 5d → 1d |  |
| 153 | view Image using iSPY like or other tools | 2008-09-02 → 2008-09-08 (+6d) | 2008-09-08 → 2008-09-12 (+4d) |  |  | 5d → 1d | was named get Image using GridTransfer; constraint start no earlier than 2008-08-28 → start no earlier than 2008-09-08 |

## Version 19 (saved 2008-09-29)

Last finish stays 2008-09-15. Complete tasks 42 → 43.

Added:

| ID | Task | Duration | Start | Finish | Predecessors | Constraint | Resources |
| --- | --- | --- | --- | --- | --- | --- | --- |
| 167 | **Construction - Iteration 1** | 103d? | 2008-04-21 A | 2008-09-15 |  |  |  |
| 168 | **Project Management** | 53d | 2008-05-30 | 2008-08-13 |  |  |  |
| 169 | Schedule | 1d | 2008-05-30 | 2008-05-30 |  | finish no earlier than 2008-05-30 | SJ |
| 170 | Risk Management | 3d | 2008-06-11 | 2008-06-13 |  | finish no earlier than 2008-06-13 | SJ |
| 171 | E3 Iteration Assessment | 2d | 2008-08-07 | 2008-08-08 |  | start no earlier than 2008-08-07 | SJ |
| 172 | C1 Iteration Plan | 3d | 2008-08-11 | 2008-08-13 |  | start no earlier than 2008-08-11 | SJ |
| 173 | **Requirements** | 96d? | 2008-04-21 | 2008-09-04 |  |  |  |
| 174 | Requirements for View Images | 10d? | 2008-07-14 | 2008-07-25 |  | finish no earlier than 2008-07-25 | WF |
| 175 | Wireframes for View Images | 10d? | 2008-07-07 | 2008-07-18 |  | start no earlier than 2008-07-07 | WF |
| 176 | Gforge Tracking for features & bugs | 1d? | 2008-04-21 | 2008-04-21 |  |  |  |
| 177 | Draft Storyboard for caIntegrator2 | 2d | 2008-09-02 | 2008-09-03 |  | start no earlier than 2008-09-01 | SJ |
| 178 | External Review of Use Cases/Vision | 1d? | 2008-09-04 | 2008-09-04 |  | start no earlier than 2008-09-04 | SJ |
| 179 | **Analysis and Design** | 29d | 2008-07-28 | 2008-09-05 |  |  |  |
| 180 | Use-Case Design: Perform Analysis | 14d | 2008-08-18 | 2008-09-05 | 175 | finish no earlier than 2008-09-05 | ET |
| 181 | Final Software Architecture Document | 3d | 2008-07-28 | 2008-07-30 |  | start no earlier than 2008-07-28 | JP |
| 182 | **Implementation** | 36d | 2008-07-24 A | 2008-09-12 |  |  |  |
| 183 | **Implement Deploy Study** | 10d | 2008-08-29 | 2008-09-12 |  |  |  |
| 184 | Bug Fixes for Demo(Logo, caDSR type,NCIA annotation, Saved Queries in WS) | 10d | 2008-08-29 | 2008-09-12 |  | start no earlier than 2008-08-29 |  |
| 185 | **Implement Manage Queries** | 35d | 2008-07-24 A | 2008-09-11 |  |  |  |
| 186 | Front End | 15d | 2008-08-21 | 2008-09-11 |  | start no earlier than 2008-08-21 | JP; ML |
| 187 | General Service Tier (Query Creation & Persistence) | 10d | 2008-08-18 | 2008-08-29 |  | start no earlier than 2008-08-18 | TJ |
| 188 | Query to Hibernate Query translation | 12d | 2008-07-24 A | 2008-08-08 A |  | finish no earlier than 2008-08-08 | TJ |
| 189 | ArrayDataService search functionality | 19d | 2008-08-11 | 2008-09-05 |  | finish no earlier than 2008-09-05 | TJ; ET |
| 190 | UI look and feel | 5d | 2008-08-29 | 2008-09-05 |  | finish no earlier than 2008-09-05 | MR |
| 191 | **Implement Perform Data Analysis: GenePattern integration & KM Plot** | 12d | 2008-08-27 | 2008-09-12 |  |  |  |
| 192 | GenePattern integration | 5d | 2008-09-08 | 2008-09-12 |  | start no earlier than 2008-09-08 | TJ |
| 193 | Analysis job definition | 5d | 2008-09-08 | 2008-09-12 | 180 | start no earlier than 2008-08-26 | JP |
| 194 | Service tier components for general analysis job management | 5d | 2008-08-27 | 2008-09-03 |  | start no earlier than 2008-08-27 | ML |
| 195 | KM Plot Implementation | 5d | 2008-09-03 | 2008-09-09 |  | start no earlier than 2008-09-03 | TJ |
| 196 | **View Images** | 5d | 2008-09-08 | 2008-09-12 |  |  | ML |
| 197 | view Image using iSPY like or other tools | 5d | 2008-09-08 | 2008-09-12 |  | start no earlier than 2008-09-08 |  |
| 198 | **Test** | 24d | 2008-08-11 | 2008-09-12 |  |  |  |
| 199 | Prepare Prep Data | 3d | 2008-09-02 | 2008-09-04 |  | start no earlier than 2008-09-02 | WF |
| 200 | Performance/load test Manage Queries | 5d | 2008-08-26 | 2008-09-02 |  | start no earlier than 2008-08-26 | ET |
| 201 | Unit Tests/Functional Tests | 6d | 2008-08-26 | 2008-09-03 |  | start no earlier than 2008-08-26 |  |
| 202 | QA Team Test | 24d | 2008-08-11 | 2008-09-12 |  | finish no earlier than 2008-09-12 |  |
| 203 | **Environment** | 1d? | 2008-07-28 | 2008-07-28 |  |  |  |
| 204 | Configure nightly build | 1d? | 2008-07-28 | 2008-07-28 |  | start no earlier than 2008-07-28 | ET |
| 205 | **Configuration and Change Management** | 3d | 2008-08-07 | 2008-08-11 |  |  |  |
| 206 | Complete Feature Request/Tracking | 3d | 2008-08-07 | 2008-08-11 |  | start no earlier than 2008-08-07 | SJ |
| 207 | **Deployment** | 45d? | 2008-07-14 | 2008-09-15 |  |  |  |
| 208 | Deploy to DEV tier | 2d | 2008-07-14 | 2008-07-15 |  | start no earlier than 2008-07-14 | ET |
| 209 | Deploy to QA tier | 1d? | 2008-09-15 | 2008-09-15 | 202 | start no earlier than 2008-08-25 | TBD |
| 210 | Construction 1 Complete | 1d? | 2008-09-15 | 2008-09-15 | 202 | start no earlier than 2008-07-03 |  |

Changed:

| ID | Task | Complete | Predecessors |
| --- | --- | --- | --- |
| 1 | **caIntegrator2 1.0** | 43% → 35% |  |
| 25 | **Elaboration Phase** | 48% → 38% |  |
| 142 | Front End |  | 124 → none |
| 143 | General Service Tier (Query Creation & Persistence) |  | 125 → none |

## Version 20 (saved 2008-09-30)

Last finish 2008-09-15 → 2008-10-09 (+24d).

Changed:

| ID | Task | Start | Finish | Duration | Total float | Other |
| --- | --- | --- | --- | --- | --- | --- |
| 1 | **caIntegrator2 1.0** |  | 2008-09-15 → 2008-10-09 (+24d) | 126d? → 144d? |  |  |
| 25 | **Elaboration Phase** |  | 2008-09-15 → 2008-10-09 (+24d) | 103d? → 121d? |  |  |
| 167 | **Construction - Iteration 1** |  | 2008-09-15 → 2008-10-09 (+24d) | 103d? → 121d? |  |  |
| 168 | **Project Management** | 2008-05-30 → 2008-10-01 (+124d) | 2008-08-13 → 2008-10-09 (+57d) | 53d → 7d | 22d → 0d |  |
| 169 | Schedule | 2008-05-30 → 2008-10-01 (+124d) | 2008-05-30 → 2008-10-01 (+124d) |  | 74d → 6d | constraint finish no earlier than 2008-05-30 → start no earlier than 2008-10-01 |
| 170 | Risk Management | 2008-06-11 → 2008-10-02 (+113d) | 2008-06-13 → 2008-10-02 (+111d) | 3d → 1d | 64d → 5d | constraint finish no earlier than 2008-06-13 → start no earlier than 2008-10-02 |
| 171 | E3 Iteration Assessment | 2008-08-07 → 2008-10-03 (+57d) | 2008-08-08 → 2008-10-06 (+59d) |  | 25d → 3d | constraint start no earlier than 2008-08-07 → start no earlier than 2008-10-03 |
| 172 | C1 Iteration Plan | 2008-08-11 → 2008-10-07 (+57d) | 2008-08-13 → 2008-10-09 (+57d) |  | 22d → 0d | constraint start no earlier than 2008-08-11 → start no earlier than 2008-10-07 |

## Version 21 (saved 2008-11-24)

Last finish 2008-10-09 → 2008-12-05 (+57d). Complete tasks 43 → 42.

Added:

| ID | Task | Duration | Start | Finish | Predecessors | Constraint | Resources |
| --- | --- | --- | --- | --- | --- | --- | --- |
| 167 | **Construction Phase** | 48d? | 2008-10-01 | 2008-12-05 | 107 |  |  |
| 175 | Elaborate further on view images | 10d? | 2008-10-06 | 2008-10-17 |  | start no earlier than 2008-10-06 | WF |
| 181 | adding missing functionalities on Deploy Study implementation | 10d | 2008-10-01 | 2008-10-14 |  | start no earlier than 2008-10-01 |  |
| 183 | Complete Clinical, Image and Some Gene Expression Queries | 20d | 2008-10-06 | 2008-10-31 |  | start no earlier than 2008-10-06 |  |
| 184 | **Implement Perform Data Analysis: GenePattern integration** | 15d | 2008-10-13 | 2008-10-31 |  |  |  |
| 185 | GenePattern Simple integration | 15d | 2008-10-13 | 2008-10-31 |  | start no earlier than 2008-10-13 | ET |
| 188 | Test | 21d | 2008-10-01 | 2008-10-29 |  | start no earlier than 2008-10-01 |  |
| 196 | **Construction - Iteration 2** | 25d? | 2008-11-03 | 2008-12-05 | 168 |  |  |
| 197 | **Project Management** | 3d? | 2008-11-03 | 2008-11-05 |  |  |  |
| 198 | Schedule | 1d | 2008-11-03 | 2008-11-03 |  | start no earlier than 2008-10-01 | SJ |
| 199 | Risk Management | 1d | 2008-11-03 | 2008-11-03 |  | start no earlier than 2008-10-02 | SJ |
| 200 | C1 Iteration Assessment | 2d | 2008-11-03 | 2008-11-04 |  | start no earlier than 2008-10-03 | SJ |
| 201 | C2 Iteration Plan | 3d | 2008-11-03 | 2008-11-05 |  | start no earlier than 2008-10-07 | SJ |
| 202 | Beta Release Plan | 1d? | 2008-11-03 | 2008-11-03 |  |  |  |
| 203 | **Requirements** | 20d? | 2008-11-03 | 2008-11-28 |  |  |  |
| 204 | Time point - wire frames | 10d? | 2008-11-17 | 2008-11-28 |  | start no earlier than 2008-11-17 | WF |
| 205 | Update Gforge Tracking for features & bugs | 5d | 2008-11-03 | 2008-11-07 |  | start no earlier than 2008-10-01 |  |
| 206 | Documentations (Product Feature, User Guide) | 1d? | 2008-11-03 | 2008-11-03 |  |  |  |
| 207 | Vision Document Update | 1d? | 2008-11-03 | 2008-11-03 |  |  |  |
| 208 | User Story | 1d? | 2008-11-03 | 2008-11-03 |  |  |  |
| 209 | **Analysis and Design** | 3d | 2008-12-03 | 2008-12-05 |  |  |  |
| 210 | Final Software Architecture Document | 3d | 2008-12-03 | 2008-12-05 |  | start no earlier than 2008-12-03 | JP |
| 211 | **Implementation** | 25d | 2008-11-03 | 2008-12-05 |  |  |  |
| 212 | **Implement Deploy Study** | 10d | 2008-11-03 | 2008-11-14 |  |  |  |
| 213 | Adding Survival Time Definition, caDSR permissible values, bug fix | 10d | 2008-11-03 | 2008-11-14 |  | start no earlier than 2008-10-01 |  |
| 214 | **Implement Manage Queries** | 25d | 2008-11-03 | 2008-12-05 |  |  |  |
| 215 | Fold Change Definition and Queries | 10d | 2008-11-24 | 2008-12-05 |  | start no earlier than 2008-11-24 |  |
| 216 | Edit Queries | 10d | 2008-11-24 | 2008-12-05 |  | start no earlier than 2008-11-24 |  |
| 217 | Query Operator - datatype sensitive | 7d | 2008-11-03 | 2008-11-11 |  |  |  |
| 218 | Time Points | 15d | 2008-11-17 | 2008-12-05 |  | start no earlier than 2008-11-17 |  |
| 219 | **Implement Perform Data Analysis** | 24d | 2008-11-03 | 2008-12-04 |  |  |  |
| 220 | GenePattern integration for Queries | 14d | 2008-11-03 | 2008-11-20 |  | start no earlier than 2008-10-13 | ET |
| 221 | KM plot implementation for Clinical | 15d | 2008-11-14 | 2008-12-04 |  | start no earlier than 2008-11-14 |  |
| 222 | KM plot for Genomic | 7d | 2008-11-17 | 2008-11-25 |  | start no earlier than 2008-11-17 |  |
| 224 | Setup GForge | 4d | 2008-11-10 | 2008-11-13 |  | start no earlier than 2008-11-10 | JP |
| 225 | QA team to write test cases | 10d | 2008-11-10 | 2008-11-21 |  | start no earlier than 2008-11-10 |  |
| 226 | Environment | 3d | 2008-11-03 | 2008-11-05 |  |  |  |
| 227 | **Configuration and Change Management** | 3d | 2008-11-03 | 2008-11-05 |  |  |  |
| 228 | Feature Request/Tracking | 3d | 2008-11-03 | 2008-11-05 |  | start no earlier than 2008-10-06 | SJ |
| 229 | **Deployment** | 5d | 2008-12-01 | 2008-12-05 |  |  |  |
| 231 | Construction 2 Complete | 1d? | 2008-12-05 | 2008-12-05 |  | finish no earlier than 2008-12-05 |  |

Removed: 174 Requirements for View Images; 175 Wireframes for View Images; 177 Draft Storyboard for caIntegrator2; 178 External Review of Use Cases/Vision; 180 Use-Case Design: Perform Analysis; 184 Bug Fixes for Demo(Logo, caDSR type,NCIA annotation, Saved Queries in WS); 186 Front End; 187 General Service Tier (Query Creation & Persistence); 188 Query to Hibernate Query translation; 189 ArrayDataService search functionality; 190 UI look and feel; 191 Implement Perform Data Analysis: GenePattern integration & KM Plot; 192 GenePattern integration; 193 Analysis job definition; 194 Service tier components for general analysis job management; 195 KM Plot Implementation; 199 Prepare Prep Data; 200 Performance/load test Manage Queries; 201 Unit Tests/Functional Tests; 202 QA Team Test

Changed:

| ID | Task | Start | Finish | Duration | Complete | Total float | Predecessors | Other |
| --- | --- | --- | --- | --- | --- | --- | --- | --- |
| 1 | **caIntegrator2 1.0** |  | 2008-10-09 → 2008-12-05 (+57d) | 144d? → 185d? | 35% → 31% |  |  |  |
| 25 | **Elaboration Phase** |  | 2008-10-09 → 2008-12-05 (+57d) | 121d? → 162d? | 38% → 33% |  |  |  |
| 107 | **Elaboration - Iteration 3** |  | 2008-09-15 → 2008-09-30 (+15d) | 50d? → 61d? |  | 18d → 12d |  |  |
| 131 | **Implementation** |  | 2008-09-12 → 2008-09-30 (+18d) | 49d → 61d |  | 19d → 12d |  |  |
| 132 | **Implement Deploy Study** |  | 2008-09-12 → 2008-09-30 (+18d) | 49d → 61d | 71% → 68% | 1d → 12d |  |  |
| 139 | Bug Fixes for Demo(Logo, caDSR type,NCIA annotation, Saved Queries in WS) | 2008-08-29 → 2008-09-15 (+17d) | 2008-09-12 → 2008-09-30 (+18d) | 10d → 12d |  | 1d → 12d |  | constraint start no earlier than 2008-08-29 → start no earlier than 2008-09-15 |
| 168 | **Construction - Iteration 1** | 2008-04-21 A → 2008-10-01 (+163d) | 2008-10-09 → 2008-10-31 (+22d) | 121d? → 23d? | 6% → 0% | 0d → 10d |  |  |
| 174 | **Requirements** | 2008-04-21 → 2008-10-01 (+163d) | 2008-09-04 → 2008-10-17 (+43d) | 96d? → 13d? |  | 7d → 20d |  |  |
| 176 | Gforge Tracking for features & bugs | 2008-04-21 → 2008-10-01 (+163d) | 2008-04-21 → 2008-10-07 (+169d) | 1d? → 5d |  | 102d → 28d |  | constraint none → start no earlier than 2008-10-01; resources none → WF |
| 177 | **Analysis and Design** | 2008-07-28 → 2008-10-20 (+84d) | 2008-09-05 → 2008-10-22 (+47d) | 29d → 3d |  | 6d → 17d |  |  |
| 178 | Final Software Architecture Document | 2008-07-28 → 2008-10-20 (+84d) | 2008-07-30 → 2008-10-22 (+84d) |  |  | 32d → 17d |  | constraint start no earlier than 2008-07-28 → start no earlier than 2008-10-20 |
| 179 | **Implementation** | 2008-07-24 A → 2008-10-01 (+69d) | 2008-09-12 → 2008-10-31 (+49d) | 36d → 23d | 13% → 0% | 1d → 10d |  |  |
| 180 | **Implement Deploy Study** | 2008-08-29 → 2008-10-01 (+33d) | 2008-09-12 → 2008-10-14 (+32d) |  |  | 1d → 23d |  |  |
| 182 | **Implement Manage Queries** | 2008-07-24 A → 2008-10-06 (+74d) | 2008-09-11 → 2008-10-31 (+50d) | 35d → 20d | 20% → 0% | 2d → 10d |  |  |
| 186 | **View Images** | 2008-09-08 → 2008-10-06 (+28d) | 2008-09-12 → 2008-10-10 (+28d) |  |  | 1d → 25d |  |  |
| 187 | view Image using iSPY like or other tools | 2008-09-08 → 2008-10-06 (+28d) | 2008-09-12 → 2008-10-10 (+28d) |  |  | 1d → 25d |  | constraint start no earlier than 2008-09-08 → start no earlier than 2008-10-06 |
| 189 | **Environment** | 2008-07-28 → 2008-10-01 (+65d) | 2008-07-28 → 2008-10-03 (+67d) | 1d? → 3d |  | 34d → 30d |  |  |
| 190 | Configure nightly build | 2008-07-28 → 2008-10-01 (+65d) | 2008-07-28 → 2008-10-03 (+67d) | 1d? → 3d |  | 34d → 30d |  | constraint start no earlier than 2008-07-28 → start no earlier than 2008-10-01 |
| 191 | **Configuration and Change Management** | 2008-08-07 → 2008-10-06 (+60d) | 2008-08-11 → 2008-10-08 (+58d) |  |  | 24d → 27d |  |  |
| 192 | Complete Feature Request/Tracking | 2008-08-07 → 2008-10-06 (+60d) | 2008-08-11 → 2008-10-08 (+58d) |  |  | 24d → 27d |  | constraint start no earlier than 2008-08-07 → start no earlier than 2008-10-06 |
| 193 | **Deployment** | 2008-07-14 → 2008-10-06 (+84d) | 2008-09-15 → 2008-10-13 (+28d) | 45d? → 6d |  | 18d → 24d |  |  |
| 194 | Deploy to DEV tier | 2008-07-14 → 2008-10-06 (+84d) | 2008-07-15 → 2008-10-13 (+90d) | 2d → 6d |  | 43d → 24d |  | constraint start no earlier than 2008-07-14 → start no earlier than 2008-10-06; resources ET → JP |
| 195 | Construction 1 Complete | 2008-09-15 → 2008-10-30 (+45d) | 2008-09-15 → 2008-10-30 (+45d) |  |  | 18d → 11d | QA Team Test → none | constraint start no earlier than 2008-07-03 → finish no earlier than 2008-10-30 |
| 223 | **Test** | 2008-08-11 → 2008-11-10 (+91d) | 2008-09-12 → 2008-11-21 (+70d) | 24d → 10d |  | 18d → 10d |  |  |
| 230 | Deploy to QA tier | 2008-09-15 → 2008-12-01 (+77d) | 2008-09-15 → 2008-12-05 (+81d) | 1d? → 5d |  | 18d → 0d | QA Team Test → none | constraint start no earlier than 2008-08-25 → start no earlier than 2008-12-01; resources TBD → QA |
