# caintegrator_schedule_Aug_30_2011

How a schedule from MS Project changed from version to version. A marks actual dates.

## Version 1 (saved 2011-08-30, file caintegrator_project_plan.mpp)

Note of the change: User Story: CAINT-1043 prepare a point release for section 508 compliance. Reviewed by: self.

| ID | WBS | Task | Duration | Start | Finish | Predecessors | Complete | Total float | Constraint |
| --- | --- | --- | --- | --- | --- | --- | --- | --- | --- |
| 1 | 1 | **Adhoc Generic Support** | 16d | 2011-08-01 | 2011-08-22 |  |  | 171d |  |
| 2 |  | TCGA Data Support | 2d | 2011-08-01 | 2011-08-02 |  |  | 187d |  |
| 3 |  | TCGA Data on caIntegrator | 4d | 2011-08-17 | 2011-08-22 |  |  | 171d | start no earlier than 2011-08-17 |
| 4 |  | MATKC Support | 0d | 2011-08-01 | 2011-08-01 |  |  | 187d |  |
| 5 | 2 | **CaIntegrator Version 1.4** | 115d? | 2011-08-01 A | 2012-01-06 |  | 7% | 72d |  |
| 6 |  | Version 1.4 planning/priortization | 2d | 2011-08-01 A | 2011-08-02 A |  | 100% |  |  |
| 7 | 2.2 | **508 Compliance** | 13d | 2011-08-15 A | 2011-08-31 | 6 | 86% | -1d |  |
| 8 |  | Common Accenture Profile Dev/QA | 1d | 2011-08-15 A | 2011-08-15 A |  | 100% |  | start no earlier than 2011-08-15 |
| 9 |  | Identify 508 issues to be fixed and create JIRA user story tasks for each on DEV and QA. | 3d | 2011-08-22 A | 2011-08-24 A | 8 | 100% |  |  |
| 10 |  | Fix TABLE tag in caBIO search form. | 0.5d | 2011-08-29 A | 2011-08-29 A | 9 | 100% |  |  |
| 11 |  | Fix TABLE tag in gene list search form. | 0.5d | 2011-08-29 A | 2011-08-29 A | 10 | 100% |  |  |
| 12 |  | Fix ALT tags in caBIO search form | 0.5d | 2011-08-30 A | 2011-08-30 A | 11 | 100% |  |  |
| 13 |  | Fix ALT tags in study summary page | 0.5d | 2011-08-30 A | 2011-08-30 A | 12 | 100% |  |  |
| 14 |  | Fix TABLE header in registeration page | 0.5d | 2011-08-31 | 2011-08-31 | 13 |  | -18d |  |
| 15 |  | Fix TABLE in study summary page. | 0.5d | 2011-08-31 | 2011-08-31 | 14 |  | -18d |  |
| 16 | 2.3 | **Tech Stack Upgrade** | 40d | 2011-08-03 A | 2011-09-27 | 7 | 10% | 0d |  |
| 17 |  | Planning | 2d | 2011-08-03 A | 2011-08-04 A |  | 100% |  |  |
| 18 |  | CI to Jenkins | 2d | 2011-09-01 | 2011-09-02 | 17 |  | 0d |  |
| 19 |  | ANT 1.8 | 3d | 2011-09-05 | 2011-09-07 | 18 |  | 0d |  |
| 20 |  | JBOSS | 5d | 2011-09-08 | 2011-09-14 | 19 |  | 0d |  |
| 21 |  | Upgrade build for Anthill Pro 3 | 9d | 2011-09-15 | 2011-09-27 | 20 |  | 0d |  |
| 22 | 2.4 | **Generic Platform Support** | 43d | 2011-09-28 | 2011-11-25 |  |  | 0d |  |
| 23 |  | Create new generic platform model by extending expression platform. | 8d | 2011-09-28 | 2011-10-07 | 21 |  | 0d |  |
| 24 |  | Modify the generic platform loader to accept MAGE-TAB. | 5d | 2011-10-10 | 2011-10-14 | 23 |  | 0d |  |
| 25 |  | Modify the study deployment process to load the new platform data from caArray. | 8d | 2011-10-17 | 2011-10-26 | 24 |  | 0d |  |
| 26 |  | modify front-end analysis tools to show a new title according to platform type. | 3d | 2011-10-27 | 2011-10-31 | 25 |  | 0d |  |
| 27 |  | Modify the Query interface to allow selection of a generic expression data type. | 14d | 2011-11-01 | 2011-11-18 | 26 |  | 0d |  |
| 28 |  | Modify front-end for IGV and heatmap to display a selector for choosing a generic expression data type. | 5d | 2011-11-21 | 2011-11-25 | 27 |  | 0d |  |
| 29 | 2.5 | **TRANSCEND Support** | 30d? | 2011-09-19 | 2011-10-28 |  |  | 112d |  |
| 30 |  | Gather contacts for TRANSCEND (contract?) | 1d? | 2011-09-19 | 2011-09-19 |  |  | 112d | start no earlier than 2011-09-19 |
| 31 |  | Refine Requirements | 10d | 2011-09-20 | 2011-10-03 | 30 |  | 112d |  |
| 32 |  | Version control (create shell study) | 14d | 2011-10-04 | 2011-10-21 | 31 |  | 112d |  |
| 33 |  | Version control (Archive) | 5d | 2011-10-24 | 2011-10-28 | 32 |  | 112d |  |
| 34 |  | QA | 20d | 2011-11-28 | 2011-12-23 | 22 |  | 0d |  |
| 35 |  | Documentation | 10d | 2011-10-31 | 2011-11-11 | 29 |  | 112d |  |
| 36 |  | Appscan/Stage/Prod release | 10d | 2011-12-26 | 2012-01-06 | 34 |  | 72d |  |
| 37 | 3 | **CaIntegrator Version 1.5** | 102d? | 2011-11-28 | 2012-04-17 |  |  | 0d |  |
| 38 |  | Version 1.5 planning/priortization | 2d | 2011-12-26 | 2011-12-27 | 34 |  | 0d |  |
| 39 | 3.2 | **TRANSCEND Support** | 60d | 2011-12-28 | 2012-03-20 |  |  | 0d |  |
| 40 |  | Permissions | 40d | 2011-12-28 | 2012-02-21 | 38 |  | 0d |  |
| 41 |  | Automatic Refresh | 20d | 2011-12-28 | 2012-01-24 | 38 |  | 40d |  |
| 42 |  | Single Sign-on | 20d | 2012-02-22 | 2012-03-20 | 40 |  | 0d |  |
| 43 |  | QA | 20d | 2012-03-21 | 2012-04-17 | 39 |  | 0d |  |
| 44 |  | Documentation | 10d | 2012-03-21 | 2012-04-03 | 39 |  | 0d |  |
| 45 |  | Appscan/Stage/Prod release | 10d | 2012-04-04 | 2012-04-17 | 44 |  | 0d |  |

## Version 2 (saved 2011-09-19, file caintegrator_project_plan.mpp)

Note of the change: Update Project Plan

Last finish 2012-04-17 → 2012-06-25 (+69d). Complete tasks 8 → 14.

Added:

| ID | Task | Duration | Start | Finish | Predecessors | Constraint | Resources |
| --- | --- | --- | --- | --- | --- | --- | --- |
| 5 | **CaIntegrator Version 1.3.1** | 25d? | 2011-08-15 A | 2011-09-19 |  |  |  |
| 15 | **Ongoing maintenance and bug fixes** | 13d? | 2011-08-31 A | 2011-09-19 |  |  |  |
| 16 | ADF platform issues | 2d | 2011-08-31 A | 2011-09-01 A |  | start no earlier than 2011-08-31 |  |
| 17 | ECAT Prep | 2d | 2011-09-02 A | 2011-09-06 A | 16 |  |  |
| 18 | prepare a point release for section 508 compliance. | 1d? | 2011-09-19 A | 2011-09-19 |  | start no earlier than 2011-09-19 |  |
| 19 | QA | 10d | 2011-09-20 | 2011-10-03 | 18 |  |  |
| 20 | Stage/Prod Release | 7d | 2011-10-04 | 2011-10-12 | 19 |  |  |
| 27 | Support for Version 1.3.1 | 2d | 2011-09-20 | 2011-09-21 | 18 |  | JP |
| 42 | **Ongoing maintenance and bug fixes** | 4d | 2011-08-31 | 2011-09-06 |  |  |  |
| 43 | ADF platform issues | 2d | 2011-08-31 | 2011-09-01 |  | start no earlier than 2011-08-31 |  |
| 44 | ECAT Prep | 2d | 2011-09-02 | 2011-09-06 | 43 |  |  |
| 54 | JIRA CAINT-49 Integrate with private studies in NBIA | 20d | 2012-03-05 | 2012-04-02 | 52 |  | JP |
| 55 | JIRA CAINT-1041 - Support NCI Funded Studies Deployment | 20d | 2012-04-30 | 2012-05-28 | 53 |  | TBH |

Changed:

| ID | Task | Start | Finish | Duration | Complete | Total float | Predecessors | Other |
| --- | --- | --- | --- | --- | --- | --- | --- | --- |
| 6 | **508 Compliance** |  | 2011-08-31 A |  | 86% → 100% | -1d → none | 22 → none |  |
| 13 | Fix TABLE header in registeration page | 2011-08-31 A | 2011-08-31 A |  | 0% → 100% | -18d → none |  |  |
| 14 | Fix TABLE in study summary page. | 2011-08-31 A | 2011-08-31 A |  | 0% → 100% | -18d → none |  |  |
| 21 | **CaIntegrator Version 1.4** |  | 2012-01-06 → 2012-01-19 (+13d) | 115d? → 122.75d? |  | 72d → 112d |  |  |
| 23 | **JIRA CAINT-1011 Tech Stack Upgrade** |  | 2011-09-27 → 2011-10-10 (+13d) | 40d → 47.75d | 10% → 36% |  | 6 → 22 | was named Tech Stack Upgrade |
| 25 | CI to Jenkins | 2011-09-01 → 2011-09-07 A (+6d) | 2011-09-02 → 2011-09-08 A (+6d) |  | 0% → 100% | 0d → none | 24 → 24, 43, 44 |  |
| 26 | ANT 1.8 | 2011-09-05 → 2011-09-09 A (+4d) | 2011-09-07 → 2011-09-13 A (+6d) |  | 0% → 100% | 0d → none |  |  |
| 28 | JBOSS | 2011-09-08 → 2011-09-14 A (+6d) | 2011-09-14 → 2011-09-27 (+13d) |  | 0% → 25% |  | 26 → 27 |  |
| 29 | Upgrade build for Anthill Pro 3 | 2011-09-15 → 2011-09-27 (+12d) | 2011-09-27 → 2011-10-10 (+13d) |  |  |  |  |  |
| 30 | **JIRA-CAINT-966 - Generic Platform Support** | 2011-09-28 → 2011-10-10 (+12d) | 2011-11-25 → 2011-12-08 (+13d) |  |  |  |  | was named Generic Platform Support |
| 31 | Create new generic platform model by extending expression platform. | 2011-09-28 → 2011-10-10 (+12d) | 2011-10-07 → 2011-10-20 (+13d) |  |  |  |  |  |
| 32 | Modify the generic platform loader to accept MAGE-TAB. | 2011-10-10 → 2011-10-20 (+10d) | 2011-10-14 → 2011-10-27 (+13d) |  |  |  |  |  |
| 33 | Modify the study deployment process to load the new platform data from caArray. | 2011-10-17 → 2011-10-27 (+10d) | 2011-10-26 → 2011-11-08 (+13d) |  |  |  |  |  |
| 34 | modify front-end analysis tools to show a new title according to platform type. | 2011-10-27 → 2011-11-08 (+12d) | 2011-10-31 → 2011-11-11 (+11d) |  |  |  |  |  |
| 35 | Modify the Query interface to allow selection of a generic expression data type. | 2011-11-01 → 2011-11-11 (+10d) | 2011-11-18 → 2011-12-01 (+13d) |  |  |  |  |  |
| 36 | Modify front-end for IGV and heatmap to display a selector for choosing a generic expression data type. | 2011-11-21 → 2011-12-01 (+10d) | 2011-11-25 → 2011-12-08 (+13d) |  |  |  |  |  |
| 40 | JIRA CAINT-998 -Version control (create shell study) |  |  |  |  | 112d → 160.75d |  | was named Version control (create shell study) |
| 41 | JIRA CAINT-998 Version control (Archive) |  |  |  |  | 112d → 160.75d |  | was named Version control (Archive) |
| 45 | QA | 2011-11-28 → 2011-12-08 (+10d) | 2011-12-23 → 2012-01-05 (+13d) |  |  |  |  |  |
| 47 | Appscan/Stage/Prod release | 2011-12-26 → 2012-01-05 (+10d) | 2012-01-06 → 2012-01-19 (+13d) |  |  | 72d → 112d |  |  |
| 48 | **CaIntegrator Version 1.5** | 2011-11-28 → 2012-01-05 (+38d) | 2012-04-17 → 2012-06-25 (+69d) | 102d? → 122d |  |  |  |  |
| 49 | Version 1.5 planning/priortization | 2011-12-26 → 2012-01-05 (+10d) | 2011-12-27 → 2012-01-09 (+13d) |  |  |  |  |  |
| 50 | **TRANSCEND Support** | 2011-12-28 → 2012-01-09 (+12d) | 2012-03-20 → 2012-04-30 (+41d) | 60d → 80d |  |  |  |  |
| 51 | JIRA CAINT-998 - TRANSCEND Permissions Support | 2011-12-28 → 2012-01-09 (+12d) | 2012-02-21 → 2012-03-05 (+13d) |  |  |  |  | was named Permissions |
| 52 | JIRA CAINT-998 Automatic Refresh | 2011-12-28 → 2012-01-09 (+12d) | 2012-01-24 → 2012-03-05 (+41d) | 20d → 40d |  | 40d → 60d |  | was named Automatic Refresh |
| 53 | JIRA CAINT-998 Single Sign-on | 2012-02-22 → 2012-03-05 (+12d) | 2012-03-20 → 2012-04-30 (+41d) | 20d → 40d |  |  |  | was named Single Sign-on |
| 56 | QA | 2012-03-21 → 2012-05-28 (+68d) | 2012-04-17 → 2012-06-25 (+69d) |  |  |  | 50 → 55 |  |
| 57 | Documentation | 2012-03-21 → 2012-05-28 (+68d) | 2012-04-03 → 2012-06-11 (+69d) |  |  |  | 50 → 55 |  |
| 58 | Appscan/Stage/Prod release | 2012-04-04 → 2012-06-11 (+68d) | 2012-04-17 → 2012-06-25 (+69d) |  |  |  |  |  |

## Version 3 (saved 2011-09-27, file caintegrator_project_plan.mpp)

Note of the change: adding for Shine.

Last finish 2012-06-25 → 2012-07-04 (+9d). Complete tasks 14 → 18.

Added:

| ID | Task | Duration | Start | Finish | Predecessors | Constraint | Resources |
| --- | --- | --- | --- | --- | --- | --- | --- |
| 19 | Bug fix for typo error and new tag (RC2) | 1d? | 2011-09-26 A | 2011-09-26 A |  |  |  |
| 21 | QA on RC2 | 5d | 2011-09-27 | 2011-10-03 | 20 |  | HS |
| 30 | JIRA CAINT-1015 Migration from nexus | 5d | 2011-10-06 | 2011-10-12 | 28 |  | MAX |
| 32 | **JIRA-CAINT-1047 - Resolve Appscan Issues** | 7d | 2011-10-13 | 2011-10-21 |  |  |  |
| 33 | Run Appscan | 2d | 2011-10-13 | 2011-10-14 | 30 |  | MAX |
| 34 | Address all medium issues | 5d | 2011-10-17 | 2011-10-21 | 33 |  | MAX |
| 36 | Refine requirements | 5d | 2011-09-26 | 2011-09-30 |  | start no earlier than 2011-09-26 |  |
| 59 | JIRA CAINT-1045 Performance Requirements | 1d? | 2011-08-01 | 2011-08-01 |  |  |  |

Removed: 28 JBOSS; 38 Gather contacts for TRANSCEND (contract?); 39 Refine Requirements

Changed:

| ID | Task | Start | Finish | Duration | Complete | Total float | Predecessors | Other |
| --- | --- | --- | --- | --- | --- | --- | --- | --- |
| 5 | **CaIntegrator Version 1.3.1** |  | 2011-09-19 → 2011-09-26 A (+7d) | 25d? → 30d? | 96% → 100% | 0d → none |  |  |
| 6 | **JIRA CAINT-1011 508 Compliance** |  |  |  |  |  |  | was named 508 Compliance |
| 15 | **Ongoing maintenance and bug fixes** |  | 2011-09-19 → 2011-09-26 A (+7d) | 13d? → 18d? | 90% → 100% | 0d → none |  |  |
| 16 | ADF platform issues |  |  |  |  |  |  | resources none → JP |
| 17 | ECAT Prep |  |  |  |  |  |  | resources none → SJ; JP |
| 18 | prepare a point release for section 508 compliance. |  | 2011-09-19 → 2011-09-20 A (+1d) | 1d? → 2d | 50% → 100% | 0d → none |  | resources none → JP |
| 20 | QA on RC1 | 2011-09-20 A | 2011-10-03 → 2011-09-26 A (-7d) | 10d → 5d | 0% → 100% | 182.75d → none |  | was named QA; resources none → HS |
| 22 | Release - Stage/QA/Prod/QA |  |  |  |  | 182.75d → 190d | 20 → 21 | was named Stage/Prod Release; resources none → Systems |
| 23 | **CaIntegrator Version 1.4** |  | 2012-01-19 → 2012-02-13 (+25d) | 122.75d? → 140d |  | 112d → 102d |  |  |
| 25 | **JIRA CAINT-1015 Tech Stack Upgrade** |  | 2011-10-10 → 2011-10-19 (+9d) | 47.75d → 55d | 36% → 30% | 0d → 159d |  | was named JIRA CAINT-1011 Tech Stack Upgrade |
| 27 | CI to Jenkins |  |  |  |  |  | 26, 47, 48 → 26, 47 |  |
| 29 | Support for Version 1.3.1 RC1 | 2011-09-20 A | 2011-09-21 A |  | 0% → 100% | 0d → none |  | was named Support for Version 1.3.1 |
| 31 | JIRA CAINT-1015 Upgrade build for Anthill Pro 3, JBOSS upgrade | 2011-09-27 → 2011-09-28 (+1d) | 2011-10-10 → 2011-10-19 (+9d) | 9d → 16d |  |  | JBOSS → 29, 48 | was named Upgrade build for Anthill Pro 3 |
| 35 | **TRANSCEND Support** | 2011-09-19 → 2011-09-26 (+7d) | 2011-10-28 → 2011-11-17 (+20d) | 30d? → 39d |  | 160.75d → 164d |  |  |
| 37 | JIRA CAINT-998 -Version control (create shell study) | 2011-10-04 → 2011-10-24 (+20d) | 2011-10-21 → 2011-11-10 (+20d) |  |  | 160.75d → 164d | Refine Requirements → 32 | resources TBH → MAX |
| 38 | JIRA CAINT-998 Version control (Archive) | 2011-10-24 → 2011-11-11 (+18d) | 2011-10-28 → 2011-11-17 (+20d) |  |  | 160.75d → 164d |  | resources TBH → MAX |
| 39 | **JIRA-CAINT-966 - Generic Platform Support** | 2011-10-10 → 2011-10-20 (+10d) | 2011-12-08 → 2011-12-19 (+11d) |  |  |  |  |  |
| 40 | Create new generic platform model by extending expression platform. | 2011-10-10 → 2011-10-20 (+10d) | 2011-10-20 → 2011-10-31 (+11d) |  |  |  |  |  |
| 41 | Modify the generic platform loader to accept MAGE-TAB. | 2011-10-20 → 2011-11-01 (+12d) | 2011-10-27 → 2011-11-07 (+11d) |  |  |  |  |  |
| 42 | Modify the study deployment process to load the new platform data from caArray. | 2011-10-27 → 2011-11-08 (+12d) | 2011-11-08 → 2011-11-17 (+9d) |  |  |  |  |  |
| 43 | modify front-end analysis tools to show a new title according to platform type. | 2011-11-08 → 2011-11-18 (+10d) | 2011-11-11 → 2011-11-22 (+11d) |  |  |  |  |  |
| 44 | Modify the Query interface to allow selection of a generic expression data type. | 2011-11-11 → 2011-11-23 (+12d) | 2011-12-01 → 2011-12-12 (+11d) |  |  |  |  |  |
| 45 | Modify front-end for IGV and heatmap to display a selector for choosing a generic expression data type. | 2011-12-01 → 2011-12-13 (+12d) | 2011-12-08 → 2011-12-19 (+11d) |  |  |  |  |  |
| 46 | **Ongoing maintenance and bug fixes** |  | 2011-09-06 → 2011-09-27 (+21d) | 4d → 19d |  | 208.75d → 16d |  |  |
| 47 | ADF platform issues |  |  |  |  | 208.75d → 218d |  | resources none → JP |
| 48 | Data issues with training tier | 2011-09-02 → 2011-09-23 (+21d) | 2011-09-06 → 2011-09-27 (+21d) | 2d → 3d |  | 208.75d → 0d | 47 → none | was named ECAT Prep; constraint none → start no earlier than 2011-09-23; resources none → JP |
| 49 | QA | 2011-12-08 → 2011-12-20 (+12d) | 2012-01-05 → 2012-01-16 (+11d) |  |  |  |  | resources none → HS |
| 50 | Documentation | 2011-10-31 → 2012-01-17 (+78d) | 2011-11-11 → 2012-01-30 (+80d) |  |  | 160.75d → 102d | 35 → 49 |  |
| 51 | Appscan/Stage/Prod release | 2012-01-05 → 2012-01-31 (+26d) | 2012-01-19 → 2012-02-13 (+25d) |  |  | 112d → 102d | 49 → 50 |  |
| 52 | **CaIntegrator Version 1.5** | 2012-01-05 → 2011-08-01 (-157d) | 2012-06-25 → 2012-07-04 (+9d) | 122d → 242d? |  |  |  |  |
| 53 | Version 1.5 planning/priortization | 2012-01-05 → 2012-01-17 (+12d) | 2012-01-09 → 2012-01-18 (+9d) |  |  |  |  |  |
| 54 | **TRANSCEND Support** | 2012-01-09 → 2011-08-01 (-161d) | 2012-04-30 → 2012-05-09 (+9d) | 80d → 202d? |  | 0d → 40d |  |  |
| 55 | JIRA CAINT-998 - TRANSCEND Permissions Support | 2012-01-09 → 2012-01-19 (+10d) | 2012-03-05 → 2012-03-14 (+9d) |  |  |  |  |  |
| 56 | JIRA CAINT-998 Automatic Refresh | 2012-01-09 → 2012-01-19 (+10d) | 2012-03-05 → 2012-03-14 (+9d) |  |  |  |  |  |
| 57 | JIRA CAINT-998 Single Sign-on | 2012-03-05 → 2012-03-15 (+10d) | 2012-04-30 → 2012-05-09 (+9d) |  |  |  |  |  |
| 58 | JIRA CAINT-49 Integrate with private studies in NBIA | 2012-03-05 → 2012-03-15 (+10d) | 2012-04-02 → 2012-04-11 (+9d) |  |  |  |  |  |
| 60 | JIRA CAINT-1041 - Support NCI Funded Studies Deployment | 2012-04-30 → 2012-05-10 (+10d) | 2012-05-28 → 2012-06-06 (+9d) |  |  |  |  |  |
| 61 | QA | 2012-05-28 → 2012-06-07 (+10d) | 2012-06-25 → 2012-07-04 (+9d) |  |  |  |  |  |
| 62 | Documentation | 2012-05-28 → 2012-06-07 (+10d) | 2012-06-11 → 2012-06-20 (+9d) |  |  |  |  |  |
| 63 | Appscan/Stage/Prod release | 2012-06-11 → 2012-06-21 (+10d) | 2012-06-25 → 2012-07-04 (+9d) |  |  |  |  |  |

## Version 4 (saved 2011-10-05, file caintegrator_project_plan.mpp)

Last finish 2012-07-04 → 2012-07-18 (+14d). Complete tasks 18 → 17.

Added:

| ID | Task | Duration | Start | Finish | Predecessors | Resources |
| --- | --- | --- | --- | --- | --- | --- |
| 22 | Resolve existing medium issues | 2d | 2011-09-30 | 2011-10-03 | 20 | JP |
| 24 | Address all medium/high issues | 3d | 2011-10-04 | 2011-10-06 | 23 | JP |
| 25 | New Appscan | 3d | 2011-10-07 | 2011-10-11 | 24 | JP |
| 26 | QA RC3 | 5d | 2011-10-12 | 2011-10-18 | 21 | HS |

Removed: 21 QA on RC2; 34 Address all medium issues

Changed:

| ID | Task | Start | Finish | Duration | Complete | Total float | Predecessors | Other |
| --- | --- | --- | --- | --- | --- | --- | --- | --- |
| 20 | QA RC1 | 2011-09-20 A → 2011-09-21 A (+1d) | 2011-09-26 A → 2011-09-29 (+3d) | 5d → 7d | 100% → 71% | none → 183d |  | was named QA on RC1 |
| 21 | **JIRA-CAINT-1047 - Resolve Appscan Issues** | 2011-10-13 → 2011-09-30 (-13d) | 2011-10-21 → 2011-10-11 (-10d) | 7d → 8d |  | 164d → 1d |  | resources none → HS |
| 23 | Run Appscan | 2011-10-13 → 2011-10-03 (-10d) | 2011-10-14 → 2011-10-03 (-11d) | 2d → 1d |  | 164d → 0d | 35 → none | constraint none → start no earlier than 2011-10-03; resources MAX → Secuirity Team |
| 27 | Release - Stage/QA/Prod/QA | 2011-10-04 → 2011-10-19 (+15d) | 2011-10-12 → 2011-10-27 (+15d) |  |  | 190d → 179d | QA on RC2 → 26 |  |
| 28 | **CaIntegrator Version 1.4** |  | 2012-02-13 → 2012-02-27 (+14d) | 140d → 150d | 7% → 8% |  |  |  |
| 30 | **JIRA CAINT-1015 Tech Stack Upgrade** |  | 2011-10-19 → 2011-11-02 (+14d) | 55d → 65d |  | 159d → 185d |  |  |
| 36 | JIRA CAINT-1015 Upgrade build for Anthill Pro 3, JBOSS upgrade | 2011-09-28 → 2011-10-12 (+14d) | 2011-10-19 → 2011-11-02 (+14d) |  |  |  | 34, 50 → 34, 50, 25 |  |
| 37 | **TRANSCEND Support** | 2011-09-26 → 2011-08-01 (-56d) | 2011-11-17 → 2011-09-30 (-48d) | 39d → 44d |  | 164d → 208d |  |  |
| 39 | JIRA CAINT-998 -Version control (create shell study) | 2011-10-24 → 2011-08-01 (-84d) | 2011-11-10 → 2011-08-18 (-84d) |  |  | 164d → 223d | 21 → none |  |
| 40 | JIRA CAINT-998 Version control (Archive) | 2011-11-11 → 2011-08-19 (-84d) | 2011-11-17 → 2011-08-25 (-84d) |  |  | 164d → 223d |  |  |
| 41 | **JIRA-CAINT-966 - Generic Platform Support** | 2011-10-20 → 2011-11-03 (+14d) | 2011-12-19 → 2012-01-02 (+14d) |  |  |  |  |  |
| 42 | Create new generic platform model by extending expression platform. | 2011-10-20 → 2011-11-03 (+14d) | 2011-10-31 → 2011-11-14 (+14d) |  |  |  |  |  |
| 43 | Modify the generic platform loader to accept MAGE-TAB. | 2011-11-01 → 2011-11-15 (+14d) | 2011-11-07 → 2011-11-21 (+14d) |  |  |  |  |  |
| 44 | Modify the study deployment process to load the new platform data from caArray. | 2011-11-08 → 2011-11-22 (+14d) | 2011-11-17 → 2011-12-01 (+14d) |  |  |  |  |  |
| 45 | modify front-end analysis tools to show a new title according to platform type. | 2011-11-18 → 2011-12-02 (+14d) | 2011-11-22 → 2011-12-06 (+14d) |  |  |  |  |  |
| 46 | Modify the Query interface to allow selection of a generic expression data type. | 2011-11-23 → 2011-12-07 (+14d) | 2011-12-12 → 2011-12-26 (+14d) |  |  |  |  |  |
| 47 | Modify front-end for IGV and heatmap to display a selector for choosing a generic expression data type. | 2011-12-13 → 2011-12-27 (+14d) | 2011-12-19 → 2012-01-02 (+14d) |  |  |  |  |  |
| 51 | QA | 2011-12-20 → 2012-01-03 (+14d) | 2012-01-16 → 2012-01-30 (+14d) |  |  |  |  |  |
| 52 | Documentation | 2012-01-17 → 2012-01-31 (+14d) | 2012-01-30 → 2012-02-13 (+14d) |  |  |  |  |  |
| 53 | Appscan/Stage/Prod release | 2012-01-31 → 2012-02-14 (+14d) | 2012-02-13 → 2012-02-27 (+14d) |  |  |  |  |  |
| 54 | **CaIntegrator Version 1.5** |  | 2012-07-04 → 2012-07-18 (+14d) | 242d? → 252d? |  |  |  |  |
| 55 | Version 1.5 planning/priortization | 2012-01-17 → 2012-01-31 (+14d) | 2012-01-18 → 2012-02-01 (+14d) |  |  |  |  |  |
| 56 | **TRANSCEND Support** |  | 2012-05-09 → 2012-05-23 (+14d) | 202d? → 212d? |  |  |  |  |
| 57 | JIRA CAINT-998 - TRANSCEND Permissions Support | 2012-01-19 → 2012-02-02 (+14d) | 2012-03-14 → 2012-03-28 (+14d) |  |  |  |  |  |
| 58 | JIRA CAINT-998 Automatic Refresh | 2012-01-19 → 2012-02-02 (+14d) | 2012-03-14 → 2012-03-28 (+14d) |  |  |  |  |  |
| 59 | JIRA CAINT-998 Single Sign-on | 2012-03-15 → 2012-03-29 (+14d) | 2012-05-09 → 2012-05-23 (+14d) |  |  |  |  |  |
| 60 | JIRA CAINT-49 Integrate with private studies in NBIA | 2012-03-15 → 2012-03-29 (+14d) | 2012-04-11 → 2012-04-25 (+14d) |  |  |  |  |  |
| 62 | JIRA CAINT-1041 - Support NCI Funded Studies Deployment | 2012-05-10 → 2012-05-24 (+14d) | 2012-06-06 → 2012-06-20 (+14d) |  |  |  |  |  |
| 63 | QA | 2012-06-07 → 2012-06-21 (+14d) | 2012-07-04 → 2012-07-18 (+14d) |  |  |  |  |  |
| 64 | Documentation | 2012-06-07 → 2012-06-21 (+14d) | 2012-06-20 → 2012-07-04 (+14d) |  |  |  |  |  |
| 65 | Appscan/Stage/Prod release | 2012-06-21 → 2012-07-05 (+14d) | 2012-07-04 → 2012-07-18 (+14d) |  |  |  |  |  |

## Version 5 (saved 2011-10-11, file caintegrator_project_plan.mpp)

Last finish 2012-07-18 → 2012-07-11 (-7d). Complete tasks 17 → 23.

Added:

| ID | Task | Duration | Start | Finish | Predecessors | Resources |
| --- | --- | --- | --- | --- | --- | --- |
| 26 | Fix any additional issues | 2d | 2011-10-17 | 2011-10-18 | 25 | JP |

Changed:

| ID | Task | Start | Finish | Duration | Complete | Total float | Predecessors | Other |
| --- | --- | --- | --- | --- | --- | --- | --- | --- |
| 1 | **Adhoc Generic Support** | 2011-08-01 A | 2011-08-22 A |  | 0% → 100% | 236d → none |  |  |
| 2 | TCGA Data Support | 2011-08-01 A | 2011-08-02 A |  | 0% → 100% | 239.75d → none |  |  |
| 3 | TCGA Data on caIntegrator | 2011-08-17 A | 2011-08-22 A |  | 0% → 100% | 225.75d → none |  |  |
| 4 | MATKC Support | 2011-08-01 A | 2011-08-01 A |  | 0% → 100% | 241.75d → none |  |  |
| 5 | **CaIntegrator Version 1.3.1** |  | 2011-09-26 A → 2011-11-08 (+43d) | 30d? → 61d? | 100% → 56% | none → 176d |  |  |
| 20 | QA RC1 |  | 2011-09-29 A |  | 71% → 100% | 183d → none |  |  |
| 21 | **JIRA-CAINT-1047 - Resolve Appscan Issues** | 2011-09-30 A | 2011-10-11 → 2011-10-18 (+7d) | 8d → 13d | 0% → 51% | 1d → 0d |  |  |
| 22 | Resolve existing medium issues | 2011-09-30 A | 2011-10-03 A |  | 0% → 100% | 185d → none |  |  |
| 23 | Run Appscan | 2011-10-03 A | 2011-10-03 A |  | 0% → 100% | 0d → none |  |  |
| 24 | Fix all medium issues | 2011-10-04 A | 2011-10-06 → 2011-10-12 (+6d) | 3d → 7d | 0% → 60% |  |  | was named Address all medium/high issues |
| 25 | Run new Appscan to verify | 2011-10-07 → 2011-10-13 (+6d) | 2011-10-11 → 2011-10-14 (+3d) | 3d → 2d |  |  |  | was named New Appscan |
| 27 | QA RC3 | 2011-10-12 → 2011-10-19 (+7d) | 2011-10-18 → 2011-10-28 (+10d) | 5d → 8d |  | 179d → 176d |  |  |
| 28 | Release - Stage/QA/Prod/QA | 2011-10-19 → 2011-10-31 (+12d) | 2011-10-27 → 2011-11-08 (+12d) |  |  | 179d → 176d |  |  |
| 29 | **CaIntegrator Version 1.4** |  | 2012-02-27 → 2012-02-06 (-21d) | 150d → 135d | 8% → 10% | 102d → 112d |  |  |
| 31 | **JIRA CAINT-1015 Tech Stack Upgrade** |  | 2011-11-02 → 2011-11-09 (+7d) | 65d → 70d | 30% → 37% | 185d → 175d |  |  |
| 36 | JIRA CAINT-1055 Migration from nexus | 2011-10-06 A | 2011-10-12 → 2011-10-13 (+1d) | 5d → 6d | 0% → 40% | 190d → 194d |  | was named JIRA CAINT-1015 Migration from nexus |
| 37 | JIRA CAINT-1015 Upgrade build for Anthill Pro 3, JBOSS upgrade | 2011-10-12 → 2011-10-19 (+7d) | 2011-11-02 → 2011-11-09 (+7d) |  |  |  | 35, 51, 25 → 35, 51, 21 |  |
| 42 | **JIRA-CAINT-966 - Generic Platform Support** | 2011-11-03 → 2011-11-10 (+7d) | 2012-01-02 → 2012-01-09 (+7d) |  |  |  |  |  |
| 43 | Create new generic platform model by extending expression platform. | 2011-11-03 → 2011-11-10 (+7d) | 2011-11-14 → 2011-11-21 (+7d) |  |  |  |  |  |
| 44 | Modify the generic platform loader to accept MAGE-TAB. | 2011-11-15 → 2011-11-22 (+7d) | 2011-11-21 → 2011-11-28 (+7d) |  |  |  |  |  |
| 45 | Modify the study deployment process to load the new platform data from caArray. | 2011-11-22 → 2011-11-29 (+7d) | 2011-12-01 → 2011-12-08 (+7d) |  |  |  |  |  |
| 46 | modify front-end analysis tools to show a new title according to platform type. | 2011-12-02 → 2011-12-09 (+7d) | 2011-12-06 → 2011-12-13 (+7d) |  |  |  |  |  |
| 47 | Modify the Query interface to allow selection of a generic expression data type. | 2011-12-07 → 2011-12-14 (+7d) | 2011-12-26 → 2012-01-02 (+7d) |  |  |  |  |  |
| 48 | Modify front-end for IGV and heatmap to display a selector for choosing a generic expression data type. | 2011-12-27 → 2012-01-03 (+7d) | 2012-01-02 → 2012-01-09 (+7d) |  |  |  |  |  |
| 52 | QA | 2012-01-03 → 2012-01-10 (+7d) | 2012-01-30 → 2012-01-23 (-7d) | 20d → 10d |  |  |  |  |
| 53 | Documentation | 2012-01-31 → 2012-01-10 (-21d) | 2012-02-13 → 2012-01-23 (-21d) |  |  | 102d → 122d | 52 → 42 |  |
| 54 | Appscan/Stage/Prod release | 2012-02-14 → 2012-01-24 (-21d) | 2012-02-27 → 2012-02-06 (-21d) |  |  | 102d → 112d | 53 → 52 |  |
| 55 | **CaIntegrator Version 1.5** |  | 2012-07-18 → 2012-07-11 (-7d) | 252d? → 247d? |  |  |  |  |
| 56 | Version 1.5 planning/priortization | 2012-01-31 → 2012-01-24 (-7d) | 2012-02-01 → 2012-01-25 (-7d) |  |  |  |  |  |
| 57 | **TRANSCEND Support** |  | 2012-05-23 → 2012-05-16 (-7d) | 212d? → 207d? |  |  |  |  |
| 58 | JIRA CAINT-998 - TRANSCEND Permissions Support | 2012-02-02 → 2012-01-26 (-7d) | 2012-03-28 → 2012-03-21 (-7d) |  |  |  |  |  |
| 59 | JIRA CAINT-998 Automatic Refresh | 2012-02-02 → 2012-01-26 (-7d) | 2012-03-28 → 2012-03-21 (-7d) |  |  |  |  |  |
| 60 | JIRA CAINT-998 Single Sign-on | 2012-03-29 → 2012-03-22 (-7d) | 2012-05-23 → 2012-05-16 (-7d) |  |  |  |  |  |
| 61 | JIRA CAINT-49 Integrate with private studies in NBIA | 2012-03-29 → 2012-03-22 (-7d) | 2012-04-25 → 2012-04-18 (-7d) |  |  |  |  |  |
| 63 | JIRA CAINT-1041 - Support NCI Funded Studies Deployment | 2012-05-24 → 2012-05-17 (-7d) | 2012-06-20 → 2012-06-13 (-7d) |  |  |  |  |  |
| 64 | QA | 2012-06-21 → 2012-06-14 (-7d) | 2012-07-18 → 2012-07-11 (-7d) |  |  |  |  |  |
| 65 | Documentation | 2012-06-21 → 2012-06-14 (-7d) | 2012-07-04 → 2012-06-27 (-7d) |  |  |  |  |  |
| 66 | Appscan/Stage/Prod release | 2012-07-05 → 2012-06-28 (-7d) | 2012-07-18 → 2012-07-11 (-7d) |  |  |  |  |  |

## Version 6 (saved 2011-10-18, file caintegrator_project_plan.mpp)

Note of the change: updated Oct 18

Last finish 2012-07-11 → 2012-07-17 (+6d). Complete tasks 23 → 25.

Added:

| ID | Task | Duration | Start | Finish | Predecessors | Resources |
| --- | --- | --- | --- | --- | --- | --- |
| 27 | Run new Appscan to verify | 1d? | 2011-10-21 | 2011-10-21 | 26 | Systems |
| 28 | New tag (RC3) for 1.3.1 | 1d? | 2011-10-24 | 2011-10-24 | 27 | JP |

Changed:

| ID | Task | Start | Finish | Duration | Complete | Total float | Other |
| --- | --- | --- | --- | --- | --- | --- | --- |
| 5 | **CaIntegrator Version 1.3.1** |  | 2011-11-08 → 2011-11-14 (+6d) | 61d? → 65d? | 56% → 64% |  |  |
| 21 | **JIRA-CAINT-1047 - Resolve Appscan Issues** |  | 2011-10-18 → 2011-10-24 (+6d) | 13d → 17d? | 51% → 75% |  |  |
| 24 | Fix medium issues |  | 2011-10-12 A |  | 60% → 100% | 0d → none | was named Fix all medium issues |
| 25 | Run new Appscan to verify | 2011-10-13 A | 2011-10-14 → 2011-10-13 A (-1d) | 2d → 1d | 0% → 100% | 0d → none |  |
| 26 | Fix all additional medium issues | 2011-10-17 → 2011-10-14 A (-3d) | 2011-10-18 → 2011-10-20 (+2d) | 2d → 5d | 0% → 50% |  | was named Fix any additional issues |
| 29 | QA RC3 | 2011-10-19 → 2011-10-25 (+6d) | 2011-10-28 → 2011-11-03 (+6d) |  |  |  |  |
| 30 | Release - Stage/QA/Prod/QA | 2011-10-31 → 2011-11-04 (+4d) | 2011-11-08 → 2011-11-14 (+6d) |  |  |  |  |
| 31 | **CaIntegrator Version 1.4** |  | 2012-02-06 → 2012-02-10 (+4d) | 135d → 139d | 10% → 14% |  |  |
| 33 | **JIRA CAINT-1015 Tech Stack Upgrade** |  | 2011-11-09 → 2011-11-15 (+6d) | 70d → 74d | 37% → 50% |  |  |
| 38 | JIRA CAINT-1055 Migration from nexus |  | 2011-10-13 → 2011-10-18 (+5d) | 6d → 9d | 40% → 90% | 194d → 195d |  |
| 39 | JIRA CAINT-1015 Upgrade build for Anthill Pro 3, JBOSS upgrade | 2011-10-19 → 2011-10-25 (+6d) | 2011-11-09 → 2011-11-15 (+6d) |  |  |  |  |
| 44 | **JIRA-CAINT-966 - Generic Platform Support** | 2011-11-10 → 2011-11-16 (+6d) | 2012-01-09 → 2012-01-13 (+4d) |  |  |  |  |
| 45 | Create new generic platform model by extending expression platform. | 2011-11-10 → 2011-11-16 (+6d) | 2011-11-21 → 2011-11-25 (+4d) |  |  |  |  |
| 46 | Modify the generic platform loader to accept MAGE-TAB. | 2011-11-22 → 2011-11-28 (+6d) | 2011-11-28 → 2011-12-02 (+4d) |  |  |  |  |
| 47 | Modify the study deployment process to load the new platform data from caArray. | 2011-11-29 → 2011-12-05 (+6d) | 2011-12-08 → 2011-12-14 (+6d) |  |  |  |  |
| 48 | modify front-end analysis tools to show a new title according to platform type. | 2011-12-09 → 2011-12-15 (+6d) | 2011-12-13 → 2011-12-19 (+6d) |  |  |  |  |
| 49 | Modify the Query interface to allow selection of a generic expression data type. | 2011-12-14 → 2011-12-20 (+6d) | 2012-01-02 → 2012-01-06 (+4d) |  |  |  |  |
| 50 | Modify front-end for IGV and heatmap to display a selector for choosing a generic expression data type. | 2012-01-03 → 2012-01-09 (+6d) | 2012-01-09 → 2012-01-13 (+4d) |  |  |  |  |
| 54 | QA | 2012-01-10 → 2012-01-16 (+6d) | 2012-01-23 → 2012-01-27 (+4d) |  |  |  |  |
| 55 | Documentation | 2012-01-10 → 2012-01-16 (+6d) | 2012-01-23 → 2012-01-27 (+4d) |  |  |  |  |
| 56 | Appscan/Stage/Prod release | 2012-01-24 → 2012-01-30 (+6d) | 2012-02-06 → 2012-02-10 (+4d) |  |  |  |  |
| 57 | **CaIntegrator Version 1.5** |  | 2012-07-11 → 2012-07-17 (+6d) | 247d? → 251d? |  |  |  |
| 58 | Version 1.5 planning/priortization | 2012-01-24 → 2012-01-30 (+6d) | 2012-01-25 → 2012-01-31 (+6d) |  |  |  |  |
| 59 | **TRANSCEND Support** |  | 2012-05-16 → 2012-05-22 (+6d) | 207d? → 211d? |  |  |  |
| 60 | JIRA CAINT-998 - TRANSCEND Permissions Support | 2012-01-26 → 2012-02-01 (+6d) | 2012-03-21 → 2012-03-27 (+6d) |  |  |  |  |
| 61 | JIRA CAINT-998 Automatic Refresh | 2012-01-26 → 2012-02-01 (+6d) | 2012-03-21 → 2012-03-27 (+6d) |  |  |  |  |
| 62 | JIRA CAINT-998 Single Sign-on | 2012-03-22 → 2012-03-28 (+6d) | 2012-05-16 → 2012-05-22 (+6d) |  |  |  |  |
| 63 | JIRA CAINT-49 Integrate with private studies in NBIA | 2012-03-22 → 2012-03-28 (+6d) | 2012-04-18 → 2012-04-24 (+6d) |  |  |  |  |
| 65 | JIRA CAINT-1041 - Support NCI Funded Studies Deployment | 2012-05-17 → 2012-05-23 (+6d) | 2012-06-13 → 2012-06-19 (+6d) |  |  |  |  |
| 66 | QA | 2012-06-14 → 2012-06-20 (+6d) | 2012-07-11 → 2012-07-17 (+6d) |  |  |  |  |
| 67 | Documentation | 2012-06-14 → 2012-06-20 (+6d) | 2012-06-27 → 2012-07-03 (+6d) |  |  |  |  |
| 68 | Appscan/Stage/Prod release | 2012-06-28 → 2012-07-04 (+6d) | 2012-07-11 → 2012-07-17 (+6d) |  |  |  |  |

## Version 7 (saved 2011-10-27, file caintegrator_project_plan.mpp)

Last finish 2012-07-17 → 2012-07-24 (+7d). Complete tasks 25 → 27.

Added:

| ID | Task | Duration | Start | Finish | Predecessors | Resources |
| --- | --- | --- | --- | --- | --- | --- |
| 28 | Full Appscan to verify | 2d | 2011-10-26 | 2011-10-27 | 27 | Systems |
| 40 | JIRA CAINT-1058 Implement Artifact Configuration | 5d | 2011-10-26 A | 2011-11-01 |  | MAX |

Changed:

| ID | Task | Start | Finish | Duration | Complete | Total float | Predecessors |
| --- | --- | --- | --- | --- | --- | --- | --- |
| 5 | **CaIntegrator Version 1.3.1** |  | 2011-11-14 → 2011-11-21 (+7d) | 65d? → 70d? | 64% → 70% |  |  |
| 21 | **JIRA-CAINT-1047 - Resolve Appscan Issues** |  | 2011-10-24 → 2011-10-31 (+7d) | 17d? → 22d | 75% → 85% |  |  |
| 26 | Fix all additional medium issues |  | 2011-10-20 → 2011-10-27 A (+7d) | 5d → 10d | 50% → 100% | 0d → none |  |
| 27 | Run new Appscan to verify | 2011-10-21 → 2011-10-24 A (+3d) | 2011-10-21 → 2011-10-25 A (+4d) | 1d? → 2d | 0% → 100% | 0d → none |  |
| 29 | New tag (RC3) for 1.3.1 | 2011-10-24 → 2011-10-28 (+4d) | 2011-10-24 → 2011-10-31 (+7d) | 1d? → 2d |  |  | 27 → 28 |
| 30 | QA RC3 | 2011-10-25 → 2011-11-01 (+7d) | 2011-11-03 → 2011-11-10 (+7d) |  |  |  |  |
| 31 | Release - Stage/QA/Prod/QA | 2011-11-04 → 2011-11-11 (+7d) | 2011-11-14 → 2011-11-21 (+7d) |  |  |  |  |
| 32 | **CaIntegrator Version 1.4** |  | 2012-02-10 → 2012-02-17 (+7d) | 139d → 144d |  |  |  |
| 34 | **JIRA CAINT-1015 Tech Stack Upgrade** |  | 2011-11-15 → 2011-11-22 (+7d) | 74d → 79d | 50% → 48% |  |  |
| 39 | JIRA CAINT-1055 Migration from nexus |  |  |  | 90% → 95% | 195d → 199d |  |
| 41 | JIRA CAINT-1015 Upgrade build for Anthill Pro 3, JBOSS upgrade | 2011-10-25 → 2011-11-01 (+7d) | 2011-11-15 → 2011-11-22 (+7d) |  |  |  |  |
| 46 | **JIRA-CAINT-966 - Generic Platform Support** | 2011-11-16 → 2011-11-23 (+7d) | 2012-01-13 → 2012-01-20 (+7d) |  |  |  |  |
| 47 | Create new generic platform model by extending expression platform. | 2011-11-16 → 2011-11-23 (+7d) | 2011-11-25 → 2011-12-02 (+7d) |  |  |  |  |
| 48 | Modify the generic platform loader to accept MAGE-TAB. | 2011-11-28 → 2011-12-05 (+7d) | 2011-12-02 → 2011-12-09 (+7d) |  |  |  |  |
| 49 | Modify the study deployment process to load the new platform data from caArray. | 2011-12-05 → 2011-12-12 (+7d) | 2011-12-14 → 2011-12-21 (+7d) |  |  |  |  |
| 50 | modify front-end analysis tools to show a new title according to platform type. | 2011-12-15 → 2011-12-22 (+7d) | 2011-12-19 → 2011-12-26 (+7d) |  |  |  |  |
| 51 | Modify the Query interface to allow selection of a generic expression data type. | 2011-12-20 → 2011-12-27 (+7d) | 2012-01-06 → 2012-01-13 (+7d) |  |  |  |  |
| 52 | Modify front-end for IGV and heatmap to display a selector for choosing a generic expression data type. | 2012-01-09 → 2012-01-16 (+7d) | 2012-01-13 → 2012-01-20 (+7d) |  |  |  |  |
| 56 | QA | 2012-01-16 → 2012-01-23 (+7d) | 2012-01-27 → 2012-02-03 (+7d) |  |  |  |  |
| 57 | Documentation | 2012-01-16 → 2012-01-23 (+7d) | 2012-01-27 → 2012-02-03 (+7d) |  |  |  |  |
| 58 | Appscan/Stage/Prod release | 2012-01-30 → 2012-02-06 (+7d) | 2012-02-10 → 2012-02-17 (+7d) |  |  |  |  |
| 59 | **CaIntegrator Version 1.5** |  | 2012-07-17 → 2012-07-24 (+7d) | 251d? → 256d? |  |  |  |
| 60 | Version 1.5 planning/priortization | 2012-01-30 → 2012-02-06 (+7d) | 2012-01-31 → 2012-02-07 (+7d) |  |  |  |  |
| 61 | **TRANSCEND Support** |  | 2012-05-22 → 2012-05-29 (+7d) | 211d? → 216d? |  |  |  |
| 62 | JIRA CAINT-998 - TRANSCEND Permissions Support | 2012-02-01 → 2012-02-08 (+7d) | 2012-03-27 → 2012-04-03 (+7d) |  |  |  |  |
| 63 | JIRA CAINT-998 Automatic Refresh | 2012-02-01 → 2012-02-08 (+7d) | 2012-03-27 → 2012-04-03 (+7d) |  |  |  |  |
| 64 | JIRA CAINT-998 Single Sign-on | 2012-03-28 → 2012-04-04 (+7d) | 2012-05-22 → 2012-05-29 (+7d) |  |  |  |  |
| 65 | JIRA CAINT-49 Integrate with private studies in NBIA | 2012-03-28 → 2012-04-04 (+7d) | 2012-04-24 → 2012-05-01 (+7d) |  |  |  |  |
| 67 | JIRA CAINT-1041 - Support NCI Funded Studies Deployment | 2012-05-23 → 2012-05-30 (+7d) | 2012-06-19 → 2012-06-26 (+7d) |  |  |  |  |
| 68 | QA | 2012-06-20 → 2012-06-27 (+7d) | 2012-07-17 → 2012-07-24 (+7d) |  |  |  |  |
| 69 | Documentation | 2012-06-20 → 2012-06-27 (+7d) | 2012-07-03 → 2012-07-10 (+7d) |  |  |  |  |
| 70 | Appscan/Stage/Prod release | 2012-07-04 → 2012-07-11 (+7d) | 2012-07-17 → 2012-07-24 (+7d) |  |  |  |  |

## Version 8 (saved 2011-10-31, file caintegrator_project_plan.mpp)

Last finish stays 2012-07-24.

Added:

| ID | Task | Duration | Start | Finish | Predecessors | Resources |
| --- | --- | --- | --- | --- | --- | --- |
| 44 | Demo wireframe for permission model | 1d? | 2011-11-01 | 2011-11-01 | 43 | will |
| 45 | Finalize the requirements with TRANSCEND (for permissions) | 5d | 2011-11-02 | 2011-11-08 | 44 | SJ |

Changed:

| ID | Task | Start | Finish | Duration | Total float | Predecessors | Other |
| --- | --- | --- | --- | --- | --- | --- | --- |
| 32 | **CaIntegrator Version 1.4** |  |  | 144d → 144d? |  |  |  |
| 42 | **TRANSCEND Support** | 2011-08-01 → 2011-10-25 (+85d) | 2011-09-30 → 2011-12-19 (+80d) | 44d → 40d? | 211d → 156d |  |  |
| 43 | Refine requirements for permission model | 2011-09-26 → 2011-10-25 (+29d) | 2011-09-30 → 2011-10-31 (+31d) |  | 211d → 185d |  | was named Refine requirements; constraint start no earlier than 2011-09-26 → start no earlier than 2011-10-25; resources none → SJ |
| 46 | JIRA CAINT-998 -Version control (create shell study) | 2011-08-01 → 2011-11-23 (+114d) | 2011-08-18 → 2011-12-12 (+116d) |  | 236d → 155d | none → 41 |  |
| 47 | JIRA CAINT-998 Version control (Archive) | 2011-08-19 → 2011-12-13 (+116d) | 2011-08-25 → 2011-12-19 (+116d) |  | 236d → 155d |  |  |

## Version 9 (saved 2011-11-01, file caintegrator_project_plan.mpp)

Last finish 2012-07-24 → 2012-07-31 (+7d). Complete tasks 27 → 30.

Added:

| ID | Task | Duration | Start | Finish | Predecessors | Resources |
| --- | --- | --- | --- | --- | --- | --- |
| 28 | Fix issues from Appscan | 2d | 2011-10-28 A | 2011-10-31 A | 27 | JP |
| 30 | JIRA-CAINT-1066 - Bug fix (Ajax token missing) | 2d | 2011-11-02 A | 2011-11-03 | 29 | JP |
| 46 | Create wireframe for permission model | 2d | 2011-10-28 A | 2011-10-31 | 45 | Andy |

Changed:

| ID | Task | Start | Finish | Duration | Complete | Total float | Predecessors | Other |
| --- | --- | --- | --- | --- | --- | --- | --- | --- |
| 5 | **CaIntegrator Version 1.3.1** |  | 2011-11-21 → 2011-11-28 (+7d) | 70d? → 75d? | 70% → 72% |  |  |  |
| 21 | **JIRA-CAINT-1047 - Resolve Appscan Issues** |  | 2011-10-31 → 2011-11-07 (+7d) | 22d → 27d | 85% → 90% |  |  |  |
| 26 | Fix all additional medium issues |  | 2011-10-27 A → 2011-10-26 A (-1d) | 10d → 9d |  |  |  |  |
| 27 | Run new Appscan to verify | 2011-10-24 A → 2011-10-27 A (+3d) | 2011-10-25 A → 2011-10-27 A (+2d) | 2d → 1d |  |  |  |  |
| 29 | Full Appscan to verify | 2011-10-26 → 2011-11-01 A (+6d) | 2011-10-27 → 2011-11-01 A (+5d) | 2d → 1d | 0% → 100% | 0d → none | 27 → 28 |  |
| 31 | New tag (RC3) for 1.3.1 | 2011-10-28 → 2011-11-04 (+7d) | 2011-10-31 → 2011-11-07 (+7d) |  |  |  | 29 → 30 |  |
| 32 | QA RC3 | 2011-11-01 → 2011-11-08 (+7d) | 2011-11-10 → 2011-11-17 (+7d) |  |  |  |  |  |
| 33 | Release - Stage/QA/Prod/QA | 2011-11-11 → 2011-11-18 (+7d) | 2011-11-21 → 2011-11-28 (+7d) |  |  |  |  |  |
| 34 | **CaIntegrator Version 1.4** |  | 2012-02-17 → 2012-02-24 (+7d) | 144d? → 149d? | 14% → 18% |  |  |  |
| 36 | **JIRA CAINT-1015 Tech Stack Upgrade** |  | 2011-11-22 → 2011-11-29 (+7d) | 79d → 84d | 48% → 50% | 174d → 175d |  |  |
| 42 | JIRA CAINT-1058 Implement Artifact Configuration |  | 2011-11-01 → 2011-11-02 (+1d) | 5d → 6d | 20% → 40% | 189d → 194d |  |  |
| 43 | JIRA CAINT-1015 Upgrade build for Anthill Pro 3, JBOSS upgrade | 2011-11-01 → 2011-11-08 (+7d) | 2011-11-22 → 2011-11-29 (+7d) |  |  |  |  |  |
| 44 | **TRANSCEND Support** | 2011-10-25 A | 2011-12-19 → 2011-12-26 (+7d) | 40d? → 45d? | 0% → 16% |  |  |  |
| 45 | Refine requirements for permission model | 2011-10-25 A | 2011-10-31 → 2011-10-27 A (-4d) | 5d → 3d | 0% → 100% | 185d → none |  |  |
| 47 | Demo (internal) wireframe for permission model |  |  |  |  | 185d → 190d | 45 → 46 | was named Demo wireframe for permission model; resources will → WF |
| 49 | JIRA CAINT-998 -Version control (create shell study) | 2011-11-23 → 2011-11-30 (+7d) | 2011-12-12 → 2011-12-19 (+7d) |  |  | 155d → 156d |  |  |
| 50 | JIRA CAINT-998 Version control (Archive) | 2011-12-13 → 2011-12-20 (+7d) | 2011-12-19 → 2011-12-26 (+7d) |  |  | 155d → 156d |  |  |
| 51 | **JIRA-CAINT-966 - Generic Platform Support** | 2011-11-23 → 2011-11-30 (+7d) | 2012-01-20 → 2012-01-27 (+7d) |  |  |  |  |  |
| 52 | Create new generic platform model by extending expression platform. | 2011-11-23 → 2011-11-30 (+7d) | 2011-12-02 → 2011-12-09 (+7d) |  |  |  |  |  |
| 53 | Modify the generic platform loader to accept MAGE-TAB. | 2011-12-05 → 2011-12-12 (+7d) | 2011-12-09 → 2011-12-16 (+7d) |  |  |  |  |  |
| 54 | Modify the study deployment process to load the new platform data from caArray. | 2011-12-12 → 2011-12-19 (+7d) | 2011-12-21 → 2011-12-28 (+7d) |  |  |  |  |  |
| 55 | modify front-end analysis tools to show a new title according to platform type. | 2011-12-22 → 2011-12-29 (+7d) | 2011-12-26 → 2012-01-02 (+7d) |  |  |  |  |  |
| 56 | Modify the Query interface to allow selection of a generic expression data type. | 2011-12-27 → 2012-01-03 (+7d) | 2012-01-13 → 2012-01-20 (+7d) |  |  |  |  |  |
| 57 | Modify front-end for IGV and heatmap to display a selector for choosing a generic expression data type. | 2012-01-16 → 2012-01-23 (+7d) | 2012-01-20 → 2012-01-27 (+7d) |  |  |  |  |  |
| 61 | QA | 2012-01-23 → 2012-01-30 (+7d) | 2012-02-03 → 2012-02-10 (+7d) |  |  |  |  |  |
| 62 | Documentation | 2012-01-23 → 2012-01-30 (+7d) | 2012-02-03 → 2012-02-10 (+7d) |  |  |  |  |  |
| 63 | Appscan/Stage/Prod release | 2012-02-06 → 2012-02-13 (+7d) | 2012-02-17 → 2012-02-24 (+7d) |  |  |  |  |  |
| 64 | **CaIntegrator Version 1.5** |  | 2012-07-24 → 2012-07-31 (+7d) | 256d? → 261d? |  |  |  |  |
| 65 | Version 1.5 planning/priortization | 2012-02-06 → 2012-02-13 (+7d) | 2012-02-07 → 2012-02-14 (+7d) |  |  |  |  |  |
| 66 | **TRANSCEND Support** |  | 2012-05-29 → 2012-06-05 (+7d) | 216d? → 221d? |  |  |  |  |
| 67 | JIRA CAINT-998 - TRANSCEND Permissions Support | 2012-02-08 → 2012-02-15 (+7d) | 2012-04-03 → 2012-04-10 (+7d) |  |  |  |  |  |
| 68 | JIRA CAINT-998 Automatic Refresh | 2012-02-08 → 2012-02-15 (+7d) | 2012-04-03 → 2012-04-10 (+7d) |  |  |  |  |  |
| 69 | JIRA CAINT-998 Single Sign-on | 2012-04-04 → 2012-04-11 (+7d) | 2012-05-29 → 2012-06-05 (+7d) |  |  |  |  |  |
| 70 | JIRA CAINT-49 Integrate with private studies in NBIA | 2012-04-04 → 2012-04-11 (+7d) | 2012-05-01 → 2012-05-08 (+7d) |  |  |  |  |  |
| 72 | JIRA CAINT-1041 - Support NCI Funded Studies Deployment | 2012-05-30 → 2012-06-06 (+7d) | 2012-06-26 → 2012-07-03 (+7d) |  |  |  |  |  |
| 73 | QA | 2012-06-27 → 2012-07-04 (+7d) | 2012-07-24 → 2012-07-31 (+7d) |  |  |  |  |  |
| 74 | Documentation | 2012-06-27 → 2012-07-04 (+7d) | 2012-07-10 → 2012-07-17 (+7d) |  |  |  |  |  |
| 75 | Appscan/Stage/Prod release | 2012-07-11 → 2012-07-18 (+7d) | 2012-07-24 → 2012-07-31 (+7d) |  |  |  |  |  |

## Version 10 (saved 2011-11-08, file caintegrator_project_plan.mpp)

Last finish 2012-07-31 → 2012-07-12 (-19d). Complete tasks 30 → 36.

Added:

| ID | Task | Duration | Start | Finish | Predecessors | Resources |
| --- | --- | --- | --- | --- | --- | --- |
| 43 | JIRA CAINT-1065 JBOSS vulnerability and resolve. | 4d | 2011-11-07 | 2011-11-10 | 31 | JP |
| 44 | JIRA CAINT-(1059,1012) PTE form, JBOSS upgrade | 6d | 2011-11-08 | 2011-11-15 | 42 | MAX |

Changed:

| ID | Task | Start | Finish | Duration | Complete | Total float | Predecessors | Other |
| --- | --- | --- | --- | --- | --- | --- | --- | --- |
| 5 | **CaIntegrator Version 1.3.1** |  | 2011-11-28 → 2011-11-25 (-3d) | 75d? → 74d? | 72% → 76% | 176d → 173d |  |  |
| 21 | **JIRA-CAINT-1047 - Resolve Appscan Issues** |  | 2011-11-07 → 2011-11-04 A (-3d) | 27d → 26d | 90% → 100% | 0d → none |  |  |
| 30 | JIRA-CAINT-1066 - Bug fix (Ajax token missing) |  | 2011-11-03 A |  | 55% → 100% | 0d → none |  |  |
| 31 | New tag (RC4) for 1.3.1 | 2011-11-04 A | 2011-11-07 → 2011-11-04 A (-3d) | 2d → 1d | 0% → 100% | 0d → none |  | was named New tag (RC3) for 1.3.1 |
| 32 | QA RC4 | 2011-11-08 → 2011-11-07 (-1d) | 2011-11-17 → 2011-11-16 (-1d) |  |  | 176d → 170d |  | was named QA RC3 |
| 33 | Release - Stage/QA/Prod/QA | 2011-11-18 → 2011-11-17 (-1d) | 2011-11-28 → 2011-11-25 (-3d) |  |  | 176d → 170d |  |  |
| 34 | **CaIntegrator Version 1.4** |  | 2012-02-24 → 2012-02-07 (-17d) | 149d? → 136d? | 18% → 22% |  |  |  |
| 36 | **JIRA CAINT-1015 Tech Stack Upgrade** |  | 2011-11-29 → 2011-11-24 (-5d) | 84d → 81d | 50% → 57% | 175d → 165d |  |  |
| 41 | JIRA CAINT-1055 Migration from nexus |  | 2011-10-18 A |  | 95% → 100% | 205d → none |  |  |
| 42 | JIRA CAINT-1058 Implement Artifact Configuration |  | 2011-11-02 → 2011-11-07 A (+5d) | 6d → 9d | 40% → 100% | 194d → none |  |  |
| 45 | JIRA CAINT(1060,1061, 1010) build track setup Anthill Pro 3, Jenkins CI, Test | 2011-11-08 → 2011-11-11 (+3d) | 2011-11-29 → 2011-11-24 (-5d) | 16d → 10d |  | 0d → 146d | 40, 62, 21 → 62, 21, 43 | was named JIRA CAINT-1015 Upgrade build for Anthill Pro 3, JBOSS upgrade; resources JP → MAX |
| 46 | **TRANSCEND Support** |  | 2011-12-26 → 2011-12-21 (-5d) | 45d? → 42d? | 16% → 20% | 156d → 146d |  |  |
| 48 | Create wireframe for permission model |  | 2011-10-31 A |  | 90% → 100% | 190d → none |  |  |
| 49 | Demo (internal team) wireframe for permission model | 2011-11-01 A | 2011-11-01 A |  | 0% → 100% | 190d → none |  | was named Demo (internal) wireframe for permission model |
| 51 | JIRA CAINT-998 -Version control (create shell study) | 2011-11-30 → 2011-11-25 (-5d) | 2011-12-19 → 2011-12-14 (-5d) |  |  | 156d → 146d |  |  |
| 52 | JIRA CAINT-998 Version control (Archive) | 2011-12-20 → 2011-12-15 (-5d) | 2011-12-26 → 2011-12-21 (-5d) |  |  | 156d → 146d |  |  |
| 53 | **JIRA-CAINT-966 - Generic Platform Support** | 2011-11-30 → 2011-11-11 (-19d) | 2012-01-27 → 2012-01-10 (-17d) |  |  |  |  |  |
| 54 | Create new generic platform model by extending expression platform. | 2011-11-30 → 2011-11-11 (-19d) | 2011-12-09 → 2011-11-22 (-17d) |  |  |  | 45 → 43 |  |
| 55 | Modify the generic platform loader to accept MAGE-TAB. | 2011-12-12 → 2011-11-23 (-19d) | 2011-12-16 → 2011-11-29 (-17d) |  |  |  |  |  |
| 56 | Modify the study deployment process to load the new platform data from caArray. | 2011-12-19 → 2011-11-30 (-19d) | 2011-12-28 → 2011-12-09 (-19d) |  |  |  |  |  |
| 57 | modify front-end analysis tools to show a new title according to platform type. | 2011-12-29 → 2011-12-12 (-17d) | 2012-01-02 → 2011-12-14 (-19d) |  |  |  |  |  |
| 58 | Modify the Query interface to allow selection of a generic expression data type. | 2012-01-03 → 2011-12-15 (-19d) | 2012-01-20 → 2012-01-03 (-17d) |  |  |  |  |  |
| 59 | Modify front-end for IGV and heatmap to display a selector for choosing a generic expression data type. | 2012-01-23 → 2012-01-04 (-19d) | 2012-01-27 → 2012-01-10 (-17d) |  |  |  |  |  |
| 63 | QA | 2012-01-30 → 2012-01-11 (-19d) | 2012-02-10 → 2012-01-24 (-17d) |  |  |  |  |  |
| 64 | Documentation | 2012-01-30 → 2012-01-11 (-19d) | 2012-02-10 → 2012-01-24 (-17d) |  |  |  |  |  |
| 65 | Appscan/Stage/Prod release | 2012-02-13 → 2012-01-25 (-19d) | 2012-02-24 → 2012-02-07 (-17d) |  |  |  |  |  |
| 66 | **CaIntegrator Version 1.5** |  | 2012-07-31 → 2012-07-12 (-19d) | 261d? → 248d? |  |  |  |  |
| 67 | Version 1.5 planning/priortization | 2012-02-13 → 2012-01-25 (-19d) | 2012-02-14 → 2012-01-26 (-19d) |  |  |  |  |  |
| 68 | **TRANSCEND Support** |  | 2012-06-05 → 2012-05-17 (-19d) | 221d? → 208d? |  |  |  |  |
| 69 | JIRA CAINT-998 - TRANSCEND Permissions Support | 2012-02-15 → 2012-01-27 (-19d) | 2012-04-10 → 2012-03-22 (-19d) |  |  |  |  |  |
| 70 | JIRA CAINT-998 Automatic Refresh | 2012-02-15 → 2012-01-27 (-19d) | 2012-04-10 → 2012-03-22 (-19d) |  |  |  |  |  |
| 71 | JIRA CAINT-998 Single Sign-on | 2012-04-11 → 2012-03-23 (-19d) | 2012-06-05 → 2012-05-17 (-19d) |  |  |  |  |  |
| 72 | JIRA CAINT-49 Integrate with private studies in NBIA | 2012-04-11 → 2012-03-23 (-19d) | 2012-05-08 → 2012-04-19 (-19d) |  |  |  |  |  |
| 74 | JIRA CAINT-1041 - Support NCI Funded Studies Deployment | 2012-06-06 → 2012-05-18 (-19d) | 2012-07-03 → 2012-06-14 (-19d) |  |  |  |  |  |
| 75 | QA | 2012-07-04 → 2012-06-15 (-19d) | 2012-07-31 → 2012-07-12 (-19d) |  |  |  |  |  |
| 76 | Documentation | 2012-07-04 → 2012-06-15 (-19d) | 2012-07-17 → 2012-06-28 (-19d) |  |  |  |  |  |
| 77 | Appscan/Stage/Prod release | 2012-07-18 → 2012-06-29 (-19d) | 2012-07-31 → 2012-07-12 (-19d) |  |  |  |  |  |

## Version 11 (saved 2011-11-15, file caintegrator_project_plan.mpp)

Last finish 2012-07-12 → 2012-07-17 (+5d). Complete tasks 36 → 37.

Changed:

| ID | Task | Start | Finish | Duration | Complete | Total float | Other |
| --- | --- | --- | --- | --- | --- | --- | --- |
| 5 | **CaIntegrator Version 1.3.1** |  | 2011-11-25 → 2011-11-24 (-1d) | 74d? → 72d? | 76% → 89% | 173d → 168d |  |
| 32 | QA RC4 | 2011-11-07 A | 2011-11-16 → 2011-11-15 A (-1d) | 8d → 6d | 0% → 100% | 170d → none | resources HS → HS [114.3%] |
| 33 | Release - Stage/QA/Appscan/Prod/QA | 2011-11-17 → 2011-11-16 (-1d) | 2011-11-25 → 2011-11-24 (-1d) |  |  | 170d → 168d | was named Release - Stage/QA/Prod/QA |
| 34 | **CaIntegrator Version 1.4** |  | 2012-02-07 → 2012-02-10 (+3d) | 136d? → 138d? |  |  |  |
| 36 | **JIRA CAINT-1015 Tech Stack Upgrade** |  | 2011-11-24 → 2011-11-29 (+5d) | 81d → 83d | 57% → 55% |  |  |
| 43 | JIRA CAINT-(1065,1070) JBOSS vulnerability and resolve, IE issue |  | 2011-11-10 → 2011-11-15 (+5d) | 4d → 6d |  |  | was named JIRA CAINT-1065 JBOSS vulnerability and resolve. |
| 44 | JIRA CAINT-(1059,1012) PTE form, JBOSS upgrade |  | 2011-11-15 → 2011-11-16 (+1d) |  |  | 181d → 174d |  |
| 45 | JIRA CAINT(1060,1061, 1010) build track setup Anthill Pro 3, Jenkins CI, Test | 2011-11-11 → 2011-11-16 (+5d) | 2011-11-24 → 2011-11-29 (+5d) |  |  |  |  |
| 46 | **TRANSCEND Support** |  | 2011-12-21 → 2011-12-26 (+5d) | 42d? → 44d? | 20% → 19% |  |  |
| 50 | Finalize the requirements with TRANSCEND (for permissions) |  | 2011-11-08 → 2011-11-09 (+1d) | 5d → 6d |  | 186d → 178d |  |
| 51 | JIRA CAINT-998 -Version control (create shell study) | 2011-11-25 → 2011-11-30 (+5d) | 2011-12-14 → 2011-12-19 (+5d) |  |  |  |  |
| 52 | JIRA CAINT-998 Version control (Archive) | 2011-12-15 → 2011-12-20 (+5d) | 2011-12-21 → 2011-12-26 (+5d) |  |  |  |  |
| 53 | **JIRA-CAINT-966 - Generic Platform Support** | 2011-11-11 → 2011-11-16 (+5d) | 2012-01-10 → 2012-01-13 (+3d) |  |  |  |  |
| 54 | Create new generic platform model by extending expression platform. | 2011-11-11 → 2011-11-16 (+5d) | 2011-11-22 → 2011-11-25 (+3d) |  |  |  |  |
| 55 | Modify the generic platform loader to accept MAGE-TAB. | 2011-11-23 → 2011-11-28 (+5d) | 2011-11-29 → 2011-12-02 (+3d) |  |  |  |  |
| 56 | Modify the study deployment process to load the new platform data from caArray. | 2011-11-30 → 2011-12-05 (+5d) | 2011-12-09 → 2011-12-14 (+5d) |  |  |  |  |
| 57 | modify front-end analysis tools to show a new title according to platform type. | 2011-12-12 → 2011-12-15 (+3d) | 2011-12-14 → 2011-12-19 (+5d) |  |  |  |  |
| 58 | Modify the Query interface to allow selection of a generic expression data type. | 2011-12-15 → 2011-12-20 (+5d) | 2012-01-03 → 2012-01-06 (+3d) |  |  |  |  |
| 59 | Modify front-end for IGV and heatmap to display a selector for choosing a generic expression data type. | 2012-01-04 → 2012-01-09 (+5d) | 2012-01-10 → 2012-01-13 (+3d) |  |  |  |  |
| 63 | QA | 2012-01-11 → 2012-01-16 (+5d) | 2012-01-24 → 2012-01-27 (+3d) |  |  |  |  |
| 64 | Documentation | 2012-01-11 → 2012-01-16 (+5d) | 2012-01-24 → 2012-01-27 (+3d) |  |  |  |  |
| 65 | Appscan/Stage/Prod release | 2012-01-25 → 2012-01-30 (+5d) | 2012-02-07 → 2012-02-10 (+3d) |  |  |  |  |
| 66 | **CaIntegrator Version 1.5** |  | 2012-07-12 → 2012-07-17 (+5d) | 248d? → 250d? |  |  |  |
| 67 | Version 1.5 planning/priortization | 2012-01-25 → 2012-01-30 (+5d) | 2012-01-26 → 2012-01-31 (+5d) |  |  |  |  |
| 68 | **TRANSCEND Support** |  | 2012-05-17 → 2012-05-22 (+5d) | 208d? → 210d? |  |  |  |
| 69 | JIRA CAINT-998 - TRANSCEND Permissions Support | 2012-01-27 → 2012-02-01 (+5d) | 2012-03-22 → 2012-03-27 (+5d) |  |  |  |  |
| 70 | JIRA CAINT-998 Automatic Refresh | 2012-01-27 → 2012-02-01 (+5d) | 2012-03-22 → 2012-03-27 (+5d) |  |  |  |  |
| 71 | JIRA CAINT-998 Single Sign-on | 2012-03-23 → 2012-03-28 (+5d) | 2012-05-17 → 2012-05-22 (+5d) |  |  |  |  |
| 72 | JIRA CAINT-49 Integrate with private studies in NBIA | 2012-03-23 → 2012-03-28 (+5d) | 2012-04-19 → 2012-04-24 (+5d) |  |  |  |  |
| 74 | JIRA CAINT-1041 - Support NCI Funded Studies Deployment | 2012-05-18 → 2012-05-23 (+5d) | 2012-06-14 → 2012-06-19 (+5d) |  |  |  |  |
| 75 | QA | 2012-06-15 → 2012-06-20 (+5d) | 2012-07-12 → 2012-07-17 (+5d) |  |  |  |  |
| 76 | Documentation | 2012-06-15 → 2012-06-20 (+5d) | 2012-06-28 → 2012-07-03 (+5d) |  |  |  |  |
| 77 | Appscan/Stage/Prod release | 2012-06-29 → 2012-07-04 (+5d) | 2012-07-12 → 2012-07-17 (+5d) |  |  |  |  |

## Version 12 (saved 2011-11-21, file caintegrator_project_plan.mpp)

Last finish 2012-07-17 → 2012-07-19 (+2d). Complete tasks 37 → 39.

Added:

| ID | Task | Duration | Start | Finish | Constraint | Resources |
| --- | --- | --- | --- | --- | --- | --- |
| 51 | More discussion with sample data and finalize need | 6d | 2011-11-22 | 2011-12-01 | start no earlier than 2011-11-22 | SJ |

Changed:

| ID | Task | Start | Finish | Duration | Complete | Total float | Other |
| --- | --- | --- | --- | --- | --- | --- | --- |
| 5 | **CaIntegrator Version 1.3.1** |  | 2011-11-24 → 2011-11-29 (+5d) | 72d? → 73d? | 89% → 94% | 168d → 167d |  |
| 32 | QA RC4 |  |  |  |  |  | resources HS [114.3%] → HS |
| 33 | Release - Stage/QA/Appscan/Prod/QA | 2011-11-16 A | 2011-11-24 → 2011-11-29 (+5d) | 7d → 8d | 0% → 56% | 168d → 167d |  |
| 34 | **CaIntegrator Version 1.4** |  | 2012-02-10 → 2012-02-14 (+4d) |  | 22% → 28% |  |  |
| 36 | **JIRA CAINT-1015 Tech Stack Upgrade** |  | 2011-11-29 → 2011-12-01 (+2d) |  | 55% → 67% | 165d → 146d |  |
| 44 | JIRA CAINT-(1059,1012) PTE form, JBOSS upgrade | 2011-11-08 A | 2011-11-16 A |  | 0% → 100% | 174d → none |  |
| 45 | JIRA CAINT(1060,1061, 1010) build track setup Anthill Pro 3, Jenkins CI, Test |  | 2011-11-29 → 2011-12-01 (+2d) |  |  |  |  |
| 46 | **TRANSCEND Support** |  | 2011-12-26 → 2011-12-28 (+2d) |  | 19% → 32% |  |  |
| 50 | Discussion to finalize the requirements with TRANSCEND (for permissions) | 2011-11-02 A | 2011-11-09 A |  | 0% → 100% | 178d → none | was named Finalize the requirements with TRANSCEND (for permissions) |
| 52 | JIRA CAINT-998 -Version control (create shell study) | 2011-11-30 → 2011-12-02 (+2d) | 2011-12-19 → 2011-12-21 (+2d) |  |  |  |  |
| 53 | JIRA CAINT-998 Version control (Archive) | 2011-12-20 → 2011-12-22 (+2d) | 2011-12-26 → 2011-12-28 (+2d) |  |  |  |  |
| 54 | **JIRA-CAINT-966 - Generic Platform Support** |  | 2012-01-13 → 2012-01-17 (+4d) |  |  |  |  |
| 55 | Create new generic platform model by extending expression platform. |  | 2011-11-25 → 2011-11-29 (+4d) |  |  |  |  |
| 56 | Modify the generic platform loader to accept MAGE-TAB. | 2011-11-28 → 2011-11-30 (+2d) | 2011-12-02 → 2011-12-06 (+4d) |  |  |  |  |
| 57 | Modify the study deployment process to load the new platform data from caArray. | 2011-12-05 → 2011-12-07 (+2d) | 2011-12-14 → 2011-12-16 (+2d) |  |  |  |  |
| 58 | modify front-end analysis tools to show a new title according to platform type. | 2011-12-15 → 2011-12-19 (+4d) | 2011-12-19 → 2011-12-21 (+2d) |  |  |  |  |
| 59 | Modify the Query interface to allow selection of a generic expression data type. | 2011-12-20 → 2011-12-22 (+2d) | 2012-01-06 → 2012-01-10 (+4d) |  |  |  |  |
| 60 | Modify front-end for IGV and heatmap to display a selector for choosing a generic expression data type. | 2012-01-09 → 2012-01-11 (+2d) | 2012-01-13 → 2012-01-17 (+4d) |  |  |  |  |
| 64 | QA | 2012-01-16 → 2012-01-18 (+2d) | 2012-01-27 → 2012-01-31 (+4d) |  |  |  |  |
| 65 | Documentation | 2012-01-16 → 2012-01-18 (+2d) | 2012-01-27 → 2012-01-31 (+4d) |  |  |  |  |
| 66 | Appscan/Stage/Prod release | 2012-01-30 → 2012-02-01 (+2d) | 2012-02-10 → 2012-02-14 (+4d) |  |  |  |  |
| 67 | **CaIntegrator Version 1.5** |  | 2012-07-17 → 2012-07-19 (+2d) |  |  |  |  |
| 68 | Version 1.5 planning/priortization | 2012-01-30 → 2012-02-01 (+2d) | 2012-01-31 → 2012-02-02 (+2d) |  |  |  |  |
| 69 | **TRANSCEND Support** |  | 2012-05-22 → 2012-05-24 (+2d) |  |  |  |  |
| 70 | JIRA CAINT-998 - TRANSCEND Permissions Support | 2012-02-01 → 2012-02-03 (+2d) | 2012-03-27 → 2012-03-29 (+2d) |  |  |  |  |
| 71 | JIRA CAINT-998 Automatic Refresh | 2012-02-01 → 2012-02-03 (+2d) | 2012-03-27 → 2012-03-29 (+2d) |  |  |  |  |
| 72 | JIRA CAINT-998 Single Sign-on | 2012-03-28 → 2012-03-30 (+2d) | 2012-05-22 → 2012-05-24 (+2d) |  |  |  |  |
| 73 | JIRA CAINT-49 Integrate with private studies in NBIA | 2012-03-28 → 2012-03-30 (+2d) | 2012-04-24 → 2012-04-26 (+2d) |  |  |  |  |
| 75 | JIRA CAINT-1041 - Support NCI Funded Studies Deployment | 2012-05-23 → 2012-05-25 (+2d) | 2012-06-19 → 2012-06-21 (+2d) |  |  |  |  |
| 76 | QA | 2012-06-20 → 2012-06-22 (+2d) | 2012-07-17 → 2012-07-19 (+2d) |  |  |  |  |
| 77 | Documentation | 2012-06-20 → 2012-06-22 (+2d) | 2012-07-03 → 2012-07-05 (+2d) |  |  |  |  |
| 78 | Appscan/Stage/Prod release | 2012-07-04 → 2012-07-06 (+2d) | 2012-07-17 → 2012-07-19 (+2d) |  |  |  |  |

## Version 13 (saved 2011-11-22, file caintegrator_project_plan.mpp)

Last finish 2012-07-19 → 2012-07-31 (+12d).

Changed:

| ID | Task | Start | Finish | Duration | Complete | Total float | Predecessors | Other |
| --- | --- | --- | --- | --- | --- | --- | --- | --- |
| 5 | **CaIntegrator Version 1.3.1** |  |  |  | 94% → 96% | 167d → 175d |  |  |
| 33 | Release - Stage/QA/Appscan/Prod/QA |  |  |  | 56% → 70% | 167d → 175d |  |  |
| 34 | **CaIntegrator Version 1.4** |  | 2012-02-14 → 2012-02-24 (+10d) | 138d? → 146d? | 28% → 34% |  |  |  |
| 36 | **JIRA CAINT-1015 Tech Stack Upgrade** |  | 2011-12-01 → 2011-11-30 (-1d) | 83d → 82d | 67% → 82% | 146d → 155d |  |  |
| 42 | JIRA CAINT-1058 Implement Artifact Configuration |  |  |  |  |  | none → 41 |  |
| 43 | JIRA CAINT-(1065,1070) Bugs, JBOSS vulnerability and resolve, IE issue | 2011-11-07 A | 2011-11-15 → 2011-11-29 (+14d) | 6d → 14d | 0% → 50% |  |  | was named JIRA CAINT-(1065,1070) JBOSS vulnerability and resolve, IE issue |
| 44 | JIRA CAINT-(1059,1012) PTE form, JBOSS upgrade |  | 2011-11-16 A → 2011-11-18 A (+2d) | 6d → 8d |  |  |  |  |
| 45 | JIRA CAINT(1060,1061, 1010) build track setup Anthill Pro 3, Jenkins CI, Test | 2011-11-16 → 2011-11-21 A (+5d) | 2011-12-01 → 2011-11-30 (-1d) | 10d → 6d | 0% → 50% | 146d → 155d | 63, 21, 43 → 44 |  |
| 46 | **TRANSCEND Support** |  | 2011-12-28 → 2011-12-27 (-1d) | 44d? → 43d? |  | 146d → 155d |  |  |
| 52 | JIRA CAINT-998 -Version control (create shell study) | 2011-12-02 → 2011-12-01 (-1d) | 2011-12-21 → 2011-12-20 (-1d) |  |  | 146d → 155d |  |  |
| 53 | JIRA CAINT-998 Version control (Archive) | 2011-12-22 → 2011-12-21 (-1d) | 2011-12-28 → 2011-12-27 (-1d) |  |  | 146d → 155d |  |  |
| 54 | **JIRA-CAINT-966 - Generic Platform Support** | 2011-11-16 → 2011-11-30 (+14d) | 2012-01-17 → 2012-01-27 (+10d) |  |  |  |  |  |
| 55 | Create new generic platform model by extending expression platform. | 2011-11-16 → 2011-11-30 (+14d) | 2011-11-29 → 2011-12-09 (+10d) |  |  |  |  |  |
| 56 | Modify the generic platform loader to accept MAGE-TAB. | 2011-11-30 → 2011-12-12 (+12d) | 2011-12-06 → 2011-12-16 (+10d) |  |  |  |  |  |
| 57 | Modify the study deployment process to load the new platform data from caArray. | 2011-12-07 → 2011-12-19 (+12d) | 2011-12-16 → 2011-12-28 (+12d) |  |  |  |  |  |
| 58 | modify front-end analysis tools to show a new title according to platform type. | 2011-12-19 → 2011-12-29 (+10d) | 2011-12-21 → 2012-01-02 (+12d) |  |  |  |  |  |
| 59 | Modify the Query interface to allow selection of a generic expression data type. | 2011-12-22 → 2012-01-03 (+12d) | 2012-01-10 → 2012-01-20 (+10d) |  |  |  |  |  |
| 60 | Modify front-end for IGV and heatmap to display a selector for choosing a generic expression data type. | 2012-01-11 → 2012-01-23 (+12d) | 2012-01-17 → 2012-01-27 (+10d) |  |  |  |  |  |
| 64 | QA | 2012-01-18 → 2012-01-30 (+12d) | 2012-01-31 → 2012-02-10 (+10d) |  |  |  |  |  |
| 65 | Documentation | 2012-01-18 → 2012-01-30 (+12d) | 2012-01-31 → 2012-02-10 (+10d) |  |  |  |  |  |
| 66 | Appscan/Stage/Prod release | 2012-02-01 → 2012-02-13 (+12d) | 2012-02-14 → 2012-02-24 (+10d) |  |  |  |  |  |
| 67 | **CaIntegrator Version 1.5** |  | 2012-07-19 → 2012-07-31 (+12d) | 250d? → 258d? |  |  |  |  |
| 68 | Version 1.5 planning/priortization | 2012-02-01 → 2012-02-13 (+12d) | 2012-02-02 → 2012-02-14 (+12d) |  |  |  |  |  |
| 69 | **TRANSCEND Support** |  | 2012-05-24 → 2012-06-05 (+12d) | 210d? → 218d? |  |  |  |  |
| 70 | JIRA CAINT-998 - TRANSCEND Permissions Support | 2012-02-03 → 2012-02-15 (+12d) | 2012-03-29 → 2012-04-10 (+12d) |  |  |  |  |  |
| 71 | JIRA CAINT-998 Automatic Refresh | 2012-02-03 → 2012-02-15 (+12d) | 2012-03-29 → 2012-04-10 (+12d) |  |  |  |  |  |
| 72 | JIRA CAINT-998 Single Sign-on | 2012-03-30 → 2012-04-11 (+12d) | 2012-05-24 → 2012-06-05 (+12d) |  |  |  |  |  |
| 73 | JIRA CAINT-49 Integrate with private studies in NBIA | 2012-03-30 → 2012-04-11 (+12d) | 2012-04-26 → 2012-05-08 (+12d) |  |  |  |  |  |
| 75 | JIRA CAINT-1041 - Support NCI Funded Studies Deployment | 2012-05-25 → 2012-06-06 (+12d) | 2012-06-21 → 2012-07-03 (+12d) |  |  |  |  |  |
| 76 | QA | 2012-06-22 → 2012-07-04 (+12d) | 2012-07-19 → 2012-07-31 (+12d) |  |  |  |  |  |
| 77 | Documentation | 2012-06-22 → 2012-07-04 (+12d) | 2012-07-05 → 2012-07-17 (+12d) |  |  |  |  |  |
| 78 | Appscan/Stage/Prod release | 2012-07-06 → 2012-07-18 (+12d) | 2012-07-19 → 2012-07-31 (+12d) |  |  |  |  |  |

## Version 14 (saved 2011-11-29, file caintegrator_project_plan.mpp)

Last finish stays 2012-07-31. Complete tasks 39 → 42.

Added:

| ID | Task | Duration | Start | Finish | Predecessors | Constraint | Resources |
| --- | --- | --- | --- | --- | --- | --- | --- |
| 57 | Xenoline Requirements Gathering | 10d | 2011-11-07 A | 2011-11-21 A |  | start no earlier than 2011-11-07 | SJ |
| 58 | Xenoline ARC document | 4d | 2011-12-01 | 2011-12-06 |  | start no earlier than 2011-12-01 | SJ |
| 59 | Xenoline setup server/ftp site | 7d | 2011-12-07 | 2011-12-15 | 58 |  | Coung/Systems |
| 60 | caDSR requirements for caIntegrator | 4d | 2011-12-01 | 2011-12-06 |  | start no earlier than 2011-12-01 | SJ |
| 61 | caDSR - Meeting with Denise | 2d | 2011-12-07 | 2011-12-08 | 60 |  | SJ |
| 62 | caDSR implementation based on new requirements | 5d | 2011-12-09 | 2011-12-15 | 61 |  | JP |
| 63 | JIRA CAINT-1075 Error on copyNumber data deployments | 3d | 2011-11-30 | 2011-12-02 | 43 |  | JP |

Changed:

| ID | Task | Start | Finish | Duration | Complete | Total float |
| --- | --- | --- | --- | --- | --- | --- |
| 5 | **CaIntegrator Version 1.3.1** |  |  |  | 96% → 99% |  |
| 33 | Release - Stage/QA/Appscan/Prod/QA |  |  |  | 70% → 98% |  |
| 34 | **CaIntegrator Version 1.4** |  |  |  | 34% → 38% |  |
| 36 | **JIRA CAINT-1015 Tech Stack Upgrade** |  | 2011-11-30 → 2011-12-02 (+2d) | 82d → 84d | 82% → 89% | 155d → 153d |
| 43 | JIRA CAINT-(1065,1070) Bugs, JBOSS vulnerability and resolve, IE issue |  |  |  | 50% → 90% |  |
| 45 | JIRA CAINT(1060,1061, 1010) build track setup Anthill Pro 3, Jenkins CI, Test |  | 2011-11-30 → 2011-12-02 (+2d) | 6d → 8d | 50% → 38% | 155d → 153d |
| 46 | **TRANSCEND Support** |  | 2011-12-27 → 2011-12-29 (+2d) | 43d? → 45d? |  | 155d → 153d |
| 52 | JIRA CAINT-998 -Version control (create shell study) | 2011-12-01 → 2011-12-05 (+4d) | 2011-12-20 → 2011-12-22 (+2d) |  |  | 155d → 153d |
| 53 | JIRA CAINT-998 Version control (Archive) | 2011-12-21 → 2011-12-23 (+2d) | 2011-12-27 → 2011-12-29 (+2d) |  |  | 155d → 153d |
| 54 | **Ongoing maintenance and bug fixes** | 2011-08-31 A | 2011-09-27 → 2012-01-27 (+122d) | 19d → 104d | 0% → 18% | 217d → 132d |
| 55 | ADF platform issues | 2011-08-31 A | 2011-09-01 A |  | 0% → 100% | 226d → none |
| 56 | Data issues with training tier | 2011-09-23 A | 2011-09-27 A |  | 0% → 100% | 180d → none |

## Version 15 (saved 2011-12-05, file caintegrator_project_plan.mpp)

Last finish stays 2012-07-31. Complete tasks 42 → 45.

Added:

| ID | Task | Duration | Start | Finish | Predecessors | Constraint | Resources |
| --- | --- | --- | --- | --- | --- | --- | --- |
| 46 | JIRA CAINT1071 retirement of scm-private repository - reconfigure tier builds | 2d | 2011-12-07 | 2011-12-08 | 45 |  | MAX |
| 52 | Finalize Archive User Stories | 6d | 2011-11-22 A | 2011-12-01 A |  | start no earlier than 2011-11-22 | SJ |
| 66 | JIRA CAINT-986 Integration with IGV 2.0 | 3d | 2011-12-05 | 2011-12-07 | 65 |  | JP |

Changed:

| ID | Task | Start | Finish | Duration | Complete | Total float | Predecessors | Other |
| --- | --- | --- | --- | --- | --- | --- | --- | --- |
| 5 | **CaIntegrator Version 1.3.1** |  | 2011-11-29 A |  | 99% → 100% | 175d → none |  |  |
| 33 | Release - Stage/QA/Appscan/Prod/QA |  | 2011-11-29 A |  | 98% → 100% | 175d → none |  |  |
| 34 | **CaIntegrator Version 1.4** |  |  |  | 38% → 41% |  |  |  |
| 36 | **JIRA CAINT-1015 Tech Stack Upgrade** |  | 2011-12-02 → 2011-12-08 (+6d) | 84d → 88d | 89% → 90% | 153d → 149d |  |  |
| 43 | JIRA CAINT-(1065,1070) Bugs, JBOSS vulnerability and resolve, IE issue |  | 2011-11-29 A |  | 90% → 100% | 0d → none |  |  |
| 45 | JIRA CAINT(1060,1061, 1010) build track setup Anthill Pro 3, Jenkins CI, Test |  | 2011-12-02 → 2011-12-06 (+4d) | 8d → 10d | 38% → 60% | 153d → 149d |  |  |
| 47 | **TRANSCEND Support** |  | 2011-12-29 → 2012-01-04 (+6d) | 45d? → 49d? | 32% → 45% | 153d → 149d |  |  |
| 53 | More discussion with sample data and finalize need | 2011-11-22 → 2011-12-06 (+14d) | 2011-12-01 → 2011-12-08 (+7d) | 6d → 3d |  | 173d → 168d |  | constraint start no earlier than 2011-11-22 → start no earlier than 2011-12-06 |
| 54 | JIRA CAINT-998 -Version control (create shell study) | 2011-12-05 → 2011-12-09 (+4d) | 2011-12-22 → 2011-12-28 (+6d) |  |  | 153d → 149d | 45 → 46 |  |
| 55 | JIRA CAINT-998 Version control (Archive) | 2011-12-23 → 2011-12-29 (+6d) | 2011-12-29 → 2012-01-04 (+6d) |  |  | 153d → 149d |  |  |
| 56 | **Ongoing maintenance and bug fixes** |  |  |  | 18% → 17% |  |  |  |

## Version 16 (saved 2011-12-06, file caintegrator_project_plan.mpp)

Last finish 2012-07-31 → 2012-08-01 (+1d).

Added:

| ID | Task | Duration | Start | Finish | Predecessors | Resources |
| --- | --- | --- | --- | --- | --- | --- |
| 54 | JIRA CAINT-1078 TRANSCEND - authorization user story CSM investigation | 5d | 2011-12-08 | 2011-12-14 | 67 | JP |

Changed:

| ID | Task | Start | Finish | Complete | Total float | Predecessors | Other |
| --- | --- | --- | --- | --- | --- | --- | --- |
| 32 | QA RC4 |  |  |  |  |  | resources HS → HS [114.3%] |
| 34 | **CaIntegrator Version 1.4** |  | 2012-02-24 → 2012-02-27 (+3d) | 41% → 40% |  |  |  |
| 47 | **TRANSCEND Support** |  | 2012-01-04 → 2012-01-05 (+1d) | 45% → 40% |  |  |  |
| 55 | JIRA CAINT-998 -Version control (create shell study) |  | 2011-12-28 → 2011-12-29 (+1d) |  |  |  |  |
| 56 | JIRA CAINT-998 Version control (Archive) | 2011-12-29 → 2011-12-30 (+1d) | 2012-01-04 → 2012-01-05 (+1d) |  |  |  |  |
| 57 | **Ongoing maintenance and bug fixes** |  | 2012-01-27 → 2012-01-30 (+3d) |  |  |  |  |
| 65 | caDSR implementation based on new requirements | 2011-12-09 → 2011-12-15 (+6d) | 2011-12-15 → 2011-12-21 (+6d) |  | 163d → 159d | 64 → 64, 54 |  |
| 68 | **JIRA-CAINT-966 - Generic Platform Support** |  | 2012-01-27 → 2012-01-30 (+3d) |  |  |  |  |
| 71 | Modify the study deployment process to load the new platform data from caArray. |  | 2011-12-28 → 2011-12-29 (+1d) |  |  |  |  |
| 72 | modify front-end analysis tools to show a new title according to platform type. | 2011-12-29 → 2011-12-30 (+1d) | 2012-01-02 → 2012-01-03 (+1d) |  |  |  |  |
| 73 | Modify the Query interface to allow selection of a generic expression data type. | 2012-01-03 → 2012-01-04 (+1d) | 2012-01-20 → 2012-01-23 (+3d) |  |  |  |  |
| 74 | Modify front-end for IGV and heatmap to display a selector for choosing a generic expression data type. | 2012-01-23 → 2012-01-24 (+1d) | 2012-01-27 → 2012-01-30 (+3d) |  |  |  |  |
| 75 | QA | 2012-01-30 → 2012-01-31 (+1d) | 2012-02-10 → 2012-02-13 (+3d) |  |  |  |  |
| 76 | Documentation | 2012-01-30 → 2012-01-31 (+1d) | 2012-02-10 → 2012-02-13 (+3d) |  |  |  |  |
| 77 | Appscan/Stage/Prod release | 2012-02-13 → 2012-02-14 (+1d) | 2012-02-24 → 2012-02-27 (+3d) |  |  |  |  |
| 78 | **CaIntegrator Version 1.5** |  | 2012-07-31 → 2012-08-01 (+1d) |  |  |  |  |
| 79 | Version 1.5 planning/priortization | 2012-02-13 → 2012-02-14 (+1d) | 2012-02-14 → 2012-02-15 (+1d) |  |  |  |  |
| 80 | **TRANSCEND Support** |  | 2012-06-05 → 2012-06-06 (+1d) |  |  |  |  |
| 81 | JIRA CAINT-998 - TRANSCEND Permissions Support | 2012-02-15 → 2012-02-16 (+1d) | 2012-04-10 → 2012-04-11 (+1d) |  |  |  |  |
| 82 | JIRA CAINT-998 Automatic Refresh | 2012-02-15 → 2012-02-16 (+1d) | 2012-04-10 → 2012-04-11 (+1d) |  |  |  |  |
| 83 | JIRA CAINT-998 Single Sign-on | 2012-04-11 → 2012-04-12 (+1d) | 2012-06-05 → 2012-06-06 (+1d) |  |  |  |  |
| 84 | JIRA CAINT-49 Integrate with private studies in NBIA | 2012-04-11 → 2012-04-12 (+1d) | 2012-05-08 → 2012-05-09 (+1d) |  |  |  |  |
| 86 | JIRA CAINT-1041 - Support NCI Funded Studies Deployment | 2012-06-06 → 2012-06-07 (+1d) | 2012-07-03 → 2012-07-04 (+1d) |  |  |  |  |
| 87 | QA | 2012-07-04 → 2012-07-05 (+1d) | 2012-07-31 → 2012-08-01 (+1d) |  |  |  |  |
| 88 | Documentation | 2012-07-04 → 2012-07-05 (+1d) | 2012-07-17 → 2012-07-18 (+1d) |  |  |  |  |
| 89 | Appscan/Stage/Prod release | 2012-07-18 → 2012-07-19 (+1d) | 2012-07-31 → 2012-08-01 (+1d) |  |  |  |  |

## Version 17 (saved 2011-12-12, file caintegrator_project_plan.mpp)

Last finish 2012-08-01 → 2012-08-08 (+7d). Complete tasks 45 → 46.

Added:

| ID | Task | Duration | Start | Finish | Constraint | Resources |
| --- | --- | --- | --- | --- | --- | --- |
| 53 | Permission Model - discussion and documentation | 3d | 2011-12-08 A | 2011-12-12 A | start no earlier than 2011-12-08 | JP |
| 62 | Xenoline Data update information | 1d? | 2011-12-14 | 2011-12-14 | start no earlier than 2011-12-14 |  |

Removed: 64 caDSR - Meeting with Denise

Changed:

| ID | Task | Start | Finish | Duration | Complete | Total float | Predecessors | Other |
| --- | --- | --- | --- | --- | --- | --- | --- | --- |
| 34 | **CaIntegrator Version 1.4** |  | 2012-02-27 → 2012-03-05 (+7d) | 146d? → 151d? | 40% → 42% |  |  |  |
| 36 | **JIRA CAINT-1015 Tech Stack Upgrade** |  | 2011-12-08 → 2011-12-15 (+7d) | 88d → 93d | 90% → 89% |  |  |  |
| 45 | JIRA CAINT(1060,1061, 1010) build track setup Anthill Pro 3, Jenkins CI, Test |  | 2011-12-06 → 2011-12-13 (+7d) | 10d → 15d | 60% → 65% |  |  |  |
| 46 | JIRA CAINT1071 retirement of scm-private repository - reconfigure tier builds | 2011-12-07 → 2011-12-14 (+7d) | 2011-12-08 → 2011-12-15 (+7d) |  |  |  |  |  |
| 47 | **TRANSCEND Support** |  | 2012-01-05 → 2012-01-12 (+7d) | 49d? → 54d? | 40% → 44% |  |  |  |
| 54 | Meet with UCSF with sample data and finalize need | 2011-12-06 → 2011-12-13 (+7d) | 2011-12-08 → 2011-12-15 (+7d) |  |  |  | none → 53 | was named More discussion with sample data and finalize need |
| 55 | JIRA CAINT-1078 TRANSCEND - authorization user story CSM investigation | 2011-12-08 → 2011-12-13 (+5d) | 2011-12-14 → 2011-12-19 (+5d) |  |  | 159d → 161d | 68 → 68, 53 |  |
| 56 | JIRA CAINT-998 -Version control (create shell study) | 2011-12-09 → 2011-12-16 (+7d) | 2011-12-29 → 2012-01-05 (+7d) |  |  |  |  |  |
| 57 | JIRA CAINT-998 Version control (Archive) | 2011-12-30 → 2012-01-06 (+7d) | 2012-01-05 → 2012-01-12 (+7d) |  |  |  |  |  |
| 58 | **Ongoing maintenance and bug fixes** |  | 2012-01-30 → 2012-02-06 (+7d) | 104d → 109d? | 17% → 18% |  |  |  |
| 63 | Xenoline ARC document | 2011-12-01 → 2011-12-15 (+14d) | 2011-12-06 → 2011-12-20 (+14d) |  |  | 163d → 158d | none → 62 |  |
| 64 | Xenoline setup server/ftp site | 2011-12-07 → 2011-12-21 (+14d) | 2011-12-15 → 2011-12-30 (+15d) |  |  | 163d → 158d |  |  |
| 65 | caDSR requirements for caIntegrator (Meeting with Denise) | 2011-12-01 → 2011-12-14 (+13d) | 2011-12-06 → 2011-12-19 (+13d) |  |  | 163d → 161d |  | was named caDSR requirements for caIntegrator; constraint start no earlier than 2011-12-01 → start no earlier than 2011-12-14 |
| 66 | caDSR implementation based on new requirements | 2011-12-15 → 2011-12-20 (+5d) | 2011-12-21 → 2012-01-03 (+13d) |  |  | 159d → 156d | caDSR - Meeting with Denise, 55 → 55, 65 |  |
| 69 | **JIRA-CAINT-966 - Generic Platform Support** |  | 2012-01-30 → 2012-02-06 (+7d) | 43d → 48d |  |  |  |  |
| 72 | Modify the study deployment process to load the new platform data from caArray. |  | 2011-12-29 → 2012-01-05 (+7d) |  |  |  |  |  |
| 73 | modify front-end analysis tools to show a new title according to platform type. | 2011-12-30 → 2012-01-06 (+7d) | 2012-01-03 → 2012-01-10 (+7d) |  |  |  |  |  |
| 74 | Modify the Query interface to allow selection of a generic expression data type. | 2012-01-04 → 2012-01-11 (+7d) | 2012-01-23 → 2012-01-30 (+7d) |  |  |  |  |  |
| 75 | Modify front-end for IGV and heatmap to display a selector for choosing a generic expression data type. | 2012-01-24 → 2012-01-31 (+7d) | 2012-01-30 → 2012-02-06 (+7d) |  |  |  |  |  |
| 76 | QA | 2012-01-31 → 2012-02-07 (+7d) | 2012-02-13 → 2012-02-20 (+7d) |  |  |  |  |  |
| 77 | Documentation | 2012-01-31 → 2012-02-07 (+7d) | 2012-02-13 → 2012-02-20 (+7d) |  |  |  |  |  |
| 78 | Appscan/Stage/Prod release | 2012-02-14 → 2012-02-21 (+7d) | 2012-02-27 → 2012-03-05 (+7d) |  |  |  |  |  |
| 79 | **CaIntegrator Version 1.5** |  | 2012-08-01 → 2012-08-08 (+7d) | 258d? → 263d? |  |  |  |  |
| 80 | Version 1.5 planning/priortization | 2012-02-14 → 2012-02-21 (+7d) | 2012-02-15 → 2012-02-22 (+7d) |  |  |  |  |  |
| 81 | **TRANSCEND Support** |  | 2012-06-06 → 2012-06-13 (+7d) | 218d? → 223d? |  |  |  |  |
| 82 | JIRA CAINT-998 - TRANSCEND Permissions Support | 2012-02-16 → 2012-02-23 (+7d) | 2012-04-11 → 2012-04-18 (+7d) |  |  |  |  |  |
| 83 | JIRA CAINT-998 Automatic Refresh | 2012-02-16 → 2012-02-23 (+7d) | 2012-04-11 → 2012-04-18 (+7d) |  |  |  |  |  |
| 84 | JIRA CAINT-998 Single Sign-on | 2012-04-12 → 2012-04-19 (+7d) | 2012-06-06 → 2012-06-13 (+7d) |  |  |  |  |  |
| 85 | JIRA CAINT-49 Integrate with private studies in NBIA | 2012-04-12 → 2012-04-19 (+7d) | 2012-05-09 → 2012-05-16 (+7d) |  |  |  |  |  |
| 87 | JIRA CAINT-1041 - Support NCI Funded Studies Deployment | 2012-06-07 → 2012-06-14 (+7d) | 2012-07-04 → 2012-07-11 (+7d) |  |  |  |  |  |
| 88 | QA | 2012-07-05 → 2012-07-12 (+7d) | 2012-08-01 → 2012-08-08 (+7d) |  |  |  |  |  |
| 89 | Documentation | 2012-07-05 → 2012-07-12 (+7d) | 2012-07-18 → 2012-07-25 (+7d) |  |  |  |  |  |
| 90 | Appscan/Stage/Prod release | 2012-07-19 → 2012-07-26 (+7d) | 2012-08-01 → 2012-08-08 (+7d) |  |  |  |  |  |

## Version 18 (saved 2011-12-19, file caintegrator_project_plan.mpp)

Last finish stays 2012-08-08. Complete tasks 46 → 49.

Added:

| ID | Task | Duration | Start | Finish | Constraint | Resources |
| --- | --- | --- | --- | --- | --- | --- |
| 55 | caArray/caIntegrator permission Architecure review | 3d? | 2011-12-19 | 2011-12-21 | start no earlier than 2011-12-19 | ALL |

Changed:

| ID | Task | Start | Finish | Duration | Complete | Total float | Predecessors | Other |
| --- | --- | --- | --- | --- | --- | --- | --- | --- |
| 34 | **CaIntegrator Version 1.4** |  |  | 151d? → 146d? | 42% → 45% |  |  |  |
| 36 | **JIRA CAINT-1015 Tech Stack Upgrade** |  | 2011-12-15 → 2011-12-23 (+8d) | 93d → 99d | 89% → 82% | 149d → 138d |  |  |
| 45 | JIRA CAINT(1060,1061, 1010) build track setup Anthill Pro 3, Jenkins CI, Test |  | 2011-12-13 → 2011-12-21 (+8d) | 15d → 21d | 65% → 47% | 149d → 138d |  |  |
| 46 | JIRA CAINT1071 retirement of scm-private repository - reconfigure tier builds | 2011-12-14 → 2011-12-22 (+8d) | 2011-12-15 → 2011-12-23 (+8d) |  |  | 149d → 138d |  |  |
| 47 | **TRANSCEND Support** |  | 2012-01-12 → 2012-01-27 (+15d) | 54d? → 60d? | 44% → 46% | 149d → 138d |  |  |
| 54 | JIRA CAINT-1078 TRANSCEND - authorization user story CSM investigation | 2011-12-13 A | 2011-12-19 → 2011-12-21 (+2d) | 5d → 7d | 0% → 50% | 161d → 154d |  |  |
| 56 | Meet with UCSF with sample data and finalize need | 2011-12-13 → 2011-12-22 (+9d) | 2011-12-15 → 2012-01-03 (+19d) |  |  | 168d → 156d | 53 → 55 |  |
| 57 | JIRA CAINT-998 -Version control (create shell study) | 2011-12-16 → 2012-01-03 (+18d) | 2012-01-05 → 2012-01-20 (+15d) |  |  | 149d → 138d |  |  |
| 58 | JIRA CAINT-998 Version control (Archive) | 2012-01-06 → 2012-01-23 (+17d) | 2012-01-12 → 2012-01-27 (+15d) |  |  | 149d → 138d |  |  |
| 59 | **Ongoing maintenance and bug fixes** |  |  | 109d? → 104d? | 18% → 29% |  |  |  |
| 63 | Xenoline Data update information | 2011-12-14 → 2012-01-03 (+20d) | 2011-12-14 → 2012-01-03 (+20d) |  |  | 153d → 145d |  | constraint start no earlier than 2011-12-14 → start no earlier than 2012-01-03 |
| 64 | Xenoline ARC document | 2011-12-15 → 2012-01-04 (+20d) | 2011-12-20 → 2012-01-09 (+20d) |  |  | 158d → 145d |  |  |
| 65 | Xenoline setup server/ftp site | 2011-12-21 → 2012-01-10 (+20d) | 2011-12-30 → 2012-01-18 (+19d) |  |  | 158d → 145d |  |  |
| 66 | caDSR requirements for caIntegrator (Meeting with Denise) | 2011-12-14 A | 2011-12-19 → 2011-12-16 A (-3d) | 4d → 3d | 0% → 100% | 161d → none |  |  |
| 67 | caDSR implementation based on new requirements | 2011-12-20 → 2012-01-09 (+20d) | 2012-01-03 → 2012-01-13 (+10d) |  |  | 156d → 148d |  | constraint none → start no earlier than 2012-01-09 |
| 68 | JIRA CAINT-1075 Error on copyNumber data deployments | 2011-11-30 A | 2011-12-02 A |  | 0% → 100% | 164d → none |  |  |
| 69 | JIRA CAINT-986 Integration with IGV 2.0 | 2011-12-05 A | 2011-12-07 A |  | 0% → 100% | 164d → none |  |  |
| 70 | **JIRA-CAINT-966 - Generic Platform Support** |  |  | 48d → 43d |  |  |  |  |
| 80 | **CaIntegrator Version 1.5** |  |  | 263d? → 258d? |  |  |  |  |
| 82 | **TRANSCEND Support** |  |  | 223d? → 218d? |  |  |  |  |

## Version 19 (saved 2011-12-20, file caintegrator_project_plan.mpp)

Last finish stays 2012-08-08.

Added:

| ID | Task | Duration | Start | Finish | Constraint | Resources |
| --- | --- | --- | --- | --- | --- | --- |
| 70 | JIRA CAINT-1083 BioPortals Tiger Team requirements. | 2d | 2011-12-21 | 2011-12-22 | start no earlier than 2011-12-21 | JP |

Changed:

| ID | Task | Complete |
| --- | --- | --- |
| 59 | **Ongoing maintenance and bug fixes** | 29% → 28% |

## Version 20 (saved 2012-01-03, file caintegrator_project_plan.mpp)

Last finish stays 2012-08-08. Complete tasks 49 → 52.

Added:

| ID | Task | Duration | Start | Finish | Predecessors | Constraint | Resources |
| --- | --- | --- | --- | --- | --- | --- | --- |
| 58 | Finalize Architecture for permission model | 1d? | 2012-02-01 | 2012-02-01 | 57 | start no earlier than 2012-01-30 | Santosh |
| 59 | TRANSCEND Permission Model Implementation | 15d | 2012-02-02 | 2012-02-22 | 58 |  | JP |
| 71 | JIRA CAINT-1081 Agilent 44K deployment | 4d | 2012-01-04 | 2012-01-09 | 70 |  | JP |

Removed: 46 JIRA CAINT1071 retirement of scm-private repository - reconfigure tier builds; 67 caDSR implementation based on new requirements

Changed:

| ID | Task | Start | Finish | Duration | Complete | Total float | Predecessors | Other |
| --- | --- | --- | --- | --- | --- | --- | --- | --- |
| 34 | **CaIntegrator Version 1.4** |  |  |  | 45% → 51% |  |  |  |
| 36 | **JIRA CAINT-1015 Tech Stack Upgrade** |  | 2011-12-23 → 2012-01-04 (+12d) | 99d → 101d | 82% → 97% | 138d → 120d |  |  |
| 45 | JIRA CAINT(1060,1061, 1010) build track setup Anthill Pro 3, Jenkins CI, Test |  | 2011-12-21 → 2012-01-04 (+14d) | 21d → 25d | 47% → 90% | 138d → 136d |  |  |
| 46 | **TRANSCEND Support** |  | 2012-01-27 → 2012-02-22 (+26d) | 60d? → 78d? |  | 138d → 120d |  |  |
| 53 | JIRA CAINT-1078 TRANSCEND - authorization user story CSM investigation |  | 2011-12-21 A |  | 50% → 100% | 154d → none |  |  |
| 54 | caArray/caIntegrator permission Architecure review | 2011-12-19 A | 2011-12-21 A |  | 0% → 100% | 156d → none |  |  |
| 55 | Create sample studies on caIntegrator | 2011-12-22 → 2012-01-03 A (+12d) | 2012-01-03 → 2012-01-05 (+2d) |  | 0% → 20% | 156d → 154d |  | was named Meet with UCSF with sample data and finalize need; constraint start no earlier than 2011-12-06 → start no earlier than 2012-01-03 |
| 56 | JIRA CAINT-998 -Version control (create shell study) | 2012-01-03 → 2012-01-05 (+2d) | 2012-01-20 → 2012-01-24 (+4d) |  |  | 138d → 120d | JIRA CAINT1071 retirement of scm-private repository - reconfigure tier builds → 45 |  |
| 57 | JIRA CAINT-998 Version control (Archive) | 2012-01-23 → 2012-01-25 (+2d) | 2012-01-27 → 2012-01-31 (+4d) |  |  | 138d → 120d |  |  |
| 60 | **Ongoing maintenance and bug fixes** |  |  |  | 28% → 32% |  |  |  |
| 70 | JIRA CAINT-1083 BioPortals Tiger Team requirements. | 2011-12-21 A | 2011-12-22 → 2012-01-03 A (+12d) | 2d → 4d | 0% → 100% | 158d → none |  |  |

## Version 21 (saved 2012-01-10, file caintegrator_project_plan.mpp)

Last finish stays 2012-08-08. Complete tasks 52 → 55.

Added:

| ID | Task | Duration | Start | Finish | Predecessors | Constraint | Resources |
| --- | --- | --- | --- | --- | --- | --- | --- |
| 46 | Debug and Test AHP3.0 | 3d | 2012-01-06 A | 2012-01-11 | 45 |  |  |
| 47 | JIRA CAINT(1085) Add UPT deployment config and instructions to the DEV/QA/tiers PTE. | 3d | 2012-01-11 A | 2012-01-13 | 45 |  | JP |
| 48 | JIRA CAINT(1086) caIntegrator caArray compatibiity. | 3d | 2012-01-06 A | 2012-01-11 | 45 |  | MAX |
| 75 | Feasibility of patch release to Prod (Bioportal team feedback) | 1d? | 2011-08-02 | 2011-08-02 |  | start no earlier than 2011-08-02 | SJ |

Changed:

| ID | Task | Start | Finish | Duration | Complete | Total float | Predecessors |
| --- | --- | --- | --- | --- | --- | --- | --- |
| 34 | **CaIntegrator Version 1.4** |  |  |  | 51% → 53% |  |  |
| 36 | **JIRA CAINT-1015 Tech Stack Upgrade** |  | 2012-01-04 → 2012-01-13 (+9d) | 101d → 108d | 97% → 92% | 120d → 148d |  |
| 45 | JIRA CAINT(1060,1061, 1010) build track setup Anthill Pro 3, Jenkins CI, Test |  | 2012-01-04 → 2012-01-06 A (+2d) | 25d → 27d | 90% → 100% | 136d → none |  |
| 49 | **TRANSCEND Support** |  | 2012-02-22 → 2012-02-20 (-2d) | 78d? → 76d? | 46% → 49% | 120d → 122d |  |
| 58 | Create sample studies on caIntegrator |  | 2012-01-05 A |  | 20% → 100% | 154d → none |  |
| 59 | JIRA CAINT-998 -Version control (create shell study) | 2012-01-05 → 2012-01-11 (+6d) | 2012-01-24 → 2012-01-31 (+7d) |  |  | 120d → 115.6d | 45 → 48 |
| 60 | JIRA CAINT-998 Version control (Archive) | 2012-01-25 → 2012-01-31 (+6d) | 2012-01-31 → 2012-02-07 (+7d) |  |  | 120d → 115.6d |  |
| 61 | Finalize Architecture for permission model | 2012-02-01 → 2012-01-30 (-2d) | 2012-02-01 → 2012-01-30 (-2d) |  |  | 120d → 122d | 60 → none |
| 62 | TRANSCEND Permission Model Implementation | 2012-02-02 → 2012-01-31 (-2d) | 2012-02-22 → 2012-02-20 (-2d) |  |  | 120d → 122d |  |
| 63 | **Ongoing maintenance and bug fixes** | 2011-08-31 A → 2011-08-02 A (-29d) |  | 104d? → 125d? | 32% → 36% |  |  |
| 74 | JIRA CAINT-1081 Agilent 44K deployment | 2012-01-04 A | 2012-01-09 A |  | 0% → 100% | 152d → none |  |

## Version 22 (saved 2012-01-17, file caintegrator_project_plan.mpp)

Last finish 2012-08-08 → 2012-08-14 (+6d). Complete tasks 55 → 59.

Added:

| ID | Task | Duration | Start | Finish | Predecessors | Constraint | Resources |
| --- | --- | --- | --- | --- | --- | --- | --- |
| 49 | Tech Stack upgrade to QA | 3d | 2012-01-13 | 2012-01-17 |  | start no earlier than 2012-01-13 | Systems |
| 50 | UPT Upgrade to JBOSS 5.0 | 1d? | 2012-01-31 | 2012-01-31 |  | start no earlier than 2012-01-31 | UPT team |
| 51 | JIRA CAINT(1085) Phase -2 Add UPT deployment config and instructions to the DEV/QA/tiers PTE. | 3d | 2012-02-01 | 2012-02-03 | 50 |  | JP |
| 65 | JIRA CAINT-964 - Not able to view IGV when not logged in | 3d | 2012-01-16 | 2012-01-18 | 48 |  | JP |
| 93 | **Release to Prod** | 40d | 2012-06-14 | 2012-08-09 |  |  |  |

Removed: 83 QA; 84 Documentation; 85 Appscan/Stage/Prod release; 86 CaIntegrator Version 1.5; 87 Version 1.5 planning/priortization; 88 TRANSCEND Support

Changed:

| ID | Task | Start | Finish | Duration | Complete | Total float | Predecessors | Other |
| --- | --- | --- | --- | --- | --- | --- | --- | --- |
| 34 | **CaIntegrator Version 1.4** |  | 2012-03-05 → 2012-08-14 (+162d) | 146d? → 261.4d? | 53% → 34% | 112d → 0d |  |  |
| 36 | **JIRA CAINT-1015 Tech Stack Upgrade** |  | 2012-01-13 → 2012-02-03 (+21d) | 108d → 123d? |  | 148d → 140.4d |  |  |
| 46 | Debug and Test AHP3.0 |  | 2012-01-11 A |  | 30% → 100% | 150.9d → none |  | resources none → ALL |
| 47 | JIRA CAINT(1086) caIntegrator caArray compatibiity. |  | 2012-01-11 → 2012-01-12 A (+1d) | 3d → 4d | 20% → 100% | 115.6d → none |  |  |
| 48 | JIRA CAINT(1085) Phase -1 Add UPT deployment config and instructions to the DEV/QA/tiers PTE. |  | 2012-01-13 A |  | 20% → 100% | 148d → none |  | was named JIRA CAINT(1085) Add UPT deployment config and instructions to the DEV/QA/tiers PTE. |
| 52 | **Ongoing maintenance and bug fixes** |  | 2012-02-06 → 2012-01-18 (-19d) | 125d? → 112d? | 36% → 69% | 132d → 152.4d |  |  |
| 64 | Feasibility of patch release to Prod (Bioportal team feedback) | 2011-08-02 A | 2011-08-02 A |  | 0% → 100% | 256d → none |  |  |
| 66 | **TRANSCEND Feature implementation** |  | 2012-02-20 → 2012-06-21 (+122d) | 76d? → 163.4d? | 49% → 15% | 122d → 38d |  | was named TRANSCEND Support |
| 76 | JIRA CAINT-1023 -Version control (create shell study) | 2012-01-11 → 2012-01-12 (+1d) | 2012-01-31 → 2012-01-26 (-5d) | 14d → 10d |  | 115.6d → 0d |  | was named JIRA CAINT-998 -Version control (create shell study) |
| 77 | JIRA CAINT-1024 Version control (Archive) | 2012-01-31 → 2012-01-26 (-5d) | 2012-02-07 → 2012-02-02 (-5d) |  |  | 115.6d → 0d |  | was named JIRA CAINT-998 Version control (Archive) |
| 79 | JIRA CAINT-1078 TRANSCEND Permission Model Design |  | 2012-02-20 → 2012-02-06 (-14d) | 15d → 5d |  | 122d → 79.4d | 78 → 78, 48 | was named TRANSCEND Permission Model Implementation |
| 80 | JIRA CAINT-998 - TRANSCEND Permissions Support | 2012-02-23 → 2012-02-07 (-16d) | 2012-04-18 → 2012-04-02 (-16d) |  |  | 0d → 79.4d | Version 1.5 planning/priortization → 79 |  |
| 81 | JIRA CAINT-998 Automatic Refresh | 2012-02-23 → 2012-02-02 (-21d) | 2012-04-18 → 2012-03-29 (-20d) |  |  | 60d → 0d | Version 1.5 planning/priortization → 77 | resources TBH → MAX |
| 82 | JIRA CAINT-998 Single Sign-on | 2012-04-19 → 2012-03-29 (-21d) | 2012-06-13 → 2012-05-24 (-20d) |  |  |  | 80 → 81 | resources TBH → MAX |
| 83 | JIRA CAINT-49 Integrate with private studies in NBIA | 2012-04-19 → 2012-04-03 (-16d) | 2012-05-16 → 2012-04-30 (-16d) |  |  | 60d → 79.4d | 81 → 80 |  |
| 84 | JIRA CAINT-1045 Performance Requirements | 2011-08-01 → 2012-05-24 (+297d) | 2011-08-01 → 2012-06-14 (+318d) | 1d? → 15d |  | 257d → 0d | none → 82 | resources none → MAX |
| 85 | JIRA CAINT-1041 - Support NCI Funded Studies Deployment | 2012-06-14 → 2012-05-24 (-21d) | 2012-07-11 → 2012-06-21 (-20d) |  |  | 0d → 38d |  | resources TBH → TBD |
| 86 | **JIRA-CAINT-966 - Generic Platform Support** | 2011-11-30 → 2012-06-14 (+197d) | 2012-02-06 → 2012-08-14 (+190d) |  |  |  |  |  |
| 87 | Create new generic platform model by extending expression platform. | 2011-11-30 → 2012-06-14 (+197d) | 2011-12-09 → 2012-06-26 (+200d) |  |  |  | 43 → 84 |  |
| 88 | Modify the generic platform loader to accept MAGE-TAB. | 2011-12-12 → 2012-06-26 (+197d) | 2011-12-16 → 2012-07-03 (+200d) |  |  |  |  |  |
| 89 | Modify the study deployment process to load the new platform data from caArray. | 2011-12-19 → 2012-07-03 (+197d) | 2012-01-05 → 2012-07-13 (+190d) |  |  |  |  |  |
| 90 | modify front-end analysis tools to show a new title according to platform type. | 2012-01-06 → 2012-07-13 (+189d) | 2012-01-10 → 2012-07-18 (+190d) |  |  |  |  |  |
| 91 | Modify the Query interface to allow selection of a generic expression data type. | 2012-01-11 → 2012-07-18 (+189d) | 2012-01-30 → 2012-08-07 (+190d) |  |  |  |  |  |
| 92 | Modify front-end for IGV and heatmap to display a selector for choosing a generic expression data type. | 2012-01-31 → 2012-08-07 (+189d) | 2012-02-06 → 2012-08-14 (+190d) |  |  |  |  |  |
| 94 | QA | 2012-07-12 → 2012-06-14 (-28d) | 2012-08-08 → 2012-07-12 (-27d) |  |  | 0d → 3d | 85 → 84 |  |
| 95 | Documentation |  | 2012-07-25 → 2012-07-26 (+1d) |  |  | 0d → 3d | 85 → 94 |  |
| 96 | Appscan/Stage/Prod release |  | 2012-08-08 → 2012-08-09 (+1d) |  |  | 0d → 3d |  |  |

## Version 23 (saved 2012-01-19, file caintegrator_project_plan.mpp)

Last finish stays 2012-08-14.

Added:

| ID | Task | Duration | Start | Finish | Predecessors | Resources |
| --- | --- | --- | --- | --- | --- | --- |
| 78 | UAT for CAINT 1023 and 1024 | 5d | 2012-02-02 | 2012-02-09 | 77 | UCSF |

Changed:

| ID | Task | Complete | Total float |
| --- | --- | --- | --- |
| 66 | **TRANSCEND Feature implementation** | 15% → 14% | 38d → 42d |

## Version 24 (saved 2012-01-23, file caintegrator_project_plan.mpp)

Last finish 2012-08-14 → 2012-10-09 (+56d). Complete tasks 59 → 60.

Changed:

| ID | Task | Start | Finish | Duration | Complete | Total float | Predecessors |
| --- | --- | --- | --- | --- | --- | --- | --- |
| 34 | **CaIntegrator Version 1.4** |  | 2012-08-14 → 2012-10-09 (+56d) | 261.4d? → 301.4d? |  | 4d → 0d |  |
| 52 | **Ongoing maintenance and bug fixes** |  |  |  | 69% → 75% | 152.4d → 188.4d |  |
| 65 | JIRA CAINT-964 - Not able to view IGV when not logged in | 2012-01-16 A | 2012-01-18 A |  | 0% → 100% | 152.4d → none |  |
| 94 | **Release to Prod** | 2012-06-14 → 2012-08-14 (+61d) | 2012-08-09 → 2012-10-09 (+61d) |  |  | 3d → 0d |  |
| 95 | QA | 2012-06-14 → 2012-08-14 (+61d) | 2012-07-12 → 2012-09-11 (+61d) |  |  | 3d → 0d | 85 → 87 |
| 96 | Documentation | 2012-07-12 → 2012-09-11 (+61d) | 2012-07-26 → 2012-09-25 (+61d) |  |  | 3d → 0d |  |
| 97 | Appscan/Stage/Prod release | 2012-07-26 → 2012-09-25 (+61d) | 2012-08-09 → 2012-10-09 (+61d) |  |  | 3d → 0d |  |

## Version 25 (saved 2012-01-24, file caintegrator_project_plan.mpp)

Last finish 2012-10-09 → 2012-09-11 (-28d).

Added:

| ID | Task | Duration | Start | Finish | Predecessors | Constraint | Resources |
| --- | --- | --- | --- | --- | --- | --- | --- |
| 77 | **Version Control and Archive** | 20d | 2012-01-12 | 2012-02-09 |  |  |  |
| 82 | **Permission and Role base security** | 58d | 2012-01-31 | 2012-04-19 | 81 |  |  |
| 85 | UAT for role based security | 5d | 2012-04-13 | 2012-04-19 | 84 |  | UCSF |
| 86 | **Automatic Refresh with caArray** | 49.6d? | 2012-02-02 | 2012-04-11 |  |  |  |
| 87 | JIRA CAINT-1094 - Design agreement with caArray | 2d | 2012-02-02 | 2012-02-06 | 79 |  | JP; caArray |
| 89 | JIRA CAINT-1094 - caArray Team complete API | 7d | 2012-03-26 | 2012-04-03 |  | start no earlier than 2012-03-26 | caArray |
| 90 | JIRA CAINT-1094 - Integration with caArray Automatic Refresh Completion | 5d | 2012-04-04 | 2012-04-10 | 89 |  | MAX |
| 91 | UAT for Automatic Refresh | 1d? | 2012-04-11 | 2012-04-11 | 90 |  | UCSF |
| 92 | **Single Sign-On (caArray and caIntegrator)** | 57.6d | 2012-03-26 | 2012-06-13 |  |  |  |
| 94 | JIRA CAINT-1095 Single Sign-on - phase 2 (work with caArray team) | 36d | 2012-04-11 | 2012-05-30 | 90 |  | MAX |
| 95 | Integration with caArray | 5d | 2012-05-31 | 2012-06-06 | 94 |  | MAX |
| 96 | UAT for Single Sign-On (caArray and caIntegrator) | 5d | 2012-06-07 | 2012-06-13 | 95 |  | UCSF |
| 98 | **JIRA CAINT-1045 Performance Requirements** | 110d | 2012-02-06 | 2012-07-06 |  |  |  |
| 99 | Define Performance Criteria | 5d | 2012-02-06 | 2012-02-10 |  | start no earlier than 2012-02-06 | SJ |
| 100 | Conduct Stress Test and other Performance test work | 10d | 2012-02-13 | 2012-02-24 | 99 |  | TBD |
| 101 | Fix issues from Performance test | 5d | 2012-07-02 | 2012-07-06 | 100, 97 |  | MAX |
| 110 | Appscan and Prep | 7d | 2012-07-09 | 2012-07-17 | 102, 98, 67 |  | Systems |

Removed: 85 JIRA CAINT-1045 Performance Requirements

Changed:

| ID | Task | Start | Finish | Duration | Complete | Total float | Predecessors | Other |
| --- | --- | --- | --- | --- | --- | --- | --- | --- |
| 34 | **CaIntegrator Version 1.4** |  | 2012-10-09 → 2012-09-11 (-28d) | 301.4d? → 282d? | 34% → 32% |  |  |  |
| 36 | **JIRA CAINT-1015 Tech Stack Upgrade** |  |  |  | 92% → 87% | 176.4d → 157d |  |  |
| 49 | Tech Stack upgrade to QA |  | 2012-01-17 → 2012-01-25 (+8d) | 3d → 9d |  | 153.4d → 105.4d |  |  |
| 52 | **Ongoing maintenance and bug fixes** |  | 2012-01-18 → 2012-05-01 (+104d) | 112d? → 186d? | 75% → 73% | 188.4d → 95d |  |  |
| 66 | JIRA CAINT-1041 - Support NCI Funded Studies Deployment | 2012-05-24 → 2012-05-01 (-23d) | 2012-06-21 → 2012-05-01 (-51d) | 20d → 1d |  | 78d → 84d | 93 → none | constraint none → start no earlier than 2012-05-01; resources TBD → none |
| 67 | **TRANSCEND Feature implementation** |  | 2012-06-21 → 2012-06-29 (+8d) | 163.4d? → 170d? |  | 78d → 5d |  |  |
| 80 | UAT forVersion Control and Archive |  |  |  |  | 133d → 106.6d |  | was named UAT for CAINT 1023 and 1024 |
| 83 | JIRA CAINT-1078 TRANSCEND - authorization user story CSM investigation |  |  |  |  | 79.4d → 18d | 81, 48 → 48 | was named JIRA CAINT-1078 TRANSCEND Permission Model Design |
| 84 | JIRA CAINT-1093 - Implementation:Role based security in caIntegrator to support TRANSCEND |  | 2012-04-02 → 2012-04-12 (+10d) | 40d → 48d |  | 79.4d → 18d | 83 → 83, 51 | was named JIRA CAINT-998 - TRANSCEND Permissions Support |
| 88 | JIRA CAINT-1094 - Implementation: Automatic Refresh with caArray | 2012-02-02 → 2012-02-06 (+4d) | 2012-03-29 → 2012-03-26 (-3d) | 40d → 35d |  | 0d → 66.6d | 79 → 87 | was named JIRA CAINT-998 Automatic Refresh |
| 93 | JIRA CAINT-1095 Single Sign-on - phase 1 | 2012-03-29 → 2012-03-26 (-3d) | 2012-05-24 → 2012-04-05 (-49d) | 40d → 8d |  | 0d → 66.6d |  | was named JIRA CAINT-998 Single Sign-on |
| 97 | JIRA CAINT-49 Integrate with private studies in NBIA | 2012-04-03 → 2012-05-31 (+58d) | 2012-04-30 → 2012-06-29 (+60d) | 20d → 22d |  | 79.4d → 0d | 84 → 94 | resources JP → MAX |
| 102 | **JIRA-CAINT-966 - Generic Platform Support** | 2012-06-14 → 2012-04-13 (-62d) | 2012-08-14 → 2012-06-12 (-63d) |  |  | 0d → 18d |  |  |
| 103 | Create new generic platform model by extending expression platform. | 2012-06-14 → 2012-04-13 (-62d) | 2012-06-26 → 2012-04-24 (-63d) |  |  | 0d → 18d | JIRA CAINT-1045 Performance Requirements → 84 |  |
| 104 | Modify the generic platform loader to accept MAGE-TAB. | 2012-06-26 → 2012-04-25 (-62d) | 2012-07-03 → 2012-05-01 (-63d) |  |  | 0d → 18d |  |  |
| 105 | Modify the study deployment process to load the new platform data from caArray. | 2012-07-03 → 2012-05-02 (-62d) | 2012-07-13 → 2012-05-11 (-63d) |  |  | 0d → 18d |  |  |
| 106 | modify front-end analysis tools to show a new title according to platform type. | 2012-07-13 → 2012-05-14 (-60d) | 2012-07-18 → 2012-05-16 (-63d) |  |  | 0d → 18d |  |  |
| 107 | Modify the Query interface to allow selection of a generic expression data type. | 2012-07-18 → 2012-05-17 (-62d) | 2012-08-07 → 2012-06-05 (-63d) |  |  | 0d → 18d |  |  |
| 108 | Modify front-end for IGV and heatmap to display a selector for choosing a generic expression data type. | 2012-08-07 → 2012-06-06 (-62d) | 2012-08-14 → 2012-06-12 (-63d) |  |  | 0d → 18d |  |  |
| 109 | **Release to Prod (1.4)** | 2012-08-14 → 2012-07-09 (-36d) | 2012-10-09 → 2012-09-11 (-28d) | 40d → 47d |  |  |  | was named Release to Prod |
| 111 | QA | 2012-08-14 → 2012-07-18 (-27d) | 2012-09-11 → 2012-08-14 (-28d) |  |  |  | 102 → 110 | resources none → HS |
| 112 | Documentation | 2012-09-11 → 2012-08-15 (-27d) | 2012-09-25 → 2012-08-28 (-28d) |  |  |  |  | resources none → JH |
| 113 | Appscan/Stage/Prod release | 2012-09-25 → 2012-08-29 (-27d) | 2012-10-09 → 2012-09-11 (-28d) |  |  |  |  | resources none → Systems |

## Version 26 (saved 2012-01-30, file caintegrator_project_plan_with_2_rel.mpp)

Last finish 2012-09-11 → 2012-09-21 (+10d).

Added:

| ID | Task | Duration | Start | Finish | Predecessors | Constraint | Resources |
| --- | --- | --- | --- | --- | --- | --- | --- |
| 52 | Test QA tier | 4d | 2012-02-10 | 2012-02-15 | 51 |  | HS |
| 81 | QA - Version Control & Archive | 5d | 2012-02-02 | 2012-02-09 | 80 |  | HS |
| 83 | **Prep for Release (1.4)** | 14d? | 2012-02-16 | 2012-03-06 |  |  |  |
| 84 | Bug fixes, Documentation to Wiki | 4d | 2012-02-16 | 2012-02-21 | 78, 52 |  | JP |
| 85 | Appscan on Dev | 2d | 2012-02-22 | 2012-02-23 | 84 |  | Systems |
| 86 | Fix Any issues from Appscan | 5d | 2012-02-24 | 2012-03-01 | 85 |  | JP |
| 87 | 508 compliance check | 3d | 2012-03-02 | 2012-03-06 | 86 |  | JP |
| 88 | Documentation Updates | 10d | 2012-02-22 | 2012-03-06 | 84 |  | JH |
| 89 | Prep: Announcements and other updates (landing page etc) | 1d | 2012-02-24 | 2012-02-24 | 85 |  | SJ |
| 90 | Release Notes | 1d? | 2012-02-24 | 2012-02-24 | 85 |  | SJ |
| 91 | QA | 20d | 2012-03-07 | 2012-04-03 | 83 |  | HS |
| 92 | Appscan/Stage/Prod release | 10d | 2012-04-04 | 2012-04-17 | 91 |  | Systems |
| 97 | Sample Data Set from UCSF | 2d | 2012-02-20 | 2012-02-21 |  | start no earlier than 2012-02-20 | UCSF |
| 98 | QA - Permission and Role based security | 10d | 2012-05-14 | 2012-05-25 | 96 |  | HS |
| 105 | QA - Automatic Refresh with caArray | 5d | 2012-04-11 | 2012-04-17 | 104 |  | HS |
| 111 | QA -Single Sign-On (caArray and caIntegrator) | 5d | 2012-06-07 | 2012-06-13 | 110 |  |  |
| 121 | QA - Generic Platform | 5d | 2012-07-12 | 2012-07-18 | 120 |  | HS |
| 127 | **Prep for Release** | 17d? | 2012-07-19 | 2012-08-10 |  |  |  |
| 128 | Appscan on Dev | 2d | 2012-07-26 | 2012-07-27 | 114, 122 |  | Systems |
| 129 | Fix Any issues from Appscan | 5d | 2012-07-30 | 2012-08-03 | 128 |  | JP |
| 130 | 508 compliance check | 3d | 2012-07-30 | 2012-08-01 | 128 |  | MAX |
| 131 | Documentation Updates | 10d | 2012-07-30 | 2012-08-10 | 128 |  | JH |
| 132 | Prep: Announcements and other updates (landing page etc) | 1d | 2012-07-19 | 2012-07-19 | 121 |  | SJ |
| 133 | Release Notes | 1d? | 2012-07-19 | 2012-07-19 | 121 |  | SJ |

Removed: 110 Appscan and Prep; 112 Documentation

Changed:

| ID | Task | Start | Finish | Duration | Complete | Total float | Predecessors | Other |
| --- | --- | --- | --- | --- | --- | --- | --- | --- |
| 34 | **CaIntegrator Version 1.4** |  | 2012-09-11 → 2012-09-21 (+10d) | 282d? → 290d? | 32% → 26% |  |  |  |
| 36 | **JIRA CAINT-1015 Tech Stack Upgrade** |  | 2012-02-03 → 2012-02-15 (+12d) | 123d? → 131d? | 87% → 83% |  |  |  |
| 51 | JIRA CAINT(1085) Phase -2 Add UPT deployment config and instructions to the DEV/QA/tiers PTE. | 2012-02-01 → 2012-02-07 (+6d) | 2012-02-03 → 2012-02-09 (+6d) |  |  | 98.4d → 0d | 50 → 50, 95 |  |
| 68 | **TRANSCEND Feature implementation** |  |  |  | 14% → 11% | 5d → 60d |  |  |
| 94 | **Permission and Role base security** |  | 2012-04-19 → 2012-05-25 (+36d) | 58d → 84d |  | 18d → 0d |  |  |
| 96 | JIRA CAINT-1093 - Implementation:Role based security in caIntegrator to support TRANSCEND | 2012-02-07 → 2012-03-07 (+29d) | 2012-04-12 → 2012-05-11 (+29d) |  |  | 18d → 0d | 95, 51 → 95, 51, 83 |  |
| 99 | UAT for role based security | 2012-04-13 → 2012-05-14 (+31d) | 2012-04-19 → 2012-05-18 (+29d) |  |  | 56d → 90d |  |  |
| 100 | **Automatic Refresh with caArray** |  | 2012-04-11 → 2012-04-17 (+6d) | 49.6d? → 53.6d? |  | 36.6d → 96.6d |  |  |
| 114 | **JIRA-CAINT-966 - Generic Platform Support** | 2012-04-13 → 2012-05-14 (+31d) | 2012-06-12 → 2012-07-18 (+36d) | 43d → 48d |  | 18d → 0d |  |  |
| 115 | Create new generic platform model by extending expression platform. | 2012-04-13 → 2012-05-14 (+31d) | 2012-04-24 → 2012-05-23 (+29d) |  |  | 18d → 0d |  |  |
| 116 | Modify the generic platform loader to accept MAGE-TAB. | 2012-04-25 → 2012-05-24 (+29d) | 2012-05-01 → 2012-05-30 (+29d) |  |  | 18d → 0d |  |  |
| 117 | Modify the study deployment process to load the new platform data from caArray. | 2012-05-02 → 2012-05-31 (+29d) | 2012-05-11 → 2012-06-11 (+31d) |  |  | 18d → 0d |  |  |
| 118 | modify front-end analysis tools to show a new title according to platform type. | 2012-05-14 → 2012-06-12 (+29d) | 2012-05-16 → 2012-06-14 (+29d) |  |  | 18d → 0d |  |  |
| 119 | Modify the Query interface to allow selection of a generic expression data type. | 2012-05-17 → 2012-06-15 (+29d) | 2012-06-05 → 2012-07-04 (+29d) |  |  | 18d → 0d |  |  |
| 120 | Modify front-end for IGV and heatmap to display a selector for choosing a generic expression data type. | 2012-06-06 → 2012-07-05 (+29d) | 2012-06-12 → 2012-07-11 (+29d) |  |  | 18d → 0d |  |  |
| 122 | **JIRA CAINT-1045 Performance Requirements** |  | 2012-07-06 → 2012-07-25 (+19d) | 110d → 123d |  |  |  |  |
| 125 | Fix issues from Performance test | 2012-07-02 → 2012-07-12 (+10d) | 2012-07-06 → 2012-07-25 (+19d) | 5d → 10d |  |  | 124, 113 → 124, 120 | resources MAX → JP |
| 126 | **Release to Prod (1.5)** | 2012-07-09 → 2012-07-19 (+10d) | 2012-09-11 → 2012-09-21 (+10d) | 47d → 47d? |  |  |  | was named Release to Prod (1.4) |
| 134 | QA | 2012-07-18 → 2012-08-13 (+26d) | 2012-08-14 → 2012-09-07 (+24d) |  |  |  | Appscan and Prep → 127 |  |
| 135 | Appscan/Stage/Prod release | 2012-08-29 → 2012-09-10 (+12d) | 2012-09-11 → 2012-09-21 (+10d) |  |  |  | Documentation → 134 |  |

## Version 27 (saved 2012-01-30, file caintegrator_project_plan.mpp)

Last finish 2012-09-21 → 2012-08-28 (-24d). Complete tasks 60 → 62.

Added:

| ID | Task | Duration | Start | Finish | Predecessors | Resources |
| --- | --- | --- | --- | --- | --- | --- |
| 50 | Fix the issues with tech stack upgrade on QA | 3d | 2012-01-26 | 2012-01-30 | 49 |  |
| 81 | Bugs from 1023 | 2d | 2012-01-26 | 2012-01-30 | 80 | MAX |

Removed: 83 Prep for Release (1.4); 84 Bug fixes, Documentation to Wiki; 85 Appscan on Dev; 86 Fix Any issues from Appscan; 87 508 compliance check; 88 Documentation Updates; 89 Prep: Announcements and other updates (landing page etc); 90 Release Notes; 91 QA; 92 Appscan/Stage/Prod release

Changed:

| ID | Task | Start | Finish | Duration | Complete | Total float | Predecessors | Other |
| --- | --- | --- | --- | --- | --- | --- | --- | --- |
| 34 | **CaIntegrator Version 1.4** |  | 2012-09-21 → 2012-08-28 (-24d) | 290d? → 272d? | 26% → 32% |  |  |  |
| 36 | **JIRA CAINT-1015 Tech Stack Upgrade** |  |  |  | 83% → 90% | 157d → 139d |  |  |
| 49 | Tech Stack upgrade to QA | 2012-01-13 A | 2012-01-25 A |  | 0% → 100% | 172d → none |  |  |
| 69 | **TRANSCEND Feature implementation** |  |  |  | 11% → 16% | 60d → 42d |  |  |
| 79 | **Version Control and Archive** | 2012-01-12 A | 2012-02-09 → 2012-02-13 (+4d) | 20d → 22d | 0% → 37% | 4.6d → 138.6d |  |  |
| 80 | JIRA CAINT-1023 -Version control (create shell study) | 2012-01-12 A | 2012-01-26 A |  | 0% → 100% | 4.6d → none |  |  |
| 82 | JIRA CAINT-1024 Version control (Archive) | 2012-01-26 → 2012-01-30 (+4d) | 2012-02-02 → 2012-02-06 (+4d) |  |  | 4.6d → 98.6d | 80 → 81 |  |
| 83 | QA - Version Control & Archive | 2012-02-02 → 2012-02-06 (+4d) | 2012-02-09 → 2012-02-13 (+4d) |  |  | 4.6d → 138.6d |  |  |
| 84 | UAT forVersion Control and Archive | 2012-02-02 → 2012-02-06 (+4d) | 2012-02-09 → 2012-02-13 (+4d) |  |  | 4.6d → 138.6d |  |  |
| 86 | **Permission and Role base security** |  | 2012-05-25 → 2012-05-01 (-24d) | 84d → 66d |  |  |  |  |
| 88 | JIRA CAINT-1093 - Implementation:Role based security in caIntegrator to support TRANSCEND | 2012-03-07 → 2012-02-10 (-26d) | 2012-05-11 → 2012-04-17 (-24d) |  |  |  | 87, 52, Prep for Release (1.4) → 87, 52 |  |
| 90 | QA - Permission and Role based security | 2012-05-14 → 2012-04-18 (-26d) | 2012-05-25 → 2012-05-01 (-24d) |  |  |  |  |  |
| 91 | UAT for role based security | 2012-05-14 → 2012-04-18 (-26d) | 2012-05-18 → 2012-04-24 (-24d) |  |  |  |  |  |
| 92 | **Automatic Refresh with caArray** | 2012-02-02 → 2012-02-06 (+4d) |  | 53.6d? → 51.6d? |  | 96.6d → 76.6d |  |  |
| 93 | JIRA CAINT-1094 - Design agreement with caArray | 2012-02-02 → 2012-02-06 (+4d) | 2012-02-06 → 2012-02-08 (+2d) |  |  | 121.6d → 98.6d |  |  |
| 94 | JIRA CAINT-1094 - Implementation: Automatic Refresh with caArray | 2012-02-06 → 2012-02-08 (+2d) | 2012-03-26 → 2012-03-28 (+2d) |  |  | 121.6d → 98.6d |  |  |
| 99 | **Single Sign-On (caArray and caIntegrator)** | 2012-03-26 → 2012-03-28 (+2d) |  | 57.6d → 55.6d |  | 71.6d → 48.6d |  |  |
| 100 | JIRA CAINT-1095 Single Sign-on - phase 1 | 2012-03-26 → 2012-03-28 (+2d) | 2012-04-05 → 2012-04-09 (+4d) |  |  | 121.6d → 98.6d |  |  |
| 106 | **JIRA-CAINT-966 - Generic Platform Support** | 2012-05-14 → 2012-04-18 (-26d) | 2012-07-18 → 2012-06-22 (-26d) |  |  |  |  |  |
| 107 | Create new generic platform model by extending expression platform. | 2012-05-14 → 2012-04-18 (-26d) | 2012-05-23 → 2012-04-27 (-26d) |  |  |  |  |  |
| 108 | Modify the generic platform loader to accept MAGE-TAB. | 2012-05-24 → 2012-04-30 (-24d) | 2012-05-30 → 2012-05-04 (-26d) |  |  |  |  |  |
| 109 | Modify the study deployment process to load the new platform data from caArray. | 2012-05-31 → 2012-05-07 (-24d) | 2012-06-11 → 2012-05-16 (-26d) |  |  |  |  |  |
| 110 | modify front-end analysis tools to show a new title according to platform type. | 2012-06-12 → 2012-05-17 (-26d) | 2012-06-14 → 2012-05-21 (-24d) |  |  |  |  |  |
| 111 | Modify the Query interface to allow selection of a generic expression data type. | 2012-06-15 → 2012-05-22 (-24d) | 2012-07-04 → 2012-06-08 (-26d) |  |  |  |  |  |
| 112 | Modify front-end for IGV and heatmap to display a selector for choosing a generic expression data type. | 2012-07-05 → 2012-06-11 (-24d) | 2012-07-11 → 2012-06-15 (-26d) |  |  |  |  |  |
| 113 | QA - Generic Platform | 2012-07-12 → 2012-06-18 (-24d) | 2012-07-18 → 2012-06-22 (-26d) |  |  |  |  |  |
| 114 | **JIRA CAINT-1045 Performance Requirements** |  | 2012-07-25 → 2012-06-29 (-26d) | 123d → 105d |  |  |  |  |
| 117 | Fix issues from Performance test | 2012-07-12 → 2012-06-18 (-24d) | 2012-07-25 → 2012-06-29 (-26d) |  |  |  |  |  |
| 118 | **Release to Prod (1.4)** | 2012-07-19 → 2012-06-25 (-24d) | 2012-09-21 → 2012-08-28 (-24d) |  |  |  |  | was named Release to Prod (1.5) |
| 119 | **Prep for Release** | 2012-07-19 → 2012-06-25 (-24d) | 2012-08-10 → 2012-07-17 (-24d) |  |  |  |  |  |
| 120 | Appscan on Dev | 2012-07-26 → 2012-07-02 (-24d) | 2012-07-27 → 2012-07-03 (-24d) |  |  |  |  |  |
| 121 | Fix Any issues from Appscan | 2012-07-30 → 2012-07-04 (-26d) | 2012-08-03 → 2012-07-10 (-24d) |  |  |  |  |  |
| 122 | 508 compliance check | 2012-07-30 → 2012-07-04 (-26d) | 2012-08-01 → 2012-07-06 (-26d) |  |  |  |  |  |
| 123 | Documentation Updates | 2012-07-30 → 2012-07-04 (-26d) | 2012-08-10 → 2012-07-17 (-24d) |  |  |  |  |  |
| 124 | Prep: Announcements and other updates (landing page etc) | 2012-07-19 → 2012-06-25 (-24d) | 2012-07-19 → 2012-06-25 (-24d) |  |  |  |  |  |
| 125 | Release Notes | 2012-07-19 → 2012-06-25 (-24d) | 2012-07-19 → 2012-06-25 (-24d) |  |  |  |  |  |
| 126 | QA | 2012-08-13 → 2012-07-18 (-26d) | 2012-09-07 → 2012-08-14 (-24d) |  |  |  |  |  |
| 127 | Appscan/Stage/Prod release | 2012-09-10 → 2012-08-15 (-26d) | 2012-09-21 → 2012-08-28 (-24d) |  |  |  |  |  |

## Version 28 (saved 2012-01-31, file caintegrator_project_plan.mpp)

Last finish 2012-08-28 → 2012-08-29 (+1d). Complete tasks 62 → 63.

Added:

| ID | Task | Duration | Start | Finish | Predecessors | Resources |
| --- | --- | --- | --- | --- | --- | --- |
| 51 | JIRA CAINT-1096 - FileSystem Update | 4d | 2012-01-30 | 2012-02-02 | 50 | Systems |

Changed:

| ID | Task | Start | Finish | Duration | Complete | Total float | Predecessors | Other |
| --- | --- | --- | --- | --- | --- | --- | --- | --- |
| 34 | **CaIntegrator Version 1.4** |  | 2012-08-28 → 2012-08-29 (+1d) | 272d? → 273d? | 32% → 33% |  |  |  |
| 36 | **JIRA CAINT-1015 Tech Stack Upgrade** |  | 2012-02-15 → 2012-02-16 (+1d) | 131d? → 132d? | 90% → 89% |  |  |  |
| 49 | Tech Stack upgrade to QA |  | 2012-01-25 A → 2012-01-30 A (+5d) | 9d → 12d |  |  |  |  |
| 50 | Fix the issues with tech stack upgrade on QA | 2012-01-26 A | 2012-01-30 → 2012-01-27 A (-3d) | 3d → 2d | 0% → 100% | 148d → none |  |  |
| 53 | JIRA CAINT(1085) Phase -2 Add UPT deployment config and instructions to the DEV/QA/tiers PTE. | 2012-02-07 → 2012-02-08 (+1d) | 2012-02-09 → 2012-02-10 (+1d) |  |  |  |  |  |
| 54 | Test QA tier | 2012-02-10 → 2012-02-13 (+3d) | 2012-02-15 → 2012-02-16 (+1d) |  |  |  | 53 → 53, 51 |  |
| 80 | **Version Control and Archive** |  | 2012-02-13 → 2012-02-14 (+1d) | 22d → 23d | 37% → 36% | 138.6d → 141.6d |  |  |
| 82 | Issues with JIRA 1023 |  | 2012-01-30 → 2012-01-31 (+1d) | 2d → 3d |  | 98.6d → 101.6d |  | was named Bugs from 1023 |
| 83 | JIRA CAINT-1024 Version control (Archive) | 2012-01-30 → 2012-01-31 (+1d) | 2012-02-06 → 2012-02-07 (+1d) |  |  | 98.6d → 101.6d |  |  |
| 84 | QA - Version Control & Archive | 2012-02-06 → 2012-02-07 (+1d) | 2012-02-13 → 2012-02-14 (+1d) |  |  | 138.6d → 141.6d |  |  |
| 85 | UAT forVersion Control and Archive | 2012-02-06 → 2012-02-07 (+1d) | 2012-02-13 → 2012-02-14 (+1d) |  |  | 138.6d → 141.6d |  |  |
| 86 | Finalize Architecture for permission model | 2012-01-30 → 2012-01-31 (+1d) | 2012-01-30 → 2012-01-31 (+1d) |  |  |  |  | constraint start no earlier than 2012-01-30 → start no earlier than 2012-01-31 |
| 87 | **Permission and Role base security** | 2012-01-31 → 2012-02-01 (+1d) | 2012-05-01 → 2012-05-02 (+1d) |  |  |  |  |  |
| 88 | JIRA CAINT-1078 TRANSCEND - authorization user story CSM investigation | 2012-01-31 → 2012-02-01 (+1d) | 2012-02-06 → 2012-02-07 (+1d) |  |  |  |  |  |
| 89 | JIRA CAINT-1093 - Implementation:Role based security in caIntegrator to support TRANSCEND | 2012-02-10 → 2012-02-13 (+3d) | 2012-04-17 → 2012-04-18 (+1d) |  |  |  |  |  |
| 91 | QA - Permission and Role based security | 2012-04-18 → 2012-04-19 (+1d) | 2012-05-01 → 2012-05-02 (+1d) |  |  |  |  |  |
| 92 | UAT for role based security | 2012-04-18 → 2012-04-19 (+1d) | 2012-04-24 → 2012-04-25 (+1d) |  |  |  |  |  |
| 93 | **Automatic Refresh with caArray** | 2012-02-06 → 2012-02-07 (+1d) |  | 51.6d? → 50.6d? |  |  |  |  |
| 94 | JIRA CAINT-1094 - Design agreement with caArray | 2012-02-06 → 2012-02-07 (+1d) | 2012-02-08 → 2012-02-09 (+1d) |  |  | 98.6d → 101.6d |  |  |
| 95 | JIRA CAINT-1094 - Implementation: Automatic Refresh with caArray | 2012-02-08 → 2012-02-09 (+1d) | 2012-03-28 → 2012-03-29 (+1d) |  |  | 98.6d → 101.6d |  |  |
| 100 | **Single Sign-On (caArray and caIntegrator)** | 2012-03-28 → 2012-03-29 (+1d) |  | 55.6d → 54.6d |  | 48.6d → 51.6d |  |  |
| 101 | JIRA CAINT-1095 Single Sign-on - phase 1 | 2012-03-28 → 2012-03-29 (+1d) | 2012-04-09 → 2012-04-10 (+1d) |  |  | 98.6d → 101.6d |  |  |
| 107 | **JIRA-CAINT-966 - Generic Platform Support** | 2012-04-18 → 2012-04-19 (+1d) | 2012-06-22 → 2012-06-25 (+3d) |  |  |  |  |  |
| 108 | Create new generic platform model by extending expression platform. | 2012-04-18 → 2012-04-19 (+1d) | 2012-04-27 → 2012-04-30 (+3d) |  |  |  |  |  |
| 109 | Modify the generic platform loader to accept MAGE-TAB. | 2012-04-30 → 2012-05-01 (+1d) | 2012-05-04 → 2012-05-07 (+3d) |  |  |  |  |  |
| 110 | Modify the study deployment process to load the new platform data from caArray. | 2012-05-07 → 2012-05-08 (+1d) | 2012-05-16 → 2012-05-17 (+1d) |  |  |  |  |  |
| 111 | modify front-end analysis tools to show a new title according to platform type. | 2012-05-17 → 2012-05-18 (+1d) | 2012-05-21 → 2012-05-22 (+1d) |  |  |  |  |  |
| 112 | Modify the Query interface to allow selection of a generic expression data type. | 2012-05-22 → 2012-05-23 (+1d) | 2012-06-08 → 2012-06-11 (+3d) |  |  |  |  |  |
| 113 | Modify front-end for IGV and heatmap to display a selector for choosing a generic expression data type. | 2012-06-11 → 2012-06-12 (+1d) | 2012-06-15 → 2012-06-18 (+3d) |  |  |  |  |  |
| 114 | QA - Generic Platform | 2012-06-18 → 2012-06-19 (+1d) | 2012-06-22 → 2012-06-25 (+3d) |  |  |  |  |  |
| 115 | **JIRA CAINT-1045 Performance Requirements** |  | 2012-06-29 → 2012-07-02 (+3d) | 105d → 106d |  |  |  |  |
| 118 | Fix issues from Performance test | 2012-06-18 → 2012-06-19 (+1d) | 2012-06-29 → 2012-07-02 (+3d) |  |  |  |  |  |
| 119 | **Release to Prod (1.4)** | 2012-06-25 → 2012-06-26 (+1d) | 2012-08-28 → 2012-08-29 (+1d) |  |  |  |  |  |
| 120 | **Prep for Release** | 2012-06-25 → 2012-06-26 (+1d) | 2012-07-17 → 2012-07-18 (+1d) |  |  |  |  |  |
| 121 | Appscan on Dev | 2012-07-02 → 2012-07-03 (+1d) | 2012-07-03 → 2012-07-04 (+1d) |  |  |  |  |  |
| 122 | Fix Any issues from Appscan | 2012-07-04 → 2012-07-05 (+1d) | 2012-07-10 → 2012-07-11 (+1d) |  |  |  |  |  |
| 123 | 508 compliance check | 2012-07-04 → 2012-07-05 (+1d) | 2012-07-06 → 2012-07-09 (+3d) |  |  |  |  |  |
| 124 | Documentation Updates | 2012-07-04 → 2012-07-05 (+1d) | 2012-07-17 → 2012-07-18 (+1d) |  |  |  |  |  |
| 125 | Prep: Announcements and other updates (landing page etc) | 2012-06-25 → 2012-06-26 (+1d) | 2012-06-25 → 2012-06-26 (+1d) |  |  |  |  |  |
| 126 | Release Notes | 2012-06-25 → 2012-06-26 (+1d) | 2012-06-25 → 2012-06-26 (+1d) |  |  |  |  |  |
| 127 | QA | 2012-07-18 → 2012-07-19 (+1d) | 2012-08-14 → 2012-08-15 (+1d) |  |  |  |  |  |
| 128 | Appscan/Stage/Prod release | 2012-08-15 → 2012-08-16 (+1d) | 2012-08-28 → 2012-08-29 (+1d) |  |  |  |  |  |

## Version 29 (saved 2012-02-06, file caintegrator_project_plan_revised.mpp)

Last finish 2012-08-29 → 2012-07-17 (-43d). Complete tasks 63 → 62.

Added:

| ID | Task | Duration | Start | Finish | Constraint | Resources |
| --- | --- | --- | --- | --- | --- | --- |
| 100 | CBIIT Installation of CAS/open LDAP | 1d? | 2012-04-02 | 2012-04-02 | start no earlier than 2012-04-02 | system |

Removed: 51 JIRA CAINT-1096 - FileSystem Update; 102 JIRA CAINT-1095 Single Sign-on - phase 2 (work with caArray team); 106 JIRA CAINT-49 Integrate with private studies in NBIA; 107 JIRA-CAINT-966 - Generic Platform Support; 108 Create new generic platform model by extending expression platform.; 109 Modify the generic platform loader to accept MAGE-TAB.; 110 Modify the study deployment process to load the new platform data from caArray.; 111 modify front-end analysis tools to show a new title according to platform type.; 112 Modify the Query interface to allow selection of a generic expression data type.; 113 Modify front-end for IGV and heatmap to display a selector for choosing a generic expression data type.; 114 QA - Generic Platform

Changed:

| ID | Task | Start | Finish | Duration | Complete | Total float | Predecessors | Other |
| --- | --- | --- | --- | --- | --- | --- | --- | --- |
| 34 | **CaIntegrator Version 1.4** |  | 2012-08-29 → 2012-07-17 (-43d) | 273d? → 242d? | 33% → 40% |  |  |  |
| 36 | **JIRA CAINT-1015 Tech Stack Upgrade** |  | 2012-02-16 → 2012-02-17 (+1d) | 132d? → 133d? | 89% → 92% | 139d → 107d |  |  |
| 49 | Tech Stack upgrade to QA |  | 2012-01-30 A → 2012-01-25 A (-5d) | 12d → 9d |  |  |  |  |
| 50 | Fix the issues with tech stack upgrade on QA |  | 2012-01-27 A → 2012-01-30 A (+3d) | 2d → 3d |  |  |  |  |
| 51 | UPT Upgrade to JBOSS 5.0 | 2012-01-31 → 2012-02-08 (+8d) | 2012-01-31 → 2012-02-08 (+8d) |  |  | 5d → 4d |  | constraint start no earlier than 2012-01-31 → start no earlier than 2012-02-08 |
| 52 | JIRA CAINT(1085) Phase -2 Add UPT deployment config and instructions to the DEV/QA/tiers PTE. | 2012-02-08 → 2012-02-09 (+1d) | 2012-02-10 → 2012-02-13 (+3d) |  |  | 0d → 4d |  |  |
| 53 | Test QA tier | 2012-02-13 → 2012-02-14 (+1d) | 2012-02-16 → 2012-02-17 (+1d) |  |  | 139d → 146d | 52, JIRA CAINT-1096 - FileSystem Update → 52 |  |
| 69 | **TRANSCEND Feature implementation** |  | 2012-06-29 → 2012-05-14 (-46d) | 170d? → 136d? | 16% → 20% | 43d → 4d |  |  |
| 79 | **Version Control and Archive** |  | 2012-02-14 → 2012-02-23 (+9d) | 23d → 30d | 36% → 29% | 141.6d → 61.6d |  |  |
| 80 | JIRA CAINT-1023 -Version control (create shell study) |  | 2012-01-26 A → 2012-01-27 (+1d) | 10d → 11d | 100% → 91% | none → 6.6d |  |  |
| 81 | Bugs from 1023 - 1098 | 2012-01-26 → 2012-01-27 (+1d) | 2012-01-31 → 2012-02-07 (+7d) | 3d → 7d |  | 101.6d → 6.6d |  | was named Issues with JIRA 1023 |
| 82 | JIRA CAINT-1024 Version control (Archive) | 2012-01-31 → 2012-02-07 (+7d) | 2012-02-07 → 2012-02-16 (+9d) | 5d → 7d |  | 101.6d → 6.6d |  |  |
| 83 | QA - Version Control & Archive | 2012-02-07 → 2012-02-16 (+9d) | 2012-02-14 → 2012-02-23 (+9d) |  |  | 141.6d → 61.6d |  |  |
| 84 | UAT forVersion Control and Archive | 2012-02-07 → 2012-02-16 (+9d) | 2012-02-14 → 2012-02-23 (+9d) |  |  | 141.6d → 61.6d |  |  |
| 85 | Finalize Architecture for permission model | 2012-01-31 → 2012-02-01 (+1d) | 2012-01-31 → 2012-02-01 (+1d) |  |  | 0d → 4d |  | constraint start no earlier than 2012-01-31 → start no earlier than 2012-02-01 |
| 86 | **Permission and Role base security** | 2012-02-01 → 2012-02-02 (+1d) | 2012-05-02 → 2012-05-14 (+12d) | 66d → 73d |  | 0d → 4d |  |  |
| 87 | JIRA CAINT-1078 TRANSCEND - authorization user story CSM investigation | 2012-02-01 → 2012-02-02 (+1d) | 2012-02-07 → 2012-02-08 (+1d) |  |  | 0d → 4d |  |  |
| 88 | JIRA CAINT-1093 - Implementation:Role based security in caIntegrator to support TRANSCEND | 2012-02-13 → 2012-02-14 (+1d) | 2012-04-18 → 2012-04-30 (+12d) | 48d → 55d |  | 0d → 4d |  |  |
| 90 | QA - Permission and Role based security | 2012-04-19 → 2012-05-01 (+12d) | 2012-05-02 → 2012-05-14 (+12d) |  |  |  |  |  |
| 91 | UAT for role based security | 2012-04-19 → 2012-05-01 (+12d) | 2012-04-25 → 2012-05-07 (+12d) |  |  |  |  |  |
| 92 | **Automatic Refresh with caArray** | 2012-02-07 → 2012-02-16 (+9d) | 2012-04-17 → 2012-04-23 (+6d) | 50.6d? → 47d? |  | 76.6d → 6.6d |  |  |
| 93 | JIRA CAINT-1094 - Design agreement with caArray | 2012-02-07 → 2012-02-16 (+9d) | 2012-02-09 → 2012-02-20 (+11d) |  |  | 101.6d → 6.6d |  |  |
| 94 | JIRA CAINT-1094 - Implementation: Automatic Refresh with caArray | 2012-02-09 → 2012-02-20 (+11d) | 2012-03-29 → 2012-04-09 (+11d) |  |  | 101.6d → 6.6d |  |  |
| 95 | JIRA CAINT-1094 - caArray Team complete API | 2012-03-26 → 2012-04-03 (+8d) |  | 7d → 1d |  | 43d → 10d |  | constraint start no earlier than 2012-03-26 → start no earlier than 2012-04-03 |
| 96 | JIRA CAINT-1094 - Integration with caArray Automatic Refresh Completion | 2012-04-04 → 2012-04-09 (+5d) | 2012-04-10 → 2012-04-16 (+6d) |  |  | 43d → 6.6d | 95 → 95, 94 |  |
| 97 | QA - Automatic Refresh with caArray | 2012-04-11 → 2012-04-16 (+5d) | 2012-04-17 → 2012-04-23 (+6d) |  |  | 96d → 19.6d |  |  |
| 98 | UAT for Automatic Refresh | 2012-04-11 → 2012-04-16 (+5d) | 2012-04-11 → 2012-04-17 (+6d) |  |  | 100d → 23.6d |  |  |
| 99 | **Single Sign-On (caArray and caIntegrator)** | 2012-03-29 → 2012-04-02 (+4d) | 2012-06-13 → 2012-05-10 (-34d) | 54.6d → 28.4d? |  | 51.6d → 6.6d |  |  |
| 101 | JIRA CAINT-1095 Single Sign-on | 2012-03-29 → 2012-04-16 (+18d) | 2012-04-10 → 2012-04-26 (+16d) |  |  | 101.6d → 6.6d | 94 → 96 | was named JIRA CAINT-1095 Single Sign-on - phase 1 |
| 102 | Integration with caArray | 2012-05-31 → 2012-04-26 (-35d) | 2012-06-06 → 2012-05-03 (-34d) |  |  | 55d → 6.6d | JIRA CAINT-1095 Single Sign-on - phase 2 (work with caArray team) → 101 |  |
| 103 | QA -Single Sign-On (caArray and caIntegrator) | 2012-06-07 → 2012-05-03 (-35d) | 2012-06-13 → 2012-05-10 (-34d) |  |  | 55d → 6.6d |  |  |
| 104 | UAT for Single Sign-On (caArray and caIntegrator) | 2012-06-07 → 2012-05-03 (-35d) | 2012-06-13 → 2012-05-10 (-34d) |  |  | 55d → 6.6d |  |  |
| 105 | **JIRA CAINT-1045 Performance Requirements** |  | 2012-07-02 → 2012-05-14 (-49d) | 106d → 71d |  | 0d → 46d |  |  |
| 108 | Fix issues from Performance test | 2012-06-19 → 2012-05-01 (-49d) | 2012-07-02 → 2012-05-14 (-49d) |  |  | 0d → 46d | 107, Modify front-end for IGV and heatmap to display a selector for choosing a generic expression data type. → 88 |  |
| 109 | **Release to Prod (1.4)** | 2012-06-26 → 2012-05-15 (-42d) | 2012-08-29 → 2012-07-17 (-43d) | 47d? → 46d? |  |  |  |  |
| 110 | **Prep for Release** | 2012-06-26 → 2012-05-15 (-42d) | 2012-07-18 → 2012-05-30 (-49d) | 17d? → 12d? |  | 0d → 4d |  |  |
| 111 | Appscan on Dev | 2012-07-03 → 2012-05-15 (-49d) | 2012-07-04 → 2012-05-16 (-49d) |  |  | 0d → 4d | JIRA-CAINT-966 - Generic Platform Support, 105 → 69 |  |
| 112 | Fix Any issues from Appscan | 2012-07-05 → 2012-05-17 (-49d) | 2012-07-11 → 2012-05-23 (-49d) |  |  | 5d → 9d |  |  |
| 113 | 508 compliance check | 2012-07-05 → 2012-05-17 (-49d) | 2012-07-09 → 2012-05-21 (-49d) |  |  | 7d → 11d |  |  |
| 114 | Documentation Updates | 2012-07-05 → 2012-05-17 (-49d) | 2012-07-18 → 2012-05-30 (-49d) |  |  | 0d → 4d |  |  |
| 115 | Prep: Announcements and other updates (landing page etc) | 2012-06-26 → 2012-05-17 (-40d) | 2012-06-26 → 2012-05-17 (-40d) |  |  | 16d → 13d | QA - Generic Platform → 111 |  |
| 116 | Release Notes | 2012-06-26 → 2012-05-17 (-40d) | 2012-06-26 → 2012-05-17 (-40d) |  |  | 16d → 13d | QA - Generic Platform → 111 |  |
| 117 | QA | 2012-07-19 → 2012-05-31 (-49d) | 2012-08-15 → 2012-06-27 (-49d) |  |  | 0d → 4d |  |  |
| 118 | Appscan/Stage/Prod release | 2012-08-16 → 2012-06-28 (-49d) | 2012-08-29 → 2012-07-11 (-49d) |  |  | 0d → 4d |  |  |

## Version 30 (saved 2012-02-07, file caintegrator_project_plan.mpp)

Last finish 2012-07-17 → 2012-07-26 (+9d). Complete tasks 62 → 64.

Added:

| ID | Task | Duration | Start | Finish | Predecessors | Constraint | Resources |
| --- | --- | --- | --- | --- | --- | --- | --- |
| 65 | MATKC Support | 2d | 2012-02-03 A | 2012-02-06 A |  | start no earlier than 2012-02-03 | JP |
| 99 | JIRA CAINT-1095 Single Sign-on | 9d | 2012-05-10 | 2012-05-22 | 83 |  | JP |
| 111 | Integration Test | 10d | 2012-06-18 | 2012-06-29 | 104 |  | HS |
| 112 | **RC1** | 6d | 2012-07-02 | 2012-07-09 | 111 |  |  |
| 113 | RC1 to Stage | 3d | 2012-07-02 | 2012-07-04 | 111 |  | Systems |
| 115 | Appscan | 3d | 2012-07-02 | 2012-07-04 | 111 |  | Systems |
| 116 | **RC2** | 10d | 2012-07-10 | 2012-07-23 |  |  |  |
| 117 | Fix any Issue | 4d | 2012-07-10 | 2012-07-13 | 114 |  | JP |
| 118 | RC2 to Stage | 3d | 2012-07-16 | 2012-07-18 | 117 |  | Systems |
| 119 | QA | 3d | 2012-07-19 | 2012-07-23 | 118 |  | HS |
| 120 | Appscan | 3d | 2012-07-19 | 2012-07-23 | 118 |  | Systems |
| 122 | NOT INCLUDED (Generic Platform, NBIA , Performance eval) | 1d? | 2011-08-01 | 2011-08-01 |  |  |  |

Removed: 58 Xenoline Data update information; 59 Xenoline ARC document; 60 Xenoline setup server/ftp site; 68 JIRA CAINT-1041 - Support NCI Funded Studies Deployment; 105 JIRA CAINT-1045 Performance Requirements; 106 Define Performance Criteria; 107 Conduct Stress Test and other Performance test work; 108 Fix issues from Performance test

Changed:

| ID | Task | Start | Finish | Duration | Complete | Total float | Predecessors | Other |
| --- | --- | --- | --- | --- | --- | --- | --- | --- |
| 34 | **CaIntegrator Version 1.4** |  | 2012-07-17 → 2012-07-26 (+9d) | 242d? → 249d? | 40% → 43% |  |  |  |
| 54 | **Ongoing maintenance and bug fixes** |  | 2012-05-01 → 2012-02-06 A (-85d) | 186d? → 125d? | 73% → 100% | 55d → none |  |  |
| 66 | **TRANSCEND Feature implementation** |  | 2012-05-14 → 2012-05-30 (+16d) | 136d? → 148d? | 20% → 21% | 4d → 0d |  |  |
| 83 | **Permission and Role base security** | 2012-02-02 A | 2012-05-14 → 2012-05-09 (-5d) | 73d → 70d | 0% → 7% | 4d → 0d |  |  |
| 84 | JIRA CAINT-1078 TRANSCEND - authorization user story CSM investigation | 2012-02-02 A | 2012-02-08 A |  | 0% → 100% | 4d → none |  |  |
| 87 | QA - Permission and Role based security |  | 2012-05-14 → 2012-05-09 (-5d) | 10d → 7d |  | 85d → 0d |  |  |
| 89 | **Automatic Refresh with caArray** |  | 2012-04-23 → 2012-04-13 (-10d) | 47d? → 41.6d? |  | 6.6d → 12.6d |  |  |
| 91 | JIRA CAINT-1094 - Implementation: Automatic Refresh with caArray |  | 2012-04-09 → 2012-03-26 (-14d) | 35d → 25d |  | 6.6d → 12.6d |  |  |
| 93 | JIRA CAINT-1094 - Integration with caArray Automatic Refresh Completion | 2012-04-09 → 2012-04-04 (-5d) | 2012-04-16 → 2012-04-10 (-6d) |  |  | 6.6d → 6d |  |  |
| 94 | QA - Automatic Refresh with caArray | 2012-04-16 → 2012-04-11 (-5d) | 2012-04-23 → 2012-04-13 (-10d) | 5d → 3d |  | 19.6d → 33d |  |  |
| 95 | UAT for Automatic Refresh | 2012-04-16 → 2012-04-11 (-5d) | 2012-04-17 → 2012-04-11 (-6d) |  |  | 23.6d → 35d |  |  |
| 96 | **Single Sign-On (caArray and caIntegrator)** |  | 2012-05-10 → 2012-05-30 (+20d) | 28.4d? → 43d? |  | 6.6d → 0d |  |  |
| 98 | JIRA CAINT-1095 Single Sign-on | 2012-04-16 → 2012-04-11 (-5d) | 2012-04-26 → 2012-05-22 (+26d) | 8d → 30d |  | 6.6d → 6d |  |  |
| 100 | Integration with caArray | 2012-04-26 → 2012-05-23 (+27d) | 2012-05-03 → 2012-05-25 (+22d) | 5d → 3d |  | 6.6d → 0d | 98 → 99 |  |
| 101 | QA -Single Sign-On (caArray and caIntegrator) | 2012-05-03 → 2012-05-28 (+25d) | 2012-05-10 → 2012-05-30 (+20d) | 5d → 3d |  | 6.6d → 0d |  |  |
| 102 | UAT for Single Sign-On (caArray and caIntegrator) | 2012-05-03 → 2012-05-28 (+25d) | 2012-05-10 → 2012-05-30 (+20d) | 5d → 3d |  | 6.6d → 0d |  |  |
| 103 | **Release to Prod (1.4)** | 2012-05-15 → 2012-05-31 (+16d) | 2012-07-17 → 2012-07-26 (+9d) | 46d? → 41d? |  |  |  |  |
| 104 | **Prep for Release** | 2012-05-15 → 2012-05-31 (+16d) | 2012-05-30 → 2012-06-15 (+16d) |  |  | 4d → 0d |  |  |
| 105 | Appscan on Dev | 2012-05-15 → 2012-05-31 (+16d) | 2012-05-16 → 2012-06-01 (+16d) |  |  | 4d → 0d |  |  |
| 106 | Fix Any issues from Appscan | 2012-05-17 → 2012-06-04 (+18d) | 2012-05-23 → 2012-06-08 (+16d) |  |  | 9d → 5d |  |  |
| 107 | 508 compliance check | 2012-05-17 → 2012-06-04 (+18d) | 2012-05-21 → 2012-06-06 (+16d) |  |  | 11d → 7d |  |  |
| 108 | Documentation Updates | 2012-05-17 → 2012-06-04 (+18d) | 2012-05-30 → 2012-06-15 (+16d) |  |  | 4d → 0d |  |  |
| 109 | Prep: Announcements and other updates (landing page etc) | 2012-05-17 → 2012-06-04 (+18d) | 2012-05-17 → 2012-06-04 (+18d) |  |  | 13d → 9d |  |  |
| 110 | Release Notes | 2012-05-17 → 2012-06-04 (+18d) | 2012-05-17 → 2012-06-04 (+18d) |  |  | 13d → 9d |  |  |
| 114 | QA | 2012-05-31 → 2012-07-05 (+35d) | 2012-06-27 → 2012-07-09 (+12d) | 20d → 3d |  | 4d → 0d | 104 → 113 |  |
| 121 | Prod Release | 2012-06-28 → 2012-07-24 (+26d) | 2012-07-11 → 2012-07-26 (+15d) | 10d → 3d |  | 4d → 0d | 114 → 116 | was named Appscan/Stage/Prod release |

## Version 31 (saved 2012-02-09, file caintegrator_project_plan.mpp)

Last finish 2012-07-26 → 2012-07-17 (-9d). Complete tasks 64 → 67.

Added:

| ID | Task | Duration | Start | Finish | Predecessors | Constraint | Resources |
| --- | --- | --- | --- | --- | --- | --- | --- |
| 83 | JIRA CAINT-1103 Break down tasks and cleanup user story | 1d | 2012-02-09 | 2012-02-09 | 81 |  | JP |
| 84 | JIRA CAINT-1104 Document the new architecture and update EA model. (3) | 3d | 2012-02-10 | 2012-02-14 | 83 |  | JP |
| 85 | JIRA CAINT-1105 Create new hibernate and db components as modeled. (5) | 6d | 2012-02-15 | 2012-02-22 | 84 |  | JP |
| 86 | JIRA CAINT-1106 Add the Authorized Elements Group to the CSM protected elements configuration. be sure csm api returns the authorized elements.(5) | 6d | 2012-02-23 | 2012-03-01 | 85 |  | JP |
| 87 | JIRA CAINT-1107 Modify study management service to CRUD authorized elements.(8) | 8d | 2012-03-02 | 2012-03-13 | 86 |  | JP |
| 88 | JIRA CAINT-1108 Update Manage Query service to check permissions to see allowed items (columns, values, experiment IDs).(8) | 8d | 2012-03-14 | 2012-03-23 | 87 |  | JP |
| 89 | JIRA CAINT-1109 Update Perform Analysis service to check permissions to see allowed items (columns, values, experiment IDs).(8) | 9d | 2012-03-26 | 2012-04-05 | 88 |  | JP |
| 90 | JIRA CAINT-1110 Create action and jsp for new admin screen.(5) | 5d | 2012-04-06 | 2012-04-12 | 89 |  | JP |
| 91 | JIRA CAINT-1111 Update integration (nightly) tests to pass.(3) | 4d | 2012-04-13 | 2012-04-18 | 90 |  | JP |
| 96 | **JIRA CAINT-1094 - Implementation: Automatic Refresh with caArray** | 27d? | 2012-02-27 | 2012-04-04 |  |  |  |
| 97 | Confirm user story with Transcend UCSF and caArray (may need balsamiq mockup) (3) | 3d | 2012-02-27 | 2012-03-01 | 77 |  | MAX |
| 98 | Confirm existing api supports necessary querying of sample data. (may be some additional coding to confirm this)(3) | 3d | 2012-03-01 | 2012-03-06 | 97 |  | MAX |
| 99 | Update model to have new flag on study configuration and new flag on abstractgenomicdatasource configuration.(2) | 2d | 2012-03-06 | 2012-03-08 | 98 |  | MAX |
| 100 | Create method (or asynch process) for querying caArray to get new data indicators for all experiments that the user has access to.(5) | 5d | 2012-03-08 | 2012-03-15 | 99 |  | MAX |
| 101 | Modify Manage Studies screen and action to read and display new data flag. (1) | 1d? | 2012-03-15 | 2012-03-16 | 100 |  | MAX |
| 102 | Modify Edit Study screen and action to read and display genomic data source flag.(1) | 1d? | 2012-03-16 | 2012-03-19 | 101 |  | MAX |
| 103 | Modify the Map Samples screen to query caArray for current samples and produce a UI to indicate what has added/removed. (8) | 8d | 2012-03-19 | 2012-03-29 | 102 |  | MAX |
| 104 | Modify the Map Samples screen and action to handle a new checkbox for Clear new data notification. (3) | 3d | 2012-03-29 | 2012-04-03 | 103 |  | MAX |
| 105 | Integrate and test with real caArray service.(3) | 1d? | 2012-04-03 | 2012-04-04 | 104 |  | MAX |
| 113 | **New Maintenance, Bugs, Tech Stack Upgrade & Performance** | 56d? | 2012-02-27 | 2012-05-14 |  |  |  |
| 114 | **Tech Stack Pending Work** | 56d? | 2012-02-27 | 2012-05-14 |  |  |  |
| 118 | **Bug fixes** | 4d | 2012-04-24 | 2012-04-27 |  |  |  |
| 119 | JIRA CAINT-1091 Generating a KM plot from a study with 300 annotation columns causes an internal server error | 4d | 2012-04-24 | 2012-04-27 | 116 |  | JP |
| 120 | Other Maintenance | 1d? | 2012-04-30 | 2012-04-30 | 119 |  |  |
| 121 | **Performance requirements** | 56d | 2012-02-27 | 2012-05-14 |  |  |  |
| 122 | Define Requirements | 10d | 2012-02-27 | 2012-03-09 |  | start no earlier than 2012-02-27 | SJ |
| 123 | Load Test and Verify | 10d | 2012-03-12 | 2012-03-23 | 122 |  | TBD |
| 124 | Fix any issues | 10d | 2012-05-01 | 2012-05-14 | 123, 120 |  | JP |

Removed: 90 JIRA CAINT-1094 - Design agreement with caArray; 91 JIRA CAINT-1094 - Implementation: Automatic Refresh with caArray; 92 JIRA CAINT-1094 - caArray Team complete API; 93 JIRA CAINT-1094 - Integration with caArray Automatic Refresh Completion; 99 JIRA CAINT-1095 Single Sign-on; 100 Integration with caArray

Changed:

| ID | Task | Start | Finish | Duration | Complete | Total float | Predecessors | Other |
| --- | --- | --- | --- | --- | --- | --- | --- | --- |
| 34 | **CaIntegrator Version 1.4** |  | 2012-07-26 → 2012-07-17 (-9d) | 249d? → 241.4d? | 43% → 44% |  |  |  |
| 36 | **JIRA CAINT-1015 Tech Stack Upgrade** |  | 2012-02-17 → 2012-01-30 A (-18d) | 133d? → 119d | 92% → 100% | 114d → none |  |  |
| 63 | **TRANSCEND Feature implementation** |  | 2012-05-30 → 2012-05-21 (-9d) | 148d? → 140.4d? | 21% → 29% |  |  |  |
| 73 | **Version Control and Archive** |  | 2012-02-23 → 2012-02-27 (+4d) | 30d → 32d | 29% → 49% | 69.6d → 60d |  |  |
| 74 | JIRA CAINT-1023 -Version control (create shell study) |  | 2012-01-27 A |  | 91% → 100% | 12.6d → none |  |  |
| 75 | JIRA CAINT - 1098 (1023 Bug) | 2012-01-27 A | 2012-02-07 A |  | 0% → 100% | 12.6d → none |  | was named Bugs from 1023 - 1098 |
| 76 | JIRA CAINT-1024 Version control (Archive) |  | 2012-02-16 → 2012-02-20 (+4d) | 7d → 9d |  | 12.6d → 0d |  |  |
| 77 | QA - Version Control & Archive | 2012-02-16 → 2012-02-20 (+4d) | 2012-02-23 → 2012-02-27 (+4d) |  |  | 69.6d → 0d |  |  |
| 78 | UAT forVersion Control and Archive | 2012-02-16 → 2012-02-20 (+4d) | 2012-02-23 → 2012-02-27 (+4d) |  |  | 69.6d → 60d |  |  |
| 79 | Finalize Architecture for permission model | 2012-02-01 A | 2012-02-01 A |  | 0% → 100% | 5d → none |  |  |
| 80 | **Permission and Role base security** |  | 2012-05-09 → 2012-04-25 (-14d) | 70d → 60d | 7% → 8% | 0d → 17.4d |  |  |
| 82 | **JIRA CAINT-1101 - Implementation:Role based security in caIntegrator to support TRANSCEND** | 2012-02-14 → 2012-02-09 (-5d) | 2012-04-30 → 2012-04-18 (-12d) | 55d → 50d |  | 0d → 17.4d | 81, 116 → none | was named JIRA CAINT-1093 - Implementation:Role based security in caIntegrator to support TRANSCEND; resources JP → none |
| 93 | QA - Permission and Role based security | 2012-05-01 → 2012-04-19 (-12d) | 2012-05-09 → 2012-04-25 (-14d) | 7d → 5d |  | 0d → 17.4d |  |  |
| 94 | UAT for role based security | 2012-05-01 → 2012-04-19 (-12d) | 2012-05-07 → 2012-04-19 (-18d) | 5d → 1d |  | 2d → 21.4d |  |  |
| 95 | **Automatic Refresh with caArray** | 2012-02-16 → 2012-02-27 (+11d) | 2012-04-13 → 2012-04-09 (-4d) | 41.6d? → 30d? |  | 12.6d → 0d |  |  |
| 106 | QA - Automatic Refresh with caArray | 2012-04-11 → 2012-04-04 (-7d) | 2012-04-13 → 2012-04-09 (-4d) |  |  | 33d → 30d | JIRA CAINT-1094 - Integration with caArray Automatic Refresh Completion → 96 |  |
| 107 | UAT for Automatic Refresh | 2012-04-11 → 2012-04-04 (-7d) | 2012-04-11 → 2012-04-05 (-6d) |  |  | 35d → 32d | JIRA CAINT-1094 - Integration with caArray Automatic Refresh Completion → 96 |  |
| 108 | **Single Sign-On (caArray and caIntegrator)** |  | 2012-05-30 → 2012-05-21 (-9d) | 43d? → 35.4d? |  |  |  |  |
| 110 | JIRA CAINT-1095 Single Sign-on | 2012-04-11 → 2012-04-04 (-7d) | 2012-05-22 → 2012-05-16 (-6d) |  |  | 6d → 0d | JIRA CAINT-1094 - Integration with caArray Automatic Refresh Completion → 96 |  |
| 111 | QA -Single Sign-On (caArray and caIntegrator) | 2012-05-28 → 2012-05-16 (-12d) | 2012-05-30 → 2012-05-21 (-9d) |  |  |  | Integration with caArray → 110 |  |
| 112 | UAT for Single Sign-On (caArray and caIntegrator) | 2012-05-28 → 2012-05-16 (-12d) | 2012-05-30 → 2012-05-17 (-13d) | 3d → 1d |  | 0d → 2d | Integration with caArray → 110 |  |
| 115 | UPT Upgrade to JBOSS 5.0 | 2012-02-08 → 2012-02-29 (+21d) | 2012-02-08 → 2012-02-29 (+21d) |  |  | 0d → 80.4d |  | constraint start no earlier than 2012-02-08 → start no earlier than 2012-02-29 |
| 116 | JIRA CAINT(1085) Phase -2 Add UPT deployment config and instructions to the DEV/QA/tiers PTE. | 2012-02-09 → 2012-04-19 (+70d) | 2012-02-13 → 2012-04-23 (+70d) |  |  | 0d → 45.4d | 115, 81 → 91, 115 |  |
| 117 | Test QA tier | 2012-02-14 → 2012-04-24 (+70d) | 2012-02-17 → 2012-04-27 (+70d) |  |  | 114d → 56.4d |  |  |
| 125 | **Release to Prod (1.4)** | 2012-05-31 → 2012-05-21 (-10d) | 2012-07-26 → 2012-07-17 (-9d) |  |  |  |  |  |
| 126 | **Prep for Release** | 2012-05-31 → 2012-05-21 (-10d) | 2012-06-15 → 2012-06-04 (-11d) | 12d? → 10d? |  |  |  |  |
| 127 | Appscan on Dev | 2012-05-31 → 2012-05-21 (-10d) | 2012-06-01 → 2012-05-23 (-9d) |  |  | 0d → 3d |  |  |
| 128 | Fix Any issues from Appscan | 2012-06-04 → 2012-05-23 (-12d) | 2012-06-08 → 2012-05-30 (-9d) |  |  | 5d → 3d |  |  |
| 129 | 508 compliance check | 2012-06-04 → 2012-05-23 (-12d) | 2012-06-06 → 2012-05-28 (-9d) |  |  | 7d → 5d |  |  |
| 130 | Documentation Updates | 2012-06-04 → 2012-05-21 (-14d) | 2012-06-15 → 2012-06-04 (-11d) |  |  |  | 127 → 63 |  |
| 131 | Prep: Announcements and other updates (landing page etc) | 2012-06-04 → 2012-05-23 (-12d) | 2012-06-04 → 2012-05-24 (-11d) |  |  | 9d → 7d |  |  |
| 132 | Release Notes | 2012-06-04 → 2012-05-23 (-12d) | 2012-06-04 → 2012-05-24 (-11d) |  |  | 9d → 7d |  |  |
| 133 | Integration Test | 2012-06-18 → 2012-06-04 (-14d) | 2012-06-29 → 2012-06-18 (-11d) |  |  |  |  |  |
| 134 | **RC1** | 2012-07-02 → 2012-06-18 (-14d) | 2012-07-09 → 2012-06-27 (-12d) | 6d → 7d |  |  |  |  |
| 135 | RC1 to Stage | 2012-07-02 → 2012-06-18 (-14d) | 2012-07-04 → 2012-06-22 (-12d) | 3d → 4d |  |  |  |  |
| 136 | QA | 2012-07-05 → 2012-06-22 (-13d) | 2012-07-09 → 2012-06-27 (-12d) |  |  |  |  |  |
| 137 | Appscan | 2012-07-02 → 2012-06-18 (-14d) | 2012-07-04 → 2012-06-21 (-13d) |  |  | 16d → 18d |  |  |
| 138 | **RC2** | 2012-07-10 → 2012-06-27 (-13d) | 2012-07-23 → 2012-07-12 (-11d) | 10d → 11d |  |  |  |  |
| 139 | Fix any Issue | 2012-07-10 → 2012-06-27 (-13d) | 2012-07-13 → 2012-07-04 (-9d) | 4d → 5d |  |  |  |  |
| 140 | RC2 to Stage | 2012-07-16 → 2012-07-04 (-12d) | 2012-07-18 → 2012-07-09 (-9d) |  |  |  |  |  |
| 141 | QA | 2012-07-19 → 2012-07-09 (-10d) | 2012-07-23 → 2012-07-12 (-11d) |  |  |  |  |  |
| 142 | Appscan | 2012-07-19 → 2012-07-09 (-10d) | 2012-07-23 → 2012-07-12 (-11d) |  |  |  |  |  |
| 143 | Prod Release | 2012-07-24 → 2012-07-12 (-12d) | 2012-07-26 → 2012-07-17 (-9d) |  |  |  |  |  |

## Version 32 (saved 2012-02-14, file caintegrator_project_plan.mpp)

Last finish 2012-07-17 → 2012-07-20 (+3d).

Changed:

| ID | Task | Start | Finish | Duration | Total float |
| --- | --- | --- | --- | --- | --- |
| 34 | **CaIntegrator Version 1.4** |  | 2012-07-17 → 2012-07-20 (+3d) | 241.4d? → 245d? |  |
| 63 | **TRANSCEND Feature implementation** |  | 2012-05-21 → 2012-05-24 (+3d) | 140.4d? → 144d? |  |
| 80 | **Permission and Role base security** |  | 2012-04-25 → 2012-05-03 (+8d) | 60d → 66d | 17.4d → 15d |
| 82 | **JIRA CAINT-1101 - Implementation:Role based security in caIntegrator to support TRANSCEND** |  | 2012-04-18 → 2012-04-26 (+8d) | 50d → 56d | 17.4d → 15d |
| 85 | JIRA CAINT-1105 Create new hibernate and db components as modeled. (5) |  | 2012-02-22 → 2012-02-23 (+1d) |  | 17.4d → 15d |
| 86 | JIRA CAINT-1106 Add the Authorized Elements Group to the CSM protected elements configuration. be sure csm api returns the authorized elements.(5) | 2012-02-23 → 2012-02-24 (+1d) | 2012-03-01 → 2012-03-02 (+1d) |  | 17.4d → 15d |
| 87 | JIRA CAINT-1107 Modify study management service to CRUD authorized elements.(8) | 2012-03-02 → 2012-03-05 (+3d) | 2012-03-13 → 2012-03-14 (+1d) |  | 17.4d → 15d |
| 88 | JIRA CAINT-1108 Update Manage Query service to check permissions to see allowed items (columns, values, experiment IDs).(8) | 2012-03-14 → 2012-03-15 (+1d) | 2012-03-23 → 2012-03-26 (+3d) |  | 17.4d → 20d |
| 89 | JIRA CAINT-1109 Update Perform Analysis service to check permissions to see allowed items (columns, values, experiment IDs).(8) | 2012-03-26 → 2012-03-27 (+1d) | 2012-04-05 → 2012-04-13 (+8d) |  | 17.4d → 15d |
| 90 | JIRA CAINT-1110 Create action and jsp for new admin screen.(5) | 2012-04-06 → 2012-04-16 (+10d) | 2012-04-12 → 2012-04-20 (+8d) |  | 17.4d → 15d |
| 91 | JIRA CAINT-1111 Update integration (nightly) tests to pass.(3) | 2012-04-13 → 2012-04-23 (+10d) | 2012-04-18 → 2012-04-26 (+8d) |  | 17.4d → 15d |
| 93 | QA - Permission and Role based security | 2012-04-19 → 2012-04-27 (+8d) | 2012-04-25 → 2012-05-03 (+8d) |  | 17.4d → 15d |
| 94 | UAT for role based security | 2012-04-19 → 2012-04-27 (+8d) | 2012-04-19 → 2012-04-27 (+8d) |  | 21.4d → 19d |
| 95 | **Automatic Refresh with caArray** | 2012-02-27 → 2012-03-02 (+4d) | 2012-04-09 → 2012-04-12 (+3d) |  |  |
| 96 | **JIRA CAINT-1094 - Implementation: Automatic Refresh with caArray** | 2012-02-27 → 2012-03-02 (+4d) | 2012-04-04 → 2012-04-09 (+5d) |  |  |
| 97 | Confirm user story with Transcend UCSF and caArray (may need balsamiq mockup) (3) | 2012-02-27 → 2012-03-02 (+4d) | 2012-03-01 → 2012-03-06 (+5d) |  |  |
| 98 | Confirm existing api supports necessary querying of sample data. (may be some additional coding to confirm this)(3) | 2012-03-01 → 2012-03-07 (+6d) | 2012-03-06 → 2012-03-09 (+3d) |  |  |
| 99 | Update model to have new flag on study configuration and new flag on abstractgenomicdatasource configuration.(2) | 2012-03-06 → 2012-03-12 (+6d) | 2012-03-08 → 2012-03-13 (+5d) |  |  |
| 100 | Create method (or asynch process) for querying caArray to get new data indicators for all experiments that the user has access to.(5) | 2012-03-08 → 2012-03-14 (+6d) | 2012-03-15 → 2012-03-20 (+5d) |  |  |
| 101 | Modify Manage Studies screen and action to read and display new data flag. (1) | 2012-03-15 → 2012-03-21 (+6d) | 2012-03-16 → 2012-03-21 (+5d) |  |  |
| 102 | Modify Edit Study screen and action to read and display genomic data source flag.(1) | 2012-03-16 → 2012-03-22 (+6d) | 2012-03-19 → 2012-03-22 (+3d) |  |  |
| 103 | Modify the Map Samples screen to query caArray for current samples and produce a UI to indicate what has added/removed. (8) | 2012-03-19 → 2012-03-23 (+4d) | 2012-03-29 → 2012-04-03 (+5d) |  |  |
| 104 | Modify the Map Samples screen and action to handle a new checkbox for Clear new data notification. (3) | 2012-03-29 → 2012-04-04 (+6d) | 2012-04-03 → 2012-04-06 (+3d) |  |  |
| 105 | Integrate and test with real caArray service.(3) | 2012-04-03 → 2012-04-09 (+6d) | 2012-04-04 → 2012-04-09 (+5d) |  |  |
| 106 | QA - Automatic Refresh with caArray | 2012-04-04 → 2012-04-10 (+6d) | 2012-04-09 → 2012-04-12 (+3d) |  |  |
| 107 | UAT for Automatic Refresh | 2012-04-04 → 2012-04-10 (+6d) | 2012-04-05 → 2012-04-10 (+5d) |  |  |
| 108 | **Single Sign-On (caArray and caIntegrator)** |  | 2012-05-21 → 2012-05-24 (+3d) | 35.4d? → 39d? |  |
| 110 | JIRA CAINT-1095 Single Sign-on | 2012-04-04 → 2012-04-10 (+6d) | 2012-05-16 → 2012-05-21 (+5d) |  |  |
| 111 | QA -Single Sign-On (caArray and caIntegrator) | 2012-05-16 → 2012-05-22 (+6d) | 2012-05-21 → 2012-05-24 (+3d) |  |  |
| 112 | UAT for Single Sign-On (caArray and caIntegrator) | 2012-05-16 → 2012-05-22 (+6d) | 2012-05-17 → 2012-05-22 (+5d) |  |  |
| 113 | **New Maintenance, Bugs, Tech Stack Upgrade & Performance** |  | 2012-05-14 → 2012-05-22 (+8d) | 56d? → 62d? | 45.4d → 43d |
| 114 | **Tech Stack Pending Work** |  | 2012-05-14 → 2012-05-22 (+8d) | 56d? → 62d? | 45.4d → 43d |
| 116 | JIRA CAINT(1085) Phase -2 Add UPT deployment config and instructions to the DEV/QA/tiers PTE. | 2012-04-19 → 2012-04-27 (+8d) | 2012-04-23 → 2012-05-01 (+8d) |  | 45.4d → 43d |
| 117 | Test QA tier | 2012-04-24 → 2012-05-02 (+8d) | 2012-04-27 → 2012-05-07 (+10d) |  | 56.4d → 54d |
| 118 | **Bug fixes** | 2012-04-24 → 2012-05-02 (+8d) | 2012-04-27 → 2012-05-07 (+10d) |  | 45.4d → 43d |
| 119 | JIRA CAINT-1091 Generating a KM plot from a study with 300 annotation columns causes an internal server error | 2012-04-24 → 2012-05-02 (+8d) | 2012-04-27 → 2012-05-07 (+10d) |  | 45.4d → 43d |
| 120 | Other Maintenance | 2012-04-30 → 2012-05-08 (+8d) | 2012-04-30 → 2012-05-08 (+8d) |  | 45.4d → 43d |
| 121 | **Performance requirements** |  | 2012-05-14 → 2012-05-22 (+8d) | 56d → 62d | 45.4d → 43d |
| 124 | Fix any issues | 2012-05-01 → 2012-05-09 (+8d) | 2012-05-14 → 2012-05-22 (+8d) |  | 45.4d → 43d |
| 125 | **Release to Prod (1.4)** | 2012-05-21 → 2012-05-25 (+4d) | 2012-07-17 → 2012-07-20 (+3d) |  |  |
| 126 | **Prep for Release** | 2012-05-21 → 2012-05-25 (+4d) | 2012-06-04 → 2012-06-07 (+3d) |  |  |
| 127 | Appscan on Dev | 2012-05-21 → 2012-05-25 (+4d) | 2012-05-23 → 2012-05-28 (+5d) |  |  |
| 128 | Fix Any issues from Appscan | 2012-05-23 → 2012-05-29 (+6d) | 2012-05-30 → 2012-06-04 (+5d) |  |  |
| 129 | 508 compliance check | 2012-05-23 → 2012-05-29 (+6d) | 2012-05-28 → 2012-05-31 (+3d) |  |  |
| 130 | Documentation Updates | 2012-05-21 → 2012-05-25 (+4d) | 2012-06-04 → 2012-06-07 (+3d) |  |  |
| 131 | Prep: Announcements and other updates (landing page etc) | 2012-05-23 → 2012-05-29 (+6d) | 2012-05-24 → 2012-05-29 (+5d) |  |  |
| 132 | Release Notes | 2012-05-23 → 2012-05-29 (+6d) | 2012-05-24 → 2012-05-29 (+5d) |  |  |
| 133 | Integration Test | 2012-06-04 → 2012-06-08 (+4d) | 2012-06-18 → 2012-06-21 (+3d) |  |  |
| 134 | **RC1** | 2012-06-18 → 2012-06-22 (+4d) | 2012-06-27 → 2012-07-02 (+5d) |  |  |
| 135 | RC1 to Stage | 2012-06-18 → 2012-06-22 (+4d) | 2012-06-22 → 2012-06-27 (+5d) |  |  |
| 136 | QA | 2012-06-22 → 2012-06-28 (+6d) | 2012-06-27 → 2012-07-02 (+5d) |  |  |
| 137 | Appscan | 2012-06-18 → 2012-06-22 (+4d) | 2012-06-21 → 2012-06-26 (+5d) |  |  |
| 138 | **RC2** | 2012-06-27 → 2012-07-03 (+6d) | 2012-07-12 → 2012-07-17 (+5d) |  |  |
| 139 | Fix any Issue | 2012-06-27 → 2012-07-03 (+6d) | 2012-07-04 → 2012-07-09 (+5d) |  |  |
| 140 | RC2 to Stage | 2012-07-04 → 2012-07-10 (+6d) | 2012-07-09 → 2012-07-12 (+3d) |  |  |
| 141 | QA | 2012-07-09 → 2012-07-13 (+4d) | 2012-07-12 → 2012-07-17 (+5d) |  |  |
| 142 | Appscan | 2012-07-09 → 2012-07-13 (+4d) | 2012-07-12 → 2012-07-17 (+5d) |  |  |
| 143 | Prod Release | 2012-07-12 → 2012-07-18 (+6d) | 2012-07-17 → 2012-07-20 (+3d) |  |  |

## Version 33 (saved 2012-02-16, file caintegrator_project_plan.mpp)

Last finish 2012-07-20 → 2012-07-16 (-4d).

Added:

| ID | Task | Duration | Start | Finish | Predecessors | Resources |
| --- | --- | --- | --- | --- | --- | --- |
| 77 | Documentation for Version Control & Archive | 5d | 2012-02-20 | 2012-02-27 | 76 | JH |
| 94 | Documentation for Role Based Security | 5d | 2012-04-27 | 2012-05-03 | 83 | JH |
| 108 | Documentation for Automatic Refresh | 4d | 2012-04-17 | 2012-04-20 | 98 | JH |
| 114 | Verify CAS SSO server exists for us on the DEV tier, get uid and password to create credentials, learn user creation UI and setup users. (1) | 1d? | 2012-04-17 | 2012-04-17 | 98 |  |
| 115 | read and investigate installation options for CAS and decide if CAS is compatible with existing acegi credential lib. (3) | 4d | 2012-04-18 | 2012-04-23 | 114 |  |
| 116 | Add CAS libaries to local svn repo, modify web.xml to support CAS filters, be sure nothing breaks. (2) | 4d | 2012-04-24 | 2012-04-27 | 115 |  |
| 117 | modify cai authentication classes to remove or modify acegi.(5) | 5d | 2012-04-30 | 2012-05-04 | 116 |  |
| 118 | Confirm that caArray rmi API still works with a caArray installation modified for SSO. Verify that we can use caArray userids that were created in CAS. Handle any issues. (2) | 3d | 2012-05-07 | 2012-05-09 | 117 |  |
| 119 | Add CAS libraries to NEXUS and confirm functionality. Run CI build, NIGHTLY build. Run deployment to DEV tier. (1) | 3d | 2012-05-10 | 2012-05-14 | 118 |  |
| 121 | Documentation for Single Sign-On | 4d | 2012-05-15 | 2012-05-18 | 113 | JH |

Changed:

| ID | Task | Start | Finish | Duration | Complete | Total float | Predecessors | Other |
| --- | --- | --- | --- | --- | --- | --- | --- | --- |
| 34 | **CaIntegrator Version 1.4** |  | 2012-07-20 → 2012-07-16 (-4d) | 245d? → 241d? | 44% → 43% |  |  |  |
| 63 | **TRANSCEND Feature implementation** |  | 2012-05-24 → 2012-05-18 (-6d) | 144d? → 140d? | 29% → 27% |  |  |  |
| 73 | **Version Control and Archive** |  |  |  | 49% → 43% | 63.6d → 59.6d |  |  |
| 81 | **Permission and Role base security** |  |  |  | 8% → 7% | 15d → 11d |  |  |
| 97 | **Automatic Refresh with caArray** |  | 2012-04-12 → 2012-04-20 (+8d) | 30d? → 36d? |  |  |  |  |
| 98 | **JIRA CAINT-1094 - Implementation: Automatic Refresh with caArray** |  | 2012-04-09 → 2012-04-16 (+7d) | 27d? → 32d |  |  |  |  |
| 101 | Update model to have new flag on study configuration and new flag on abstractgenomicdatasource configuration.(2) |  | 2012-03-13 → 2012-03-14 (+1d) | 2d → 3d |  |  |  |  |
| 102 | Create method (or asynch process) for querying caArray to get new data indicators for all experiments that the user has access to.(5) | 2012-03-14 → 2012-03-15 (+1d) | 2012-03-20 → 2012-03-21 (+1d) |  |  |  |  |  |
| 103 | Modify Manage Studies screen and action to read and display new data flag. (1) | 2012-03-21 → 2012-03-22 (+1d) | 2012-03-21 → 2012-03-23 (+2d) | 1d? → 2d |  |  |  |  |
| 104 | Modify Edit Study screen and action to read and display genomic data source flag.(1) | 2012-03-22 → 2012-03-26 (+4d) | 2012-03-22 → 2012-03-27 (+5d) | 1d? → 2d |  |  |  |  |
| 105 | Modify the Map Samples screen to query caArray for current samples and produce a UI to indicate what has added/removed. (8) | 2012-03-23 → 2012-03-28 (+5d) | 2012-04-03 → 2012-04-06 (+3d) |  |  |  |  |  |
| 106 | Modify the Map Samples screen and action to handle a new checkbox for Clear new data notification. (3) | 2012-04-04 → 2012-04-09 (+5d) | 2012-04-06 → 2012-04-12 (+6d) | 3d → 4d |  |  |  |  |
| 107 | Integrate and test with real caArray service.(3) | 2012-04-09 → 2012-04-13 (+4d) | 2012-04-09 → 2012-04-16 (+7d) | 1d? → 2d |  |  |  |  |
| 109 | QA - Automatic Refresh with caArray | 2012-04-10 → 2012-04-17 (+7d) | 2012-04-12 → 2012-04-19 (+7d) |  |  | 30d → 21d |  |  |
| 110 | UAT for Automatic Refresh | 2012-04-10 → 2012-04-17 (+7d) | 2012-04-10 → 2012-04-17 (+7d) |  |  | 32d → 23d |  |  |
| 111 | **Single Sign-On (caArray and caIntegrator)** |  | 2012-05-24 → 2012-05-18 (-6d) | 39d? → 35d? |  |  |  |  |
| 113 | **JIRA CAINT-1122 Single Sign-on** | 2012-04-10 → 2012-04-17 (+7d) | 2012-05-21 → 2012-05-14 (-7d) | 30d → 20d? |  |  | 98 → none | was named JIRA CAINT-1095 Single Sign-on |
| 120 | QA -Single Sign-On (caArray and caIntegrator) | 2012-05-22 → 2012-05-15 (-7d) | 2012-05-24 → 2012-05-17 (-7d) |  |  | 0d → 1d |  |  |
| 122 | UAT for Single Sign-On (caArray and caIntegrator) | 2012-05-22 → 2012-05-15 (-7d) | 2012-05-22 → 2012-05-15 (-7d) |  |  | 2d → 3d |  |  |
| 135 | **Release to Prod (1.4)** | 2012-05-25 → 2012-05-21 (-4d) | 2012-07-20 → 2012-07-16 (-4d) |  |  |  |  |  |
| 136 | **Prep for Release** | 2012-05-25 → 2012-05-21 (-4d) | 2012-06-07 → 2012-06-01 (-6d) |  |  |  |  |  |
| 137 | Appscan on Dev | 2012-05-25 → 2012-05-21 (-4d) | 2012-05-28 → 2012-05-22 (-6d) |  |  |  |  |  |
| 138 | Fix Any issues from Appscan | 2012-05-29 → 2012-05-23 (-6d) | 2012-06-04 → 2012-05-29 (-6d) |  |  |  |  |  |
| 139 | 508 compliance check | 2012-05-29 → 2012-05-23 (-6d) | 2012-05-31 → 2012-05-25 (-6d) |  |  |  |  |  |
| 140 | Documentation Updates | 2012-05-25 → 2012-05-21 (-4d) | 2012-06-07 → 2012-06-01 (-6d) |  |  |  |  |  |
| 141 | Prep: Announcements and other updates (landing page etc) | 2012-05-29 → 2012-05-23 (-6d) | 2012-05-29 → 2012-05-23 (-6d) |  |  |  |  |  |
| 142 | Release Notes | 2012-05-29 → 2012-05-23 (-6d) | 2012-05-29 → 2012-05-23 (-6d) |  |  |  |  |  |
| 143 | Integration Test | 2012-06-08 → 2012-06-04 (-4d) | 2012-06-21 → 2012-06-15 (-6d) |  |  |  |  |  |
| 144 | **RC1** | 2012-06-22 → 2012-06-18 (-4d) | 2012-07-02 → 2012-06-26 (-6d) |  |  |  |  |  |
| 145 | RC1 to Stage | 2012-06-22 → 2012-06-18 (-4d) | 2012-06-27 → 2012-06-21 (-6d) |  |  |  |  |  |
| 146 | QA | 2012-06-28 → 2012-06-22 (-6d) | 2012-07-02 → 2012-06-26 (-6d) |  |  |  |  |  |
| 147 | Appscan | 2012-06-22 → 2012-06-18 (-4d) | 2012-06-26 → 2012-06-20 (-6d) |  |  |  |  |  |
| 148 | **RC2** | 2012-07-03 → 2012-06-27 (-6d) | 2012-07-17 → 2012-07-11 (-6d) |  |  |  |  |  |
| 149 | Fix any Issue | 2012-07-03 → 2012-06-27 (-6d) | 2012-07-09 → 2012-07-03 (-6d) |  |  |  |  |  |
| 150 | RC2 to Stage | 2012-07-10 → 2012-07-04 (-6d) | 2012-07-12 → 2012-07-06 (-6d) |  |  |  |  |  |
| 151 | QA | 2012-07-13 → 2012-07-09 (-4d) | 2012-07-17 → 2012-07-11 (-6d) |  |  |  |  |  |
| 152 | Appscan | 2012-07-13 → 2012-07-09 (-4d) | 2012-07-17 → 2012-07-11 (-6d) |  |  |  |  |  |
| 153 | Prod Release | 2012-07-18 → 2012-07-12 (-6d) | 2012-07-20 → 2012-07-16 (-4d) |  |  |  |  |  |

## Version 34 (saved 2012-02-21, file caintegrator_project_plan.mpp)

Last finish 2012-07-16 → 2012-07-11 (-5d). Complete tasks 67 → 68.

Added:

| ID | Task | Duration | Start | Finish | Constraint | Resources |
| --- | --- | --- | --- | --- | --- | --- |
| 131 | MATKC Support | 3d | 2012-02-14 | 2012-02-16 | start no earlier than 2012-02-14 | JP |

Changed:

| ID | Task | Start | Finish | Duration | Complete | Total float | Predecessors |
| --- | --- | --- | --- | --- | --- | --- | --- |
| 34 | **CaIntegrator Version 1.4** |  | 2012-07-16 → 2012-07-11 (-5d) | 241d? → 236.4d? | 43% → 45% |  |  |
| 63 | **TRANSCEND Feature implementation** |  | 2012-05-18 → 2012-05-15 (-3d) | 140d? → 135.4d? | 27% → 31% |  |  |
| 73 | **Version Control and Archive** |  | 2012-02-27 → 2012-02-28 (+1d) |  | 43% → 64% | 59.6d → 55d |  |
| 76 | JIRA CAINT-1024 Version control (Archive) | 2012-02-07 A | 2012-02-20 → 2012-02-21 A (+1d) |  | 0% → 100% | 3.6d → none |  |
| 77 | Documentation for Version Control & Archive | 2012-02-20 → 2012-02-21 (+1d) | 2012-02-27 → 2012-02-28 (+1d) |  |  | 56.6d → 55d |  |
| 78 | QA - Version Control & Archive | 2012-02-20 → 2012-02-21 (+1d) | 2012-02-27 → 2012-02-28 (+1d) |  |  | 3.6d → 55d |  |
| 79 | UAT forVersion Control and Archive | 2012-02-20 → 2012-02-21 (+1d) | 2012-02-27 → 2012-02-28 (+1d) |  |  | 56.6d → 55d |  |
| 81 | **Permission and Role base security** |  | 2012-05-03 → 2012-05-11 (+8d) | 66d → 71d |  | 11d → 1.4d |  |
| 83 | **JIRA CAINT-1101 - Implementation:Role based security in caIntegrator to support TRANSCEND** |  | 2012-04-26 → 2012-05-04 (+8d) | 56d → 61d |  | 11d → 1.4d |  |
| 85 | JIRA CAINT-1104 Document the new architecture and update EA model. (3) | 2012-02-10 → 2012-02-21 (+11d) | 2012-02-14 → 2012-02-23 (+9d) |  |  | 12d → 1.4d | 84 → 84, 131 |
| 86 | JIRA CAINT-1105 Create new hibernate and db components as modeled. (5) | 2012-02-15 → 2012-02-24 (+9d) | 2012-02-23 → 2012-03-02 (+8d) |  |  | 11d → 1.4d |  |
| 87 | JIRA CAINT-1106 Add the Authorized Elements Group to the CSM protected elements configuration. be sure csm api returns the authorized elements.(5) | 2012-02-24 → 2012-03-05 (+10d) | 2012-03-02 → 2012-03-12 (+10d) |  |  | 11d → 1.4d |  |
| 88 | JIRA CAINT-1107 Modify study management service to CRUD authorized elements.(8) | 2012-03-05 → 2012-03-13 (+8d) | 2012-03-14 → 2012-03-22 (+8d) |  |  | 11d → 1.4d |  |
| 89 | JIRA CAINT-1108 Update Manage Query service to check permissions to see allowed items (columns, values, experiment IDs).(8) | 2012-03-15 → 2012-03-23 (+8d) | 2012-03-26 → 2012-04-10 (+15d) |  |  | 11d → 1.4d |  |
| 90 | JIRA CAINT-1109 Update Perform Analysis service to check permissions to see allowed items (columns, values, experiment IDs).(8) | 2012-03-27 → 2012-04-11 (+15d) | 2012-04-13 → 2012-04-23 (+10d) |  |  | 11d → 1.4d |  |
| 91 | JIRA CAINT-1110 Create action and jsp for new admin screen.(5) | 2012-04-16 → 2012-04-24 (+8d) | 2012-04-20 → 2012-04-30 (+10d) |  |  | 11d → 1.4d |  |
| 92 | JIRA CAINT-1111 Update integration (nightly) tests to pass.(3) | 2012-04-23 → 2012-05-01 (+8d) | 2012-04-26 → 2012-05-04 (+8d) |  |  | 11d → 1.4d |  |
| 93 | Sample Data Set from UCSF | 2012-02-20 → 2012-02-21 (+1d) | 2012-02-21 → 2012-02-22 (+1d) |  |  | 60d → 58.4d |  |
| 94 | Documentation for Role Based Security | 2012-04-27 → 2012-05-07 (+10d) | 2012-05-03 → 2012-05-11 (+8d) |  |  | 11d → 1.4d |  |
| 95 | QA - Permission and Role based security | 2012-04-27 → 2012-05-07 (+10d) | 2012-05-03 → 2012-05-11 (+8d) |  |  | 11d → 1.4d |  |
| 96 | UAT for role based security | 2012-04-27 → 2012-05-07 (+10d) | 2012-04-27 → 2012-05-07 (+10d) |  |  | 12d → 5.4d |  |
| 97 | **Automatic Refresh with caArray** | 2012-03-02 → 2012-02-21 (-10d) | 2012-04-20 → 2012-04-17 (-3d) | 36d? → 40d? |  |  |  |
| 98 | **JIRA CAINT-1094 - Implementation: Automatic Refresh with caArray** | 2012-03-02 → 2012-02-21 (-10d) | 2012-04-16 → 2012-04-11 (-5d) | 32d → 36d |  |  |  |
| 99 | Confirm user story with Transcend UCSF and caArray (may need balsamiq mockup) (3) | 2012-03-02 → 2012-02-21 (-10d) | 2012-03-06 → 2012-02-24 (-11d) |  |  |  | 78 → 76 |
| 100 | Confirm existing api supports necessary querying of sample data. (may be some additional coding to confirm this)(3) | 2012-03-07 → 2012-02-24 (-12d) | 2012-03-09 → 2012-03-06 (-3d) |  |  |  |  |
| 101 | Update model to have new flag on study configuration and new flag on abstractgenomicdatasource configuration.(2) | 2012-03-12 → 2012-03-06 (-6d) | 2012-03-14 → 2012-03-09 (-5d) |  |  |  |  |
| 102 | Create method (or asynch process) for querying caArray to get new data indicators for all experiments that the user has access to.(5) | 2012-03-15 → 2012-03-09 (-6d) | 2012-03-21 → 2012-03-16 (-5d) |  |  |  |  |
| 103 | Modify Manage Studies screen and action to read and display new data flag. (1) | 2012-03-22 → 2012-03-16 (-6d) | 2012-03-23 → 2012-03-20 (-3d) |  |  |  |  |
| 104 | Modify Edit Study screen and action to read and display genomic data source flag.(1) | 2012-03-26 → 2012-03-20 (-6d) | 2012-03-27 → 2012-03-22 (-5d) |  |  |  |  |
| 105 | Modify the Map Samples screen to query caArray for current samples and produce a UI to indicate what has added/removed. (8) | 2012-03-28 → 2012-03-22 (-6d) | 2012-04-06 → 2012-04-03 (-3d) |  |  |  |  |
| 106 | Modify the Map Samples screen and action to handle a new checkbox for Clear new data notification. (3) | 2012-04-09 → 2012-04-03 (-6d) | 2012-04-12 → 2012-04-09 (-3d) |  |  |  |  |
| 107 | Integrate and test with real caArray service.(3) | 2012-04-13 → 2012-04-09 (-4d) | 2012-04-16 → 2012-04-11 (-5d) |  |  |  |  |
| 108 | Documentation for Automatic Refresh | 2012-04-17 → 2012-04-11 (-6d) | 2012-04-20 → 2012-04-17 (-3d) |  |  |  |  |
| 109 | QA - Automatic Refresh with caArray | 2012-04-17 → 2012-04-11 (-6d) | 2012-04-19 → 2012-04-16 (-3d) |  |  |  |  |
| 110 | UAT for Automatic Refresh | 2012-04-17 → 2012-04-11 (-6d) | 2012-04-17 → 2012-04-12 (-5d) |  |  |  |  |
| 111 | **Single Sign-On (caArray and caIntegrator)** |  | 2012-05-18 → 2012-05-15 (-3d) | 35d? → 31.4d? |  |  |  |
| 113 | **JIRA CAINT-1122 Single Sign-on** | 2012-04-17 → 2012-04-11 (-6d) | 2012-05-14 → 2012-05-09 (-5d) |  |  |  |  |
| 114 | Verify CAS SSO server exists for us on the DEV tier, get uid and password to create credentials, learn user creation UI and setup users. (1) | 2012-04-17 → 2012-04-11 (-6d) | 2012-04-17 → 2012-04-12 (-5d) |  |  |  |  |
| 115 | read and investigate installation options for CAS and decide if CAS is compatible with existing acegi credential lib. (3) | 2012-04-18 → 2012-04-12 (-6d) | 2012-04-23 → 2012-04-18 (-5d) |  |  |  |  |
| 116 | Add CAS libaries to local svn repo, modify web.xml to support CAS filters, be sure nothing breaks. (2) | 2012-04-24 → 2012-04-18 (-6d) | 2012-04-27 → 2012-04-24 (-3d) |  |  |  |  |
| 117 | modify cai authentication classes to remove or modify acegi.(5) | 2012-04-30 → 2012-04-24 (-6d) | 2012-05-04 → 2012-05-01 (-3d) |  |  |  |  |
| 118 | Confirm that caArray rmi API still works with a caArray installation modified for SSO. Verify that we can use caArray userids that were created in CAS. Handle any issues. (2) | 2012-05-07 → 2012-05-01 (-6d) | 2012-05-09 → 2012-05-04 (-5d) |  |  |  |  |
| 119 | Add CAS libraries to NEXUS and confirm functionality. Run CI build, NIGHTLY build. Run deployment to DEV tier. (1) | 2012-05-10 → 2012-05-04 (-6d) | 2012-05-14 → 2012-05-09 (-5d) |  |  |  |  |
| 120 | QA -Single Sign-On (caArray and caIntegrator) | 2012-05-15 → 2012-05-09 (-6d) | 2012-05-17 → 2012-05-14 (-3d) |  |  |  |  |
| 121 | Documentation for Single Sign-On | 2012-05-15 → 2012-05-09 (-6d) | 2012-05-18 → 2012-05-15 (-3d) |  |  |  |  |
| 122 | UAT for Single Sign-On (caArray and caIntegrator) | 2012-05-15 → 2012-05-09 (-6d) | 2012-05-15 → 2012-05-10 (-5d) |  |  |  |  |
| 123 | **New Maintenance, Bugs, Tech Stack Upgrade & Performance** | 2012-02-27 → 2012-02-14 (-13d) | 2012-05-22 → 2012-05-15 (-7d) | 62d? → 65d? |  | 39d → 1.4d |  |
| 124 | **Tech Stack Pending Work** | 2012-02-27 → 2012-02-14 (-13d) | 2012-05-22 → 2012-05-15 (-7d) | 62d? → 65d? |  | 39d → 1.4d |  |
| 126 | JIRA CAINT(1085) Phase -2 Add UPT deployment config and instructions to the DEV/QA/tiers PTE. | 2012-04-27 → 2012-05-07 (+10d) | 2012-05-01 → 2012-05-09 (+8d) |  |  | 39d → 40.4d |  |
| 127 | Test QA tier | 2012-05-02 → 2012-05-10 (+8d) | 2012-05-07 → 2012-05-15 (+8d) |  |  | 50d → 40.4d |  |
| 128 | **Bug fixes** | 2012-05-02 → 2012-05-10 (+8d) | 2012-05-07 → 2012-05-15 (+8d) |  |  | 39d → 40.4d |  |
| 129 | JIRA CAINT-1091 Generating a KM plot from a study with 300 annotation columns causes an internal server error | 2012-05-02 → 2012-05-10 (+8d) | 2012-05-07 → 2012-05-15 (+8d) |  |  | 39d → 40.4d |  |
| 130 | **Other Maintenance** | 2012-05-08 → 2012-02-14 (-84d) | 2012-05-08 → 2012-02-16 (-82d) | 1d? → 3d |  | 39d → 1.4d | 129 → none |
| 132 | **Performance requirements** |  | 2012-05-22 → 2012-04-13 (-39d) | 62d → 35d |  | 39d → 62.4d |  |
| 135 | Fix any issues | 2012-05-09 → 2012-03-26 (-44d) | 2012-05-22 → 2012-04-13 (-39d) |  |  | 39d → 62.4d |  |
| 136 | **Release to Prod (1.4)** | 2012-05-21 → 2012-05-15 (-6d) | 2012-07-16 → 2012-07-11 (-5d) |  |  |  |  |
| 137 | **Prep for Release** | 2012-05-21 → 2012-05-15 (-6d) | 2012-06-01 → 2012-05-29 (-3d) |  |  |  |  |
| 138 | Appscan on Dev | 2012-05-21 → 2012-05-15 (-6d) | 2012-05-22 → 2012-05-17 (-5d) |  |  |  |  |
| 139 | Fix Any issues from Appscan | 2012-05-23 → 2012-05-17 (-6d) | 2012-05-29 → 2012-05-24 (-5d) |  |  |  |  |
| 140 | 508 compliance check | 2012-05-23 → 2012-05-17 (-6d) | 2012-05-25 → 2012-05-22 (-3d) |  |  |  |  |
| 141 | Documentation Updates | 2012-05-21 → 2012-05-15 (-6d) | 2012-06-01 → 2012-05-29 (-3d) |  |  |  |  |
| 142 | Prep: Announcements and other updates (landing page etc) | 2012-05-23 → 2012-05-17 (-6d) | 2012-05-23 → 2012-05-18 (-5d) |  |  |  |  |
| 143 | Release Notes | 2012-05-23 → 2012-05-17 (-6d) | 2012-05-23 → 2012-05-18 (-5d) |  |  |  |  |
| 144 | Integration Test | 2012-06-04 → 2012-05-29 (-6d) | 2012-06-15 → 2012-06-12 (-3d) |  |  |  |  |
| 145 | **RC1** | 2012-06-18 → 2012-06-12 (-6d) | 2012-06-26 → 2012-06-21 (-5d) |  |  |  |  |
| 146 | RC1 to Stage | 2012-06-18 → 2012-06-12 (-6d) | 2012-06-21 → 2012-06-18 (-3d) |  |  |  |  |
| 147 | QA | 2012-06-22 → 2012-06-18 (-4d) | 2012-06-26 → 2012-06-21 (-5d) |  |  |  |  |
| 148 | Appscan | 2012-06-18 → 2012-06-12 (-6d) | 2012-06-20 → 2012-06-15 (-5d) |  |  |  |  |
| 149 | **RC2** | 2012-06-27 → 2012-06-21 (-6d) | 2012-07-11 → 2012-07-06 (-5d) |  |  |  |  |
| 150 | Fix any Issue | 2012-06-27 → 2012-06-21 (-6d) | 2012-07-03 → 2012-06-28 (-5d) |  |  |  |  |

| ID | Task | Start | Finish |
| --- | --- | --- | --- |
| 151 | RC2 to Stage | 2012-07-04 → 2012-06-28 (-6d) | 2012-07-06 → 2012-07-03 (-3d) |
| 152 | QA | 2012-07-09 → 2012-07-03 (-6d) | 2012-07-11 → 2012-07-06 (-5d) |
| 153 | Appscan | 2012-07-09 → 2012-07-03 (-6d) | 2012-07-11 → 2012-07-06 (-5d) |
| 154 | Prod Release | 2012-07-12 → 2012-07-06 (-6d) | 2012-07-16 → 2012-07-11 (-5d) |

## Version 35 (saved 2012-02-27, file caintegrator_project_plan.mpp)

Last finish 2012-07-11 → 2012-07-13 (+2d). Complete tasks 68 → 70.

Changed:

| ID | Task | Start | Finish | Duration | Complete | Total float |
| --- | --- | --- | --- | --- | --- | --- |
| 34 | **CaIntegrator Version 1.4** |  | 2012-07-11 → 2012-07-13 (+2d) | 236.4d? → 238.4d? | 45% → 46% |  |
| 63 | **TRANSCEND Feature implementation** |  | 2012-05-15 → 2012-05-17 (+2d) | 135.4d? → 137.4d? | 31% → 35% |  |
| 73 | **Version Control and Archive** |  | 2012-02-28 → 2012-03-01 (+2d) | 32d → 34d | 64% → 77% |  |
| 76 | JIRA CAINT-1024 Version control (Archive) |  | 2012-02-21 A → 2012-02-23 A (+2d) | 9d → 11d |  |  |
| 77 | Documentation for Version Control & Archive | 2012-02-21 → 2012-02-23 (+2d) | 2012-02-28 → 2012-03-01 (+2d) |  |  |  |
| 78 | QA - Version Control & Archive | 2012-02-21 A | 2012-02-28 A |  | 0% → 100% | 55d → none |
| 79 | UAT forVersion Control and Archive | 2012-02-21 → 2012-02-23 (+2d) | 2012-02-28 → 2012-03-01 (+2d) |  |  |  |
| 81 | **Permission and Role base security** |  | 2012-05-11 → 2012-05-15 (+4d) | 71d → 73d | 7% → 9% |  |
| 83 | **JIRA CAINT-1101 - Implementation:Role based security in caIntegrator to support TRANSCEND** | 2012-02-09 A | 2012-05-04 → 2012-05-08 (+4d) | 61d → 63d | 0% → 2% |  |
| 84 | JIRA CAINT-1103 Break down tasks and cleanup user story | 2012-02-09 A | 2012-02-09 A |  | 0% → 100% | 7.4d → none |
| 85 | JIRA CAINT-1104 Document the new architecture and update EA model. (3) | 2012-02-21 → 2012-02-22 (+1d) | 2012-02-23 → 2012-02-27 (+4d) | 3d → 4d |  |  |
| 86 | JIRA CAINT-1105 Create new hibernate and db components as modeled. (5) | 2012-02-24 → 2012-02-28 (+4d) | 2012-03-02 → 2012-03-06 (+4d) |  |  |  |
| 87 | JIRA CAINT-1106 Add the Authorized Elements Group to the CSM protected elements configuration. be sure csm api returns the authorized elements.(5) | 2012-03-05 → 2012-03-07 (+2d) | 2012-03-12 → 2012-03-14 (+2d) |  |  |  |
| 88 | JIRA CAINT-1107 Modify study management service to CRUD authorized elements.(8) | 2012-03-13 → 2012-03-15 (+2d) | 2012-03-22 → 2012-03-26 (+4d) |  |  |  |
| 89 | JIRA CAINT-1108 Update Manage Query service to check permissions to see allowed items (columns, values, experiment IDs).(8) | 2012-03-23 → 2012-03-27 (+4d) | 2012-04-10 → 2012-04-12 (+2d) |  |  |  |
| 90 | JIRA CAINT-1109 Update Perform Analysis service to check permissions to see allowed items (columns, values, experiment IDs).(8) | 2012-04-11 → 2012-04-13 (+2d) | 2012-04-23 → 2012-04-25 (+2d) |  |  |  |
| 91 | JIRA CAINT-1110 Create action and jsp for new admin screen.(5) | 2012-04-24 → 2012-04-26 (+2d) | 2012-04-30 → 2012-05-02 (+2d) |  |  |  |
| 92 | JIRA CAINT-1111 Update integration (nightly) tests to pass.(3) | 2012-05-01 → 2012-05-03 (+2d) | 2012-05-04 → 2012-05-08 (+4d) |  |  |  |
| 94 | Documentation for Role Based Security | 2012-05-07 → 2012-05-09 (+2d) | 2012-05-11 → 2012-05-15 (+4d) |  |  |  |
| 95 | QA - Permission and Role based security | 2012-05-07 → 2012-05-09 (+2d) | 2012-05-11 → 2012-05-15 (+4d) |  |  |  |
| 96 | UAT for role based security | 2012-05-07 → 2012-05-09 (+2d) | 2012-05-07 → 2012-05-09 (+2d) |  |  |  |
| 97 | **Automatic Refresh with caArray** | 2012-02-21 → 2012-02-23 (+2d) | 2012-04-17 → 2012-04-19 (+2d) |  |  |  |
| 98 | **JIRA CAINT-1094 - Implementation: Automatic Refresh with caArray** | 2012-02-21 → 2012-02-23 (+2d) | 2012-04-11 → 2012-04-13 (+2d) |  |  |  |
| 99 | Confirm user story with Transcend UCSF and caArray (may need balsamiq mockup) (3) | 2012-02-21 → 2012-02-23 (+2d) | 2012-02-24 → 2012-03-05 (+10d) |  |  |  |
| 100 | Confirm existing api supports necessary querying of sample data. (may be some additional coding to confirm this)(3) | 2012-02-24 → 2012-03-05 (+10d) | 2012-03-06 → 2012-03-08 (+2d) |  |  |  |
| 101 | Update model to have new flag on study configuration and new flag on abstractgenomicdatasource configuration.(2) | 2012-03-06 → 2012-03-08 (+2d) | 2012-03-09 → 2012-03-13 (+4d) |  |  |  |
| 102 | Create method (or asynch process) for querying caArray to get new data indicators for all experiments that the user has access to.(5) | 2012-03-09 → 2012-03-13 (+4d) | 2012-03-16 → 2012-03-20 (+4d) |  |  |  |
| 103 | Modify Manage Studies screen and action to read and display new data flag. (1) | 2012-03-16 → 2012-03-20 (+4d) | 2012-03-20 → 2012-03-22 (+2d) |  |  |  |
| 104 | Modify Edit Study screen and action to read and display genomic data source flag.(1) | 2012-03-20 → 2012-03-22 (+2d) | 2012-03-22 → 2012-03-26 (+4d) |  |  |  |
| 105 | Modify the Map Samples screen to query caArray for current samples and produce a UI to indicate what has added/removed. (8) | 2012-03-22 → 2012-03-26 (+4d) | 2012-04-03 → 2012-04-05 (+2d) |  |  |  |
| 106 | Modify the Map Samples screen and action to handle a new checkbox for Clear new data notification. (3) | 2012-04-03 → 2012-04-05 (+2d) | 2012-04-09 → 2012-04-11 (+2d) |  |  |  |
| 107 | Integrate and test with real caArray service.(3) | 2012-04-09 → 2012-04-11 (+2d) | 2012-04-11 → 2012-04-13 (+2d) |  |  |  |
| 108 | Documentation for Automatic Refresh | 2012-04-11 → 2012-04-13 (+2d) | 2012-04-17 → 2012-04-19 (+2d) |  |  |  |
| 109 | QA - Automatic Refresh with caArray | 2012-04-11 → 2012-04-13 (+2d) | 2012-04-16 → 2012-04-18 (+2d) |  |  |  |
| 110 | UAT for Automatic Refresh | 2012-04-11 → 2012-04-13 (+2d) | 2012-04-12 → 2012-04-16 (+4d) |  |  |  |
| 111 | **Single Sign-On (caArray and caIntegrator)** |  | 2012-05-15 → 2012-05-17 (+2d) | 31.4d? → 33.4d? |  |  |
| 113 | **JIRA CAINT-1122 Single Sign-on** | 2012-04-11 → 2012-04-13 (+2d) | 2012-05-09 → 2012-05-11 (+2d) |  |  |  |
| 114 | Verify CAS SSO server exists for us on the DEV tier, get uid and password to create credentials, learn user creation UI and setup users. (1) | 2012-04-11 → 2012-04-13 (+2d) | 2012-04-12 → 2012-04-16 (+4d) |  |  |  |
| 115 | read and investigate installation options for CAS and decide if CAS is compatible with existing acegi credential lib. (3) | 2012-04-12 → 2012-04-16 (+4d) | 2012-04-18 → 2012-04-20 (+2d) |  |  |  |
| 116 | Add CAS libaries to local svn repo, modify web.xml to support CAS filters, be sure nothing breaks. (2) | 2012-04-18 → 2012-04-20 (+2d) | 2012-04-24 → 2012-04-26 (+2d) |  |  |  |
| 117 | modify cai authentication classes to remove or modify acegi.(5) | 2012-04-24 → 2012-04-26 (+2d) | 2012-05-01 → 2012-05-03 (+2d) |  |  |  |
| 118 | Confirm that caArray rmi API still works with a caArray installation modified for SSO. Verify that we can use caArray userids that were created in CAS. Handle any issues. (2) | 2012-05-01 → 2012-05-03 (+2d) | 2012-05-04 → 2012-05-08 (+4d) |  |  |  |
| 119 | Add CAS libraries to NEXUS and confirm functionality. Run CI build, NIGHTLY build. Run deployment to DEV tier. (1) | 2012-05-04 → 2012-05-08 (+4d) | 2012-05-09 → 2012-05-11 (+2d) |  |  |  |
| 120 | QA -Single Sign-On (caArray and caIntegrator) | 2012-05-09 → 2012-05-11 (+2d) | 2012-05-14 → 2012-05-16 (+2d) |  |  |  |
| 121 | Documentation for Single Sign-On | 2012-05-09 → 2012-05-11 (+2d) | 2012-05-15 → 2012-05-17 (+2d) |  |  |  |
| 122 | UAT for Single Sign-On (caArray and caIntegrator) | 2012-05-09 → 2012-05-11 (+2d) | 2012-05-10 → 2012-05-14 (+4d) |  |  |  |
| 123 | **New Maintenance, Bugs, Tech Stack Upgrade & Performance** |  | 2012-05-15 → 2012-05-17 (+2d) | 65d? → 67d? |  |  |
| 124 | **Tech Stack Pending Work** |  | 2012-05-15 → 2012-05-17 (+2d) | 65d? → 67d? |  |  |
| 126 | JIRA CAINT(1085) Phase -2 Add UPT deployment config and instructions to the DEV/QA/tiers PTE. | 2012-05-07 → 2012-05-09 (+2d) | 2012-05-09 → 2012-05-11 (+2d) |  |  |  |
| 127 | Test QA tier | 2012-05-10 → 2012-05-14 (+4d) | 2012-05-15 → 2012-05-17 (+2d) |  |  |  |
| 128 | **Bug fixes** | 2012-05-10 → 2012-05-14 (+4d) | 2012-05-15 → 2012-05-17 (+2d) |  |  |  |
| 129 | JIRA CAINT-1091 Generating a KM plot from a study with 300 annotation columns causes an internal server error | 2012-05-10 → 2012-05-14 (+4d) | 2012-05-15 → 2012-05-17 (+2d) |  |  |  |
| 130 | **Other Maintenance** |  | 2012-02-16 → 2012-02-21 (+5d) | 3d → 5d |  |  |
| 131 | MATKC Support |  | 2012-02-16 → 2012-02-21 (+5d) | 3d → 4d |  |  |
| 136 | **Release to Prod (1.4)** | 2012-05-15 → 2012-05-17 (+2d) | 2012-07-11 → 2012-07-13 (+2d) |  |  |  |
| 137 | **Prep for Release** | 2012-05-15 → 2012-05-17 (+2d) | 2012-05-29 → 2012-05-31 (+2d) |  |  |  |
| 138 | Appscan on Dev | 2012-05-15 → 2012-05-17 (+2d) | 2012-05-17 → 2012-05-21 (+4d) |  |  |  |
| 139 | Fix Any issues from Appscan | 2012-05-17 → 2012-05-21 (+4d) | 2012-05-24 → 2012-05-28 (+4d) |  |  |  |
| 140 | 508 compliance check | 2012-05-17 → 2012-05-21 (+4d) | 2012-05-22 → 2012-05-24 (+2d) |  |  |  |
| 141 | Documentation Updates | 2012-05-15 → 2012-05-17 (+2d) | 2012-05-29 → 2012-05-31 (+2d) |  |  |  |
| 142 | Prep: Announcements and other updates (landing page etc) | 2012-05-17 → 2012-05-21 (+4d) | 2012-05-18 → 2012-05-22 (+4d) |  |  |  |
| 143 | Release Notes | 2012-05-17 → 2012-05-21 (+4d) | 2012-05-18 → 2012-05-22 (+4d) |  |  |  |
| 144 | Integration Test | 2012-05-29 → 2012-05-31 (+2d) | 2012-06-12 → 2012-06-14 (+2d) |  |  |  |
| 145 | **RC1** | 2012-06-12 → 2012-06-14 (+2d) | 2012-06-21 → 2012-06-25 (+4d) |  |  |  |
| 146 | RC1 to Stage | 2012-06-12 → 2012-06-14 (+2d) | 2012-06-18 → 2012-06-20 (+2d) |  |  |  |
| 147 | QA | 2012-06-18 → 2012-06-20 (+2d) | 2012-06-21 → 2012-06-25 (+4d) |  |  |  |
| 148 | Appscan | 2012-06-12 → 2012-06-14 (+2d) | 2012-06-15 → 2012-06-19 (+4d) |  |  |  |
| 149 | **RC2** | 2012-06-21 → 2012-06-25 (+4d) | 2012-07-06 → 2012-07-10 (+4d) |  |  |  |
| 150 | Fix any Issue | 2012-06-21 → 2012-06-25 (+4d) | 2012-06-28 → 2012-07-02 (+4d) |  |  |  |
| 151 | RC2 to Stage | 2012-06-28 → 2012-07-02 (+4d) | 2012-07-03 → 2012-07-05 (+2d) |  |  |  |

| ID | Task | Start | Finish |
| --- | --- | --- | --- |
| 152 | QA | 2012-07-03 → 2012-07-05 (+2d) | 2012-07-06 → 2012-07-10 (+4d) |
| 153 | Appscan | 2012-07-03 → 2012-07-05 (+2d) | 2012-07-06 → 2012-07-10 (+4d) |
| 154 | Prod Release | 2012-07-06 → 2012-07-10 (+4d) | 2012-07-11 → 2012-07-13 (+2d) |

## Version 36 (saved 2012-03-05, file caintegrator_project_plan.mpp)

Last finish 2012-07-13 → 2012-07-18 (+5d). Complete tasks 70 → 72.

Added:

| ID | Task | Duration | Start | Finish | Constraint | Resources |
| --- | --- | --- | --- | --- | --- | --- |
| 132 | Other Ongoing Support - MAT-KC, Planning | 1d | 2012-02-29 | 2012-02-29 | start no earlier than 2012-02-29 | JP |

Changed:

| ID | Task | Start | Finish | Duration | Complete | Total float | Predecessors |
| --- | --- | --- | --- | --- | --- | --- | --- |
| 34 | **CaIntegrator Version 1.4** |  | 2012-07-13 → 2012-07-18 (+5d) | 238.4d? → 242d? | 46% → 48% |  |  |
| 63 | **TRANSCEND Feature implementation** |  | 2012-05-17 → 2012-05-22 (+5d) | 137.4d? → 141d? | 35% → 38% |  |  |
| 81 | **Permission and Role base security** |  | 2012-05-15 → 2012-05-22 (+7d) | 73d → 78d | 9% → 17% | 1.4d → 0d |  |
| 83 | **JIRA CAINT-1101 - Implementation:Role based security in caIntegrator to support TRANSCEND** |  | 2012-05-08 → 2012-05-15 (+7d) | 63d → 68d | 2% → 13% | 1.4d → 0d |  |
| 84 | JIRA CAINT-1103 Break down tasks and cleanup user story |  | 2012-02-09 A → 2012-02-10 A (+1d) | 1d → 2d |  |  |  |
| 85 | JIRA CAINT-1104 Document the new architecture and update EA model. (3) | 2012-02-22 → 2012-02-28 A (+6d) | 2012-02-27 → 2012-03-05 A (+7d) | 4d → 5d | 0% → 100% | 1.4d → none | 84, 131 → 84, 131, 132 |
| 86 | JIRA CAINT-1105 Create new hibernate and db components as modeled. (5) | 2012-02-28 → 2012-03-06 (+7d) | 2012-03-06 → 2012-03-13 (+7d) |  |  | 1.4d → 0d |  |
| 87 | JIRA CAINT-1106 Add the Authorized Elements Group to the CSM protected elements configuration. be sure csm api returns the authorized elements.(5) | 2012-03-07 → 2012-03-14 (+7d) | 2012-03-14 → 2012-03-21 (+7d) |  |  | 1.4d → 0d |  |
| 88 | JIRA CAINT-1107 Modify study management service to CRUD authorized elements.(8) | 2012-03-15 → 2012-03-22 (+7d) | 2012-03-26 → 2012-04-09 (+14d) |  |  | 1.4d → 0d |  |
| 89 | JIRA CAINT-1108 Update Manage Query service to check permissions to see allowed items (columns, values, experiment IDs).(8) | 2012-03-27 → 2012-04-10 (+14d) | 2012-04-12 → 2012-04-19 (+7d) |  |  | 1.4d → 0d |  |
| 90 | JIRA CAINT-1109 Update Perform Analysis service to check permissions to see allowed items (columns, values, experiment IDs).(8) | 2012-04-13 → 2012-04-20 (+7d) | 2012-04-25 → 2012-05-02 (+7d) |  |  | 1.4d → 0d |  |
| 91 | JIRA CAINT-1110 Create action and jsp for new admin screen.(5) | 2012-04-26 → 2012-05-03 (+7d) | 2012-05-02 → 2012-05-09 (+7d) |  |  | 1.4d → 0d |  |
| 92 | JIRA CAINT-1111 Update integration (nightly) tests to pass.(3) | 2012-05-03 → 2012-05-10 (+7d) | 2012-05-08 → 2012-05-15 (+7d) |  |  | 1.4d → 0d |  |
| 94 | Documentation for Role Based Security | 2012-05-09 → 2012-05-16 (+7d) | 2012-05-15 → 2012-05-22 (+7d) |  |  | 1.4d → 0d |  |
| 95 | QA - Permission and Role based security | 2012-05-09 → 2012-05-16 (+7d) | 2012-05-15 → 2012-05-22 (+7d) |  |  | 1.4d → 0d |  |
| 96 | UAT for role based security | 2012-05-09 → 2012-05-16 (+7d) | 2012-05-09 → 2012-05-16 (+7d) |  |  | 5.4d → 4d |  |
| 97 | **Automatic Refresh with caArray** | 2012-02-23 A |  |  | 0% → 8% | 0d → 23.6d |  |
| 98 | **JIRA CAINT-1094 - Implementation: Automatic Refresh with caArray** | 2012-02-23 A |  |  | 0% → 9% | 0d → 3.6d |  |
| 100 | Confirm existing api supports necessary querying of sample data. (may be some additional coding to confirm this)(3) | 2012-03-05 A | 2012-03-08 A |  | 0% → 100% | 0d → none |  |
| 123 | **New Maintenance, Bugs, Tech Stack Upgrade & Performance** |  | 2012-05-17 → 2012-05-24 (+7d) | 67d? → 72d? |  | 1.4d → 39d |  |
| 124 | **Tech Stack Pending Work** |  | 2012-05-17 → 2012-05-24 (+7d) | 67d? → 72d? |  | 1.4d → 39d |  |
| 126 | JIRA CAINT(1085) Phase -2 Add UPT deployment config and instructions to the DEV/QA/tiers PTE. | 2012-05-09 → 2012-05-16 (+7d) | 2012-05-11 → 2012-05-18 (+7d) |  |  | 40.4d → 39d |  |
| 127 | Test QA tier | 2012-05-14 → 2012-05-21 (+7d) | 2012-05-17 → 2012-05-24 (+7d) |  |  | 40.4d → 39d |  |
| 128 | **Bug fixes** | 2012-05-14 → 2012-05-21 (+7d) | 2012-05-17 → 2012-05-24 (+7d) |  |  | 40.4d → 39d |  |
| 129 | JIRA CAINT-1091 Generating a KM plot from a study with 300 annotation columns causes an internal server error | 2012-05-14 → 2012-05-21 (+7d) | 2012-05-17 → 2012-05-24 (+7d) |  |  | 40.4d → 39d |  |
| 130 | **Other Maintenance** |  | 2012-02-21 → 2012-02-29 (+8d) | 5d → 11d |  | 1.4d → 90d |  |
| 137 | **Release to Prod (1.4)** | 2012-05-17 → 2012-05-23 (+6d) | 2012-07-13 → 2012-07-18 (+5d) |  |  |  |  |
| 138 | **Prep for Release** | 2012-05-17 → 2012-05-23 (+6d) | 2012-05-31 → 2012-06-05 (+5d) |  |  |  |  |
| 139 | Appscan on Dev | 2012-05-17 → 2012-05-23 (+6d) | 2012-05-21 → 2012-05-24 (+3d) |  |  |  |  |
| 140 | Fix Any issues from Appscan | 2012-05-21 → 2012-05-25 (+4d) | 2012-05-28 → 2012-05-31 (+3d) |  |  |  |  |
| 141 | 508 compliance check | 2012-05-21 → 2012-05-25 (+4d) | 2012-05-24 → 2012-05-29 (+5d) |  |  |  |  |
| 142 | Documentation Updates | 2012-05-17 → 2012-05-23 (+6d) | 2012-05-31 → 2012-06-05 (+5d) |  |  |  |  |
| 143 | Prep: Announcements and other updates (landing page etc) | 2012-05-21 → 2012-05-25 (+4d) | 2012-05-22 → 2012-05-25 (+3d) |  |  |  |  |
| 144 | Release Notes | 2012-05-21 → 2012-05-25 (+4d) | 2012-05-22 → 2012-05-25 (+3d) |  |  |  |  |
| 145 | Integration Test | 2012-05-31 → 2012-06-06 (+6d) | 2012-06-14 → 2012-06-19 (+5d) |  |  |  |  |
| 146 | **RC1** | 2012-06-14 → 2012-06-20 (+6d) | 2012-06-25 → 2012-06-28 (+3d) |  |  |  |  |
| 147 | RC1 to Stage | 2012-06-14 → 2012-06-20 (+6d) | 2012-06-20 → 2012-06-25 (+5d) |  |  |  |  |
| 148 | QA | 2012-06-20 → 2012-06-26 (+6d) | 2012-06-25 → 2012-06-28 (+3d) |  |  |  |  |
| 149 | Appscan | 2012-06-14 → 2012-06-20 (+6d) | 2012-06-19 → 2012-06-22 (+3d) |  |  |  |  |
| 150 | **RC2** | 2012-06-25 → 2012-06-29 (+4d) | 2012-07-10 → 2012-07-13 (+3d) |  |  |  |  |
| 151 | Fix any Issue | 2012-06-25 → 2012-06-29 (+4d) | 2012-07-02 → 2012-07-05 (+3d) |  |  |  |  |
| 152 | RC2 to Stage | 2012-07-02 → 2012-07-06 (+4d) | 2012-07-05 → 2012-07-10 (+5d) |  |  |  |  |
| 153 | QA | 2012-07-05 → 2012-07-11 (+6d) | 2012-07-10 → 2012-07-13 (+3d) |  |  |  |  |
| 154 | Appscan | 2012-07-05 → 2012-07-11 (+6d) | 2012-07-10 → 2012-07-13 (+3d) |  |  |  |  |
| 155 | Prod Release | 2012-07-10 → 2012-07-16 (+6d) | 2012-07-13 → 2012-07-18 (+5d) |  |  |  |  |

## Version 37 (saved 2012-03-12, file caintegrator_project_plan.mpp)

Last finish 2012-07-18 → 2012-07-19 (+1d). Complete tasks 72 → 74.

Added:

| ID | Task | Duration | Start | Finish | Constraint | Resources |
| --- | --- | --- | --- | --- | --- | --- |
| 133 | IGV Disclaimer, other support | 1d? | 2012-03-09 | 2012-03-09 | start no earlier than 2012-03-09 | JP |

Changed:

| ID | Task | Start | Finish | Duration | Complete | Total float | Other |
| --- | --- | --- | --- | --- | --- | --- | --- |
| 34 | **CaIntegrator Version 1.4** |  | 2012-07-18 → 2012-07-19 (+1d) | 242d? → 243d? | 48% → 49% |  |  |
| 63 | **TRANSCEND Feature implementation** |  | 2012-05-22 → 2012-05-23 (+1d) | 141d? → 142d? | 38% → 42% |  |  |
| 73 | **Version Control and Archive** |  |  |  | 77% → 89% | 55d → 59.6d |  |
| 79 | Demo forVersion Control and Archive | 2012-02-23 A | 2012-03-01 A |  | 0% → 100% | 55d → none | was named UAT forVersion Control and Archive |
| 81 | **Permission and Role base security** |  | 2012-05-22 → 2012-05-23 (+1d) | 78d → 79d |  |  |  |
| 83 | **JIRA CAINT-1101 - Implementation:Role based security in caIntegrator to support TRANSCEND** |  | 2012-05-15 → 2012-05-16 (+1d) | 68d → 69d |  |  |  |
| 86 | JIRA CAINT-1105 Create new hibernate and db components as modeled. (5) |  | 2012-03-13 → 2012-03-14 (+1d) | 6d → 7d |  |  |  |
| 87 | JIRA CAINT-1106 Add the Authorized Elements Group to the CSM protected elements configuration. be sure csm api returns the authorized elements.(5) | 2012-03-14 → 2012-03-15 (+1d) | 2012-03-21 → 2012-03-22 (+1d) |  |  |  |  |
| 88 | JIRA CAINT-1107 Modify study management service to CRUD authorized elements.(8) | 2012-03-22 → 2012-03-23 (+1d) | 2012-04-09 → 2012-04-10 (+1d) |  |  |  |  |
| 89 | JIRA CAINT-1108 Update Manage Query service to check permissions to see allowed items (columns, values, experiment IDs).(8) | 2012-04-10 → 2012-04-11 (+1d) | 2012-04-19 → 2012-04-20 (+1d) |  |  |  |  |
| 90 | JIRA CAINT-1109 Update Perform Analysis service to check permissions to see allowed items (columns, values, experiment IDs).(8) | 2012-04-20 → 2012-04-23 (+3d) | 2012-05-02 → 2012-05-03 (+1d) |  |  |  |  |
| 91 | JIRA CAINT-1110 Create action and jsp for new admin screen.(5) | 2012-05-03 → 2012-05-04 (+1d) | 2012-05-09 → 2012-05-10 (+1d) |  |  |  |  |
| 92 | JIRA CAINT-1111 Update integration (nightly) tests to pass.(3) | 2012-05-10 → 2012-05-11 (+1d) | 2012-05-15 → 2012-05-16 (+1d) |  |  |  |  |
| 94 | Documentation for Role Based Security | 2012-05-16 → 2012-05-17 (+1d) | 2012-05-22 → 2012-05-23 (+1d) |  |  |  |  |
| 95 | QA - Permission and Role based security | 2012-05-16 → 2012-05-17 (+1d) | 2012-05-22 → 2012-05-23 (+1d) |  |  |  |  |
| 96 | UAT for role based security | 2012-05-16 → 2012-05-17 (+1d) | 2012-05-16 → 2012-05-17 (+1d) |  |  |  |  |
| 97 | **Automatic Refresh with caArray** |  |  |  | 8% → 15% | 23.6d → 24.6d |  |
| 98 | **JIRA CAINT-1094 - Implementation: Automatic Refresh with caArray** |  |  |  | 9% → 19% | 3.6d → 4.6d |  |
| 101 | Update model to have new flag on study configuration and new flag on abstractgenomicdatasource configuration.(2) | 2012-03-08 A | 2012-03-13 A |  | 0% → 100% | 3.6d → none |  |
| 110 | Demo for Automatic Refresh |  |  |  |  | 23d → 27.6d | was named UAT for Automatic Refresh |
| 122 | Demo for Single Sign-On (caArray and caIntegrator) |  |  |  |  | 3d → 7.6d | was named UAT for Single Sign-On (caArray and caIntegrator) |
| 123 | **New Maintenance, Bugs, Tech Stack Upgrade & Performance** |  | 2012-05-24 → 2012-05-25 (+1d) | 72d? → 73d? |  |  |  |
| 124 | **Tech Stack Pending Work** |  | 2012-05-24 → 2012-05-25 (+1d) | 72d? → 73d? |  |  |  |
| 126 | JIRA CAINT(1085) Phase -2 Add UPT deployment config and instructions to the DEV/QA/tiers PTE. | 2012-05-16 → 2012-05-17 (+1d) | 2012-05-18 → 2012-05-21 (+3d) |  |  |  |  |
| 127 | Test QA tier | 2012-05-21 → 2012-05-22 (+1d) | 2012-05-24 → 2012-05-25 (+1d) |  |  |  |  |
| 128 | **Bug fixes** | 2012-05-21 → 2012-05-22 (+1d) | 2012-05-24 → 2012-05-25 (+1d) |  |  |  |  |
| 129 | JIRA CAINT-1091 Generating a KM plot from a study with 300 annotation columns causes an internal server error | 2012-05-21 → 2012-05-22 (+1d) | 2012-05-24 → 2012-05-25 (+1d) |  |  |  |  |
| 130 | **Other Maintenance** |  | 2012-02-29 → 2012-03-09 (+9d) | 11d → 18d? |  | 90d → 84d |  |
| 134 | **Performance requirements** | 2012-02-27 → 2012-03-19 (+21d) | 2012-04-13 → 2012-04-27 (+14d) | 35d → 30d |  | 68d → 59d |  |
| 135 | Define Requirements | 2012-02-27 → 2012-03-19 (+21d) | 2012-03-09 → 2012-03-30 (+21d) |  |  | 73d → 59d | constraint start no earlier than 2012-02-27 → start no earlier than 2012-03-19 |
| 136 | Load Test and Verify | 2012-03-12 → 2012-04-02 (+21d) | 2012-03-23 → 2012-04-13 (+21d) |  |  | 73d → 59d |  |
| 137 | Fix any issues | 2012-03-26 → 2012-04-16 (+21d) | 2012-04-13 → 2012-04-27 (+14d) |  |  | 68d → 59d |  |
| 138 | **Release to Prod (1.4)** | 2012-05-23 → 2012-05-24 (+1d) | 2012-07-18 → 2012-07-19 (+1d) |  |  |  |  |
| 139 | **Prep for Release** | 2012-05-23 → 2012-05-24 (+1d) | 2012-06-05 → 2012-06-06 (+1d) |  |  |  |  |
| 140 | Appscan on Dev | 2012-05-23 → 2012-05-24 (+1d) | 2012-05-24 → 2012-05-25 (+1d) |  |  |  |  |
| 141 | Fix Any issues from Appscan | 2012-05-25 → 2012-05-28 (+3d) | 2012-05-31 → 2012-06-01 (+1d) |  |  |  |  |
| 142 | 508 compliance check | 2012-05-25 → 2012-05-28 (+3d) | 2012-05-29 → 2012-05-30 (+1d) |  |  |  |  |
| 143 | Documentation Updates | 2012-05-23 → 2012-05-24 (+1d) | 2012-06-05 → 2012-06-06 (+1d) |  |  |  |  |
| 144 | Prep: Announcements and other updates (landing page etc) | 2012-05-25 → 2012-05-28 (+3d) | 2012-05-25 → 2012-05-28 (+3d) |  |  |  |  |
| 145 | Release Notes | 2012-05-25 → 2012-05-28 (+3d) | 2012-05-25 → 2012-05-28 (+3d) |  |  |  |  |
| 146 | Integration Test | 2012-06-06 → 2012-06-07 (+1d) | 2012-06-19 → 2012-06-20 (+1d) |  |  |  |  |
| 147 | **RC1** | 2012-06-20 → 2012-06-21 (+1d) | 2012-06-28 → 2012-06-29 (+1d) |  |  |  |  |
| 148 | RC1 to Stage | 2012-06-20 → 2012-06-21 (+1d) | 2012-06-25 → 2012-06-26 (+1d) |  |  |  |  |
| 149 | QA | 2012-06-26 → 2012-06-27 (+1d) | 2012-06-28 → 2012-06-29 (+1d) |  |  |  |  |
| 150 | Appscan | 2012-06-20 → 2012-06-21 (+1d) | 2012-06-22 → 2012-06-25 (+3d) |  |  |  |  |
| 151 | **RC2** | 2012-06-29 → 2012-07-02 (+3d) | 2012-07-13 → 2012-07-16 (+3d) |  |  |  |  |
| 152 | Fix any Issue | 2012-06-29 → 2012-07-02 (+3d) | 2012-07-05 → 2012-07-06 (+1d) |  |  |  |  |
| 153 | RC2 to Stage | 2012-07-06 → 2012-07-09 (+3d) | 2012-07-10 → 2012-07-11 (+1d) |  |  |  |  |
| 154 | QA | 2012-07-11 → 2012-07-12 (+1d) | 2012-07-13 → 2012-07-16 (+3d) |  |  |  |  |
| 155 | Appscan | 2012-07-11 → 2012-07-12 (+1d) | 2012-07-13 → 2012-07-16 (+3d) |  |  |  |  |
| 156 | Prod Release | 2012-07-16 → 2012-07-17 (+1d) | 2012-07-18 → 2012-07-19 (+1d) |  |  |  |  |

## Version 38 (saved 2012-03-20, file caintegrator_project_plan.mpp)

Last finish 2012-07-19 → 2012-07-25 (+6d). Complete tasks 74 → 75.

Added:

| ID | Task | Duration | Start | Finish | Constraint | Resources |
| --- | --- | --- | --- | --- | --- | --- |
| 134 | caGrid upgrade analysis | 2d | 2012-03-13 | 2012-03-14 | start no earlier than 2012-03-13 | SJ |

Changed:

| ID | Task | Start | Finish | Duration | Complete | Total float | Other |
| --- | --- | --- | --- | --- | --- | --- | --- |
| 34 | **CaIntegrator Version 1.4** |  | 2012-07-19 → 2012-07-25 (+6d) | 243d? → 247d? | 49% → 51% |  |  |
| 63 | **TRANSCEND Feature implementation** |  | 2012-05-23 → 2012-05-29 (+6d) | 142d? → 146d? | 42% → 46% |  |  |
| 81 | **Permission and Role base security** |  | 2012-05-23 → 2012-05-29 (+6d) | 79d → 83d | 17% → 29% |  |  |
| 83 | **JIRA CAINT-1101 - Implementation:Role based security in caIntegrator to support TRANSCEND** |  | 2012-05-16 → 2012-05-22 (+6d) | 69d → 73d | 13% → 30% |  |  |
| 85 | JIRA CAINT-1104 Document the new architecture and update EA model. (3) |  | 2012-03-05 A → 2012-03-06 A (+1d) | 5d → 6d |  |  |  |
| 86 | JIRA CAINT-1105 Create new hibernate and db components as modeled. (5) | 2012-03-06 → 2012-03-07 A (+1d) | 2012-03-14 → 2012-03-20 A (+6d) | 7d → 9d | 0% → 100% | 0d → none |  |
| 87 | JIRA CAINT-1106 Add the Authorized Elements Group to the CSM protected elements configuration. be sure csm api returns the authorized elements.(5) | 2012-03-15 → 2012-03-21 (+6d) | 2012-03-22 → 2012-03-28 (+6d) |  |  |  |  |
| 88 | JIRA CAINT-1107 Modify study management service to CRUD authorized elements.(8) | 2012-03-23 → 2012-03-29 (+6d) | 2012-04-10 → 2012-04-16 (+6d) |  |  |  |  |
| 89 | JIRA CAINT-1108 Update Manage Query service to check permissions to see allowed items (columns, values, experiment IDs).(8) | 2012-04-11 → 2012-04-17 (+6d) | 2012-04-20 → 2012-04-26 (+6d) |  |  |  |  |
| 90 | JIRA CAINT-1109 Update Perform Analysis service to check permissions to see allowed items (columns, values, experiment IDs).(8) | 2012-04-23 → 2012-04-27 (+4d) | 2012-05-03 → 2012-05-09 (+6d) |  |  |  |  |
| 91 | JIRA CAINT-1110 Create action and jsp for new admin screen.(5) | 2012-05-04 → 2012-05-10 (+6d) | 2012-05-10 → 2012-05-16 (+6d) |  |  |  |  |
| 92 | JIRA CAINT-1111 Update integration (nightly) tests to pass.(3) | 2012-05-11 → 2012-05-17 (+6d) | 2012-05-16 → 2012-05-22 (+6d) |  |  |  |  |
| 94 | Documentation for Role Based Security | 2012-05-17 → 2012-05-23 (+6d) | 2012-05-23 → 2012-05-29 (+6d) |  |  |  |  |
| 95 | QA - Permission and Role based security | 2012-05-17 → 2012-05-23 (+6d) | 2012-05-23 → 2012-05-29 (+6d) |  |  |  |  |
| 96 | UAT for role based security | 2012-05-17 → 2012-05-23 (+6d) | 2012-05-17 → 2012-05-23 (+6d) |  |  |  |  |
| 123 | **New Maintenance, Bugs, Tech Stack Upgrade & Performance** |  | 2012-05-25 → 2012-05-31 (+6d) | 73d? → 77d? |  |  |  |
| 124 | **Tech Stack Pending Work** |  | 2012-05-25 → 2012-05-31 (+6d) | 73d? → 77d? |  |  |  |
| 126 | JIRA CAINT(1085) Phase -2 Add UPT deployment config and instructions to the DEV/QA/tiers PTE. | 2012-05-17 → 2012-05-23 (+6d) | 2012-05-21 → 2012-05-25 (+4d) |  |  |  |  |
| 127 | Test QA tier | 2012-05-22 → 2012-05-28 (+6d) | 2012-05-25 → 2012-05-31 (+6d) |  |  |  |  |
| 128 | **Bug fixes** | 2012-05-22 → 2012-05-28 (+6d) | 2012-05-25 → 2012-05-31 (+6d) |  |  |  |  |
| 129 | JIRA CAINT-1091 Generating a KM plot from a study with 300 annotation columns causes an internal server error | 2012-05-22 → 2012-05-28 (+6d) | 2012-05-25 → 2012-05-31 (+6d) |  |  |  |  |
| 130 | **Other Maintenance** |  | 2012-03-09 → 2012-03-14 (+5d) | 18d? → 21d? |  | 84d → 85d |  |
| 135 | **Performance requirements** | 2012-03-19 → 2012-03-26 (+7d) | 2012-04-27 → 2012-05-04 (+7d) |  |  | 59d → 58d |  |
| 136 | Define Requirements | 2012-03-19 → 2012-03-26 (+7d) | 2012-03-30 → 2012-04-06 (+7d) |  |  | 59d → 58d | constraint start no earlier than 2012-03-19 → start no earlier than 2012-03-26 |
| 137 | Load Test and Verify | 2012-04-02 → 2012-04-09 (+7d) | 2012-04-13 → 2012-04-20 (+7d) |  |  | 59d → 58d |  |
| 138 | Fix any issues | 2012-04-16 → 2012-04-23 (+7d) | 2012-04-27 → 2012-05-04 (+7d) |  |  | 59d → 58d |  |
| 139 | **Release to Prod (1.4)** | 2012-05-24 → 2012-05-30 (+6d) | 2012-07-19 → 2012-07-25 (+6d) |  |  |  |  |
| 140 | **Prep for Release** | 2012-05-24 → 2012-05-30 (+6d) | 2012-06-06 → 2012-06-12 (+6d) |  |  |  |  |
| 141 | Appscan on Dev | 2012-05-24 → 2012-05-30 (+6d) | 2012-05-25 → 2012-05-31 (+6d) |  |  |  |  |
| 142 | Fix Any issues from Appscan | 2012-05-28 → 2012-06-01 (+4d) | 2012-06-01 → 2012-06-07 (+6d) |  |  |  |  |
| 143 | 508 compliance check | 2012-05-28 → 2012-06-01 (+4d) | 2012-05-30 → 2012-06-05 (+6d) |  |  |  |  |
| 144 | Documentation Updates | 2012-05-24 → 2012-05-30 (+6d) | 2012-06-06 → 2012-06-12 (+6d) |  |  |  |  |
| 145 | Prep: Announcements and other updates (landing page etc) | 2012-05-28 → 2012-06-01 (+4d) | 2012-05-28 → 2012-06-01 (+4d) |  |  |  |  |
| 146 | Release Notes | 2012-05-28 → 2012-06-01 (+4d) | 2012-05-28 → 2012-06-01 (+4d) |  |  |  |  |
| 147 | Integration Test | 2012-06-07 → 2012-06-13 (+6d) | 2012-06-20 → 2012-06-26 (+6d) |  |  |  |  |
| 148 | **RC1** | 2012-06-21 → 2012-06-27 (+6d) | 2012-06-29 → 2012-07-05 (+6d) |  |  |  |  |
| 149 | RC1 to Stage | 2012-06-21 → 2012-06-27 (+6d) | 2012-06-26 → 2012-07-02 (+6d) |  |  |  |  |
| 150 | QA | 2012-06-27 → 2012-07-03 (+6d) | 2012-06-29 → 2012-07-05 (+6d) |  |  |  |  |
| 151 | Appscan | 2012-06-21 → 2012-06-27 (+6d) | 2012-06-25 → 2012-06-29 (+4d) |  |  |  |  |
| 152 | **RC2** | 2012-07-02 → 2012-07-06 (+4d) | 2012-07-16 → 2012-07-20 (+4d) |  |  |  |  |
| 153 | Fix any Issue | 2012-07-02 → 2012-07-06 (+4d) | 2012-07-06 → 2012-07-12 (+6d) |  |  |  |  |
| 154 | RC2 to Stage | 2012-07-09 → 2012-07-13 (+4d) | 2012-07-11 → 2012-07-17 (+6d) |  |  |  |  |
| 155 | QA | 2012-07-12 → 2012-07-18 (+6d) | 2012-07-16 → 2012-07-20 (+4d) |  |  |  |  |
| 156 | Appscan | 2012-07-12 → 2012-07-18 (+6d) | 2012-07-16 → 2012-07-20 (+4d) |  |  |  |  |
| 157 | Prod Release/Final UAT for TRANSCEND | 2012-07-17 → 2012-07-23 (+6d) | 2012-07-19 → 2012-07-25 (+6d) |  |  |  | was named Prod Release |

## Version 39 (saved 2012-03-27, file caintegrator_project_plan.mpp)

Last finish 2012-07-25 → 2012-08-09 (+15d). Complete tasks 75 → 76.

Added:

| ID | Task | Duration | Start | Finish | Predecessors |
| --- | --- | --- | --- | --- | --- |
| 102 | On Hold until for new developer | 19d | 2012-03-13 | 2012-04-09 | 101 |

Changed:

| ID | Task | Start | Finish | Duration | Complete | Total float | Predecessors | Other |
| --- | --- | --- | --- | --- | --- | --- | --- | --- |
| 34 | **CaIntegrator Version 1.4** |  | 2012-07-25 → 2012-08-09 (+15d) | 247d? → 257.4d? |  |  |  |  |
| 63 | **TRANSCEND Feature implementation** |  | 2012-05-29 → 2012-06-13 (+15d) | 146d? → 156.4d? | 46% → 45% |  |  |  |
| 81 | **Permission and Role base security** |  |  |  | 29% → 35% | 0d → 10.4d |  |  |
| 83 | **JIRA CAINT-1101 - Implementation:Role based security in caIntegrator to support TRANSCEND** |  |  |  | 30% → 37% | 0d → 10.4d |  |  |
| 87 | JIRA CAINT-1106 Add the Authorized Elements Group to the CSM protected elements configuration. be sure csm api returns the authorized elements.(5) | 2012-03-21 A |  |  | 0% → 70% | 0d → 15.4d |  |  |
| 97 | **Automatic Refresh with caArray** |  | 2012-04-19 → 2012-05-16 (+27d) | 40d? → 59d? |  | 28.6d → 20d |  |  |
| 98 | **JIRA CAINT-1094 - Implementation: Automatic Refresh with caArray** |  | 2012-04-13 → 2012-05-10 (+27d) | 36d → 55d | 19% → 18% | 8.6d → 0d |  |  |
| 99 | Confirm user story with Transcend UCSF and caArray (may need balsamiq mockup) (3) | 2012-02-23 A | 2012-03-05 A |  | 0% → 100% | 37.6d → none |  |  |
| 103 | Create method (or asynch process) for querying caArray to get new data indicators for all experiments that the user has access to.(5) | 2012-03-13 → 2012-04-09 (+27d) | 2012-03-20 → 2012-04-16 (+27d) |  |  | 8.6d → 0d | 101 → 102 | resources MAX → ABE |
| 104 | Modify Manage Studies screen and action to read and display new data flag. (1) | 2012-03-20 → 2012-04-16 (+27d) | 2012-03-22 → 2012-04-18 (+27d) |  |  | 8.6d → 0d |  | resources MAX → ABE |
| 105 | Modify Edit Study screen and action to read and display genomic data source flag.(1) | 2012-03-22 → 2012-04-18 (+27d) | 2012-03-26 → 2012-04-20 (+25d) |  |  | 8.6d → 0d |  | resources MAX → ABE |
| 106 | Modify the Map Samples screen to query caArray for current samples and produce a UI to indicate what has added/removed. (8) | 2012-03-26 → 2012-04-20 (+25d) | 2012-04-05 → 2012-05-02 (+27d) |  |  | 8.6d → 0d |  | resources MAX → ABE |
| 107 | Modify the Map Samples screen and action to handle a new checkbox for Clear new data notification. (3) | 2012-04-05 → 2012-05-02 (+27d) | 2012-04-11 → 2012-05-08 (+27d) |  |  | 8.6d → 0d |  | resources MAX → ABE |
| 108 | Integrate and test with real caArray service.(3) | 2012-04-11 → 2012-05-08 (+27d) | 2012-04-13 → 2012-05-10 (+27d) |  |  | 8.6d → 0d |  | resources MAX → ABE |
| 109 | Documentation for Automatic Refresh | 2012-04-13 → 2012-05-10 (+27d) | 2012-04-19 → 2012-05-16 (+27d) |  |  | 28.6d → 20d |  |  |
| 110 | QA - Automatic Refresh with caArray | 2012-04-13 → 2012-05-10 (+27d) | 2012-04-18 → 2012-05-15 (+27d) |  |  | 29.6d → 21d |  |  |
| 111 | Demo for Automatic Refresh | 2012-04-13 → 2012-05-10 (+27d) | 2012-04-16 → 2012-05-11 (+25d) |  |  | 31.6d → 23d |  |  |
| 112 | **Single Sign-On (caArray and caIntegrator)** |  | 2012-05-17 → 2012-06-13 (+27d) | 33.4d? → 52.4d? |  | 8.6d → 0d |  |  |
| 114 | **JIRA CAINT-1122 Single Sign-on** | 2012-04-13 → 2012-05-10 (+27d) | 2012-05-11 → 2012-06-07 (+27d) |  |  | 8.6d → 0d |  | resources MAX → ABE |
| 115 | Verify CAS SSO server exists for us on the DEV tier, get uid and password to create credentials, learn user creation UI and setup users. (1) | 2012-04-13 → 2012-05-10 (+27d) | 2012-04-16 → 2012-05-11 (+25d) |  |  | 8.6d → 0d |  | resources none → ABE |
| 116 | read and investigate installation options for CAS and decide if CAS is compatible with existing acegi credential lib. (3) | 2012-04-16 → 2012-05-11 (+25d) | 2012-04-20 → 2012-05-17 (+27d) |  |  | 8.6d → 0d |  | resources none → ABE |
| 117 | Add CAS libaries to local svn repo, modify web.xml to support CAS filters, be sure nothing breaks. (2) | 2012-04-20 → 2012-05-17 (+27d) | 2012-04-26 → 2012-05-23 (+27d) |  |  | 8.6d → 0d |  | resources none → ABE |
| 118 | modify cai authentication classes to remove or modify acegi.(5) | 2012-04-26 → 2012-05-23 (+27d) | 2012-05-03 → 2012-05-30 (+27d) |  |  | 8.6d → 0d |  | resources none → ABE |
| 119 | Confirm that caArray rmi API still works with a caArray installation modified for SSO. Verify that we can use caArray userids that were created in CAS. Handle any issues. (2) | 2012-05-03 → 2012-05-30 (+27d) | 2012-05-08 → 2012-06-04 (+27d) |  |  | 8.6d → 0d |  | resources none → ABE |
| 120 | Add CAS libraries to NEXUS and confirm functionality. Run CI build, NIGHTLY build. Run deployment to DEV tier. (1) | 2012-05-08 → 2012-06-04 (+27d) | 2012-05-11 → 2012-06-07 (+27d) |  |  | 8.6d → 0d |  | resources none → ABE |
| 121 | QA -Single Sign-On (caArray and caIntegrator) | 2012-05-11 → 2012-06-07 (+27d) | 2012-05-16 → 2012-06-12 (+27d) |  |  | 9.6d → 1d |  | resources none → ABE |
| 122 | Documentation for Single Sign-On | 2012-05-11 → 2012-06-07 (+27d) | 2012-05-17 → 2012-06-13 (+27d) |  |  | 8.6d → 0d |  |  |
| 123 | Demo for Single Sign-On (caArray and caIntegrator) | 2012-05-11 → 2012-06-07 (+27d) | 2012-05-14 → 2012-06-08 (+25d) |  |  | 11.6d → 3d |  |  |
| 140 | **Release to Prod (1.4)** | 2012-05-30 → 2012-06-13 (+14d) | 2012-07-25 → 2012-08-09 (+15d) |  |  |  |  |  |
| 141 | **Prep for Release** | 2012-05-30 → 2012-06-13 (+14d) | 2012-06-12 → 2012-06-27 (+15d) |  |  |  |  |  |
| 142 | Appscan on Dev | 2012-05-30 → 2012-06-13 (+14d) | 2012-05-31 → 2012-06-15 (+15d) |  |  |  |  |  |
| 143 | Fix Any issues from Appscan | 2012-06-01 → 2012-06-15 (+14d) | 2012-06-07 → 2012-06-22 (+15d) |  |  |  |  |  |
| 144 | 508 compliance check | 2012-06-01 → 2012-06-15 (+14d) | 2012-06-05 → 2012-06-20 (+15d) |  |  |  |  |  |
| 145 | Documentation Updates | 2012-05-30 → 2012-06-13 (+14d) | 2012-06-12 → 2012-06-27 (+15d) |  |  |  |  |  |
| 146 | Prep: Announcements and other updates (landing page etc) | 2012-06-01 → 2012-06-15 (+14d) | 2012-06-01 → 2012-06-18 (+17d) |  |  |  |  |  |
| 147 | Release Notes | 2012-06-01 → 2012-06-15 (+14d) | 2012-06-01 → 2012-06-18 (+17d) |  |  |  |  |  |
| 148 | Integration Test | 2012-06-13 → 2012-06-27 (+14d) | 2012-06-26 → 2012-07-11 (+15d) |  |  |  |  |  |
| 149 | **RC1** | 2012-06-27 → 2012-07-11 (+14d) | 2012-07-05 → 2012-07-20 (+15d) |  |  |  |  |  |
| 150 | RC1 to Stage | 2012-06-27 → 2012-07-11 (+14d) | 2012-07-02 → 2012-07-17 (+15d) |  |  |  |  |  |
| 151 | QA | 2012-07-03 → 2012-07-17 (+14d) | 2012-07-05 → 2012-07-20 (+15d) |  |  |  |  |  |
| 152 | Appscan | 2012-06-27 → 2012-07-11 (+14d) | 2012-06-29 → 2012-07-16 (+17d) |  |  |  |  |  |
| 153 | **RC2** | 2012-07-06 → 2012-07-20 (+14d) | 2012-07-20 → 2012-08-06 (+17d) |  |  |  |  |  |
| 154 | Fix any Issue | 2012-07-06 → 2012-07-20 (+14d) | 2012-07-12 → 2012-07-27 (+15d) |  |  |  |  |  |
| 155 | RC2 to Stage | 2012-07-13 → 2012-07-27 (+14d) | 2012-07-17 → 2012-08-01 (+15d) |  |  |  |  |  |
| 156 | QA | 2012-07-18 → 2012-08-01 (+14d) | 2012-07-20 → 2012-08-06 (+17d) |  |  |  |  |  |
| 157 | Appscan | 2012-07-18 → 2012-08-01 (+14d) | 2012-07-20 → 2012-08-06 (+17d) |  |  |  |  |  |
| 158 | Prod Release/Final UAT for TRANSCEND | 2012-07-23 → 2012-08-06 (+14d) | 2012-07-25 → 2012-08-09 (+15d) |  |  |  |  |  |

## Version 40 (saved 2012-03-29, file caintegrator_project_plan.mpp)

Last finish 2012-08-09 → 2012-07-17 (-23d). Complete tasks 76 → 78.

Added:

| ID | Task | Duration | Start | Finish | Constraint | Resources |
| --- | --- | --- | --- | --- | --- | --- |
| 125 | caGrid upgrade Testing | 0.5d | 2012-04-12 | 2012-04-12 | start no earlier than 2012-04-12 | JP |
| 137 | **Documentaion** | 70.1d? | 2012-02-23 | 2012-05-31 |  |  |

Changed:

| ID | Task | Start | Finish | Duration | Complete | Total float | Predecessors | Other |
| --- | --- | --- | --- | --- | --- | --- | --- | --- |
| 34 | **CaIntegrator Version 1.4** |  | 2012-08-09 → 2012-07-17 (-23d) | 257.4d? → 240.5d? | 51% → 53% |  |  |  |
| 63 | **TRANSCEND Feature implementation** |  | 2012-06-13 → 2012-06-06 (-7d) | 156.4d? → 151.5d? | 45% → 50% | 0d → 29d |  |  |
| 73 | **Version Control and Archive** |  | 2012-03-01 A |  | 89% → 100% | 74d → none |  |  |
| 80 | **Permission and Role base security** |  | 2012-05-29 → 2012-06-06 (+8d) | 83d → 88.5d | 35% → 41% | 10.4d → 29d |  |  |
| 82 | **JIRA CAINT-1101 - Implementation:Role based security in caIntegrator to support TRANSCEND** |  | 2012-05-22 → 2012-05-30 (+8d) | 73d → 78.5d | 37% → 41% | 10.4d → 29d |  |  |
| 86 | JIRA CAINT-1106 Add the Authorized Elements Group to the CSM protected elements configuration. be sure csm api returns the authorized elements.(5) |  | 2012-03-28 → 2012-03-29 A (+1d) | 6d → 7d | 70% → 100% | 15.4d → none |  |  |
| 87 | JIRA CAINT-1107 Modify study management service to CRUD authorized elements.(8) | 2012-03-29 → 2012-04-12 (+14d) | 2012-04-16 → 2012-04-24 (+8d) |  |  | 10.4d → 0d | 86 → 86, 123, 125 |  |
| 88 | JIRA CAINT-1108 Update Manage Query service to check permissions to see allowed items (columns, values, experiment IDs).(8) | 2012-04-17 → 2012-04-24 (+7d) | 2012-04-26 → 2012-05-04 (+8d) |  |  | 10.4d → 0d |  |  |
| 89 | JIRA CAINT-1109 Update Perform Analysis service to check permissions to see allowed items (columns, values, experiment IDs).(8) | 2012-04-27 → 2012-05-04 (+7d) | 2012-05-09 → 2012-05-17 (+8d) |  |  | 10.4d → 0d |  |  |
| 90 | JIRA CAINT-1110 Create action and jsp for new admin screen.(5) | 2012-05-10 → 2012-05-17 (+7d) | 2012-05-16 → 2012-05-24 (+8d) |  |  | 10.4d → 0d |  |  |
| 91 | JIRA CAINT-1111 Update integration (nightly) tests to pass.(3) | 2012-05-17 → 2012-05-24 (+7d) | 2012-05-22 → 2012-05-30 (+8d) |  |  | 10.4d → 29d |  |  |
| 93 | QA - Permission and Role based security | 2012-05-23 → 2012-05-30 (+7d) | 2012-05-29 → 2012-06-06 (+8d) |  |  | 10.4d → 29d |  |  |
| 94 | UAT for role based security | 2012-05-23 → 2012-05-30 (+7d) | 2012-05-23 → 2012-05-31 (+8d) |  |  | 4d → 33d |  |  |
| 95 | **Automatic Refresh with caArray** |  | 2012-05-16 → 2012-05-15 (-1d) | 59d? → 58d? | 15% → 16% | 20d → 45.1d |  |  |
| 109 | **Single Sign-On (caArray and caIntegrator)** |  | 2012-06-13 → 2012-05-23 (-21d) | 52.4d? → 38d? |  | 0d → 28.5d |  |  |
| 111 | **JIRA CAINT-1122 Single Sign-on** | 2012-05-10 → 2012-04-23 (-17d) | 2012-06-07 → 2012-05-18 (-20d) |  |  | 0d → 13.5d |  | resources ABE → PS |
| 112 | Verify CAS SSO server exists for us on the DEV tier, get uid and password to create credentials, learn user creation UI and setup users. (1) | 2012-05-10 → 2012-04-23 (-17d) | 2012-05-11 → 2012-04-23 (-18d) |  |  | 0d → 12d | 96 → none | constraint none → start no earlier than 2012-04-23; resources ABE → PS |
| 113 | read and investigate installation options for CAS and decide if CAS is compatible with existing acegi credential lib. (3) | 2012-05-11 → 2012-04-24 (-17d) | 2012-05-17 → 2012-04-27 (-20d) |  |  | 0d → 12d |  | resources ABE → PS |
| 114 | Add CAS libaries to local svn repo, modify web.xml to support CAS filters, be sure nothing breaks. (2) | 2012-05-17 → 2012-04-30 (-17d) | 2012-05-23 → 2012-05-03 (-20d) |  |  | 0d → 12d |  | resources ABE → PS |
| 115 | modify cai authentication classes to remove or modify acegi.(5) | 2012-05-23 → 2012-05-04 (-19d) | 2012-05-30 → 2012-05-10 (-20d) |  |  | 0d → 12d |  | resources ABE → PS |
| 116 | Confirm that caArray rmi API still works with a caArray installation modified for SSO. Verify that we can use caArray userids that were created in CAS. Handle any issues. (2) | 2012-05-30 → 2012-05-11 (-19d) | 2012-06-04 → 2012-05-15 (-20d) |  |  | 0d → 37d |  | resources ABE → PS |
| 117 | Add CAS libraries to NEXUS and confirm functionality. Run CI build, NIGHTLY build. Run deployment to DEV tier. (1) | 2012-06-04 → 2012-05-16 (-19d) | 2012-06-07 → 2012-05-18 (-20d) |  |  | 0d → 37d |  | resources ABE → PS |
| 118 | QA -Single Sign-On (caArray and caIntegrator) | 2012-06-07 → 2012-05-21 (-17d) | 2012-06-12 → 2012-05-23 (-20d) |  |  | 1d → 4d |  | resources ABE → PS |
| 119 | Demo for Single Sign-On (caArray and caIntegrator) | 2012-06-07 → 2012-05-21 (-17d) | 2012-06-08 → 2012-05-21 (-18d) |  |  | 3d → 6d |  |  |
| 120 | **New Maintenance, Bugs, Tech Stack Upgrade & Performance** | 2012-02-14 A | 2012-05-31 → 2012-05-16 (-15d) | 77d? → 65.4d? | 0% → 2% | 49.4d → 44.1d |  |  |
| 121 | **Tech Stack Pending Work** | 2012-02-14 A | 2012-05-31 → 2012-05-16 (-15d) | 77d? → 65.4d? | 0% → 2% | 49.4d → 44.1d |  |  |
| 122 | UPT Upgrade to JBOSS 5.0 | 2012-02-29 → 2012-03-12 A (+12d) | 2012-02-29 → 2012-03-12 A (+12d) |  | 0% → 100% | 108.4d → none |  |  |
| 123 | JIRA CAINT(1085) Phase -2 Add UPT deployment config and instructions to the DEV/QA/tiers PTE. | 2012-05-23 → 2012-03-30 (-54d) | 2012-05-25 → 2012-04-10 (-45d) |  |  | 49.4d → 1.5d | 91, 122 → 122, 86 |  |
| 124 | Test QA tier | 2012-05-28 → 2012-04-11 (-47d) | 2012-05-31 → 2012-04-11 (-50d) | 4d → 1d |  | 49.4d → 68.5d |  |  |
| 126 | **Bug fixes** | 2012-05-28 → 2012-05-10 (-18d) | 2012-05-31 → 2012-05-16 (-15d) |  |  | 49.4d → 44.1d |  |  |
| 127 | JIRA CAINT-1091 Generating a KM plot from a study with 300 annotation columns causes an internal server error | 2012-05-28 → 2012-05-10 (-18d) | 2012-05-31 → 2012-05-16 (-15d) |  |  | 49.4d → 44.1d | 123 → 106 | resources JP → ABE |
| 139 | Documentation for Automatic Refresh | 2012-05-10 → 2012-05-02 (-8d) | 2012-05-16 → 2012-05-09 (-7d) | 4d → 5d |  | 20d → 16.1d | 96 → 104 |  |
| 140 | Documentation for Role Based Security | 2012-05-23 → 2012-05-24 (+1d) | 2012-05-29 → 2012-05-31 (+2d) |  |  | 10.4d → 0d | 82 → 90 |  |
| 141 | Documentation for Single Sign-On | 2012-06-07 → 2012-05-11 (-27d) | 2012-06-13 → 2012-05-11 (-33d) | 4d → 1d? |  | 0d → 13.5d | 111 → 115 |  |
| 142 | **Release to Prod (1.4)** | 2012-06-13 → 2012-05-24 (-20d) | 2012-08-09 → 2012-07-17 (-23d) | 41d? → 38d? |  |  |  |  |
| 143 | **Prep for Release** | 2012-06-13 → 2012-05-24 (-20d) | 2012-06-27 → 2012-06-04 (-23d) | 10d? → 7d? |  |  |  |  |
| 144 | Appscan on Dev | 2012-06-13 → 2012-05-24 (-20d) | 2012-06-15 → 2012-05-28 (-18d) |  |  | 3d → 0d | 63 → 90 |  |
| 145 | Fix Any issues from Appscan | 2012-06-15 → 2012-05-28 (-18d) | 2012-06-22 → 2012-06-04 (-18d) |  |  | 3d → 0d |  | resources JP → ABE |
| 146 | 508 compliance check | 2012-06-15 → 2012-05-28 (-18d) | 2012-06-20 → 2012-05-31 (-20d) |  |  | 5d → 2d |  | resources MAX → JP |
| 147 | Documentation Updates | 2012-06-13 → 2012-05-31 (-13d) | 2012-06-27 → 2012-06-04 (-23d) | 10d → 2d |  |  | 63 → 137 |  |
| 148 | Prep: Announcements and other updates (landing page etc) | 2012-06-15 → 2012-05-28 (-18d) | 2012-06-18 → 2012-05-29 (-20d) |  |  | 7d → 4d |  |  |
| 149 | Release Notes | 2012-06-15 → 2012-05-28 (-18d) | 2012-06-18 → 2012-05-29 (-20d) |  |  | 7d → 4d |  |  |
| 150 | Integration Test | 2012-06-27 → 2012-06-04 (-23d) | 2012-07-11 → 2012-06-18 (-23d) |  |  |  |  |  |
| 151 | **RC1** | 2012-07-11 → 2012-06-18 (-23d) | 2012-07-20 → 2012-06-27 (-23d) |  |  |  |  |  |
| 152 | RC1 to Stage | 2012-07-11 → 2012-06-18 (-23d) | 2012-07-17 → 2012-06-22 (-25d) |  |  |  |  |  |
| 153 | QA | 2012-07-17 → 2012-06-22 (-25d) | 2012-07-20 → 2012-06-27 (-23d) |  |  |  |  |  |
| 154 | Appscan | 2012-07-11 → 2012-06-18 (-23d) | 2012-07-16 → 2012-06-21 (-25d) |  |  |  |  |  |
| 155 | **RC2** | 2012-07-20 → 2012-06-27 (-23d) | 2012-08-06 → 2012-07-12 (-25d) |  |  |  |  |  |
| 156 | Fix any Issue | 2012-07-20 → 2012-06-27 (-23d) | 2012-07-27 → 2012-07-04 (-23d) |  |  |  |  |  |
| 157 | RC2 to Stage | 2012-07-27 → 2012-07-04 (-23d) | 2012-08-01 → 2012-07-09 (-23d) |  |  |  |  |  |
| 158 | QA | 2012-08-01 → 2012-07-09 (-23d) | 2012-08-06 → 2012-07-12 (-25d) |  |  |  |  |  |
| 159 | Appscan | 2012-08-01 → 2012-07-09 (-23d) | 2012-08-06 → 2012-07-12 (-25d) |  |  |  |  |  |
| 160 | Prod Release/Final UAT for TRANSCEND | 2012-08-06 → 2012-07-12 (-25d) | 2012-08-09 → 2012-07-17 (-23d) |  |  |  |  |  |

## Version 41 (saved 2012-04-03, file caintegrator_project_plan.mpp)

Last finish 2012-07-17 → 2012-07-19 (+2d).

Added:

| ID | Task | Duration | Start | Finish | Predecessors | Resources |
| --- | --- | --- | --- | --- | --- | --- |
| 130 | Test caCore upgrade | 2d | 2012-04-12 | 2012-04-16 | 129 | HS |

Removed: 125 caGrid upgrade Testing

Changed:

| ID | Task | Start | Finish | Duration | Complete | Total float | Predecessors | Other |
| --- | --- | --- | --- | --- | --- | --- | --- | --- |
| 34 | **CaIntegrator Version 1.4** |  | 2012-07-17 → 2012-07-19 (+2d) | 240.5d? → 243d? | 53% → 52% | 0d → 14.4d |  |  |
| 63 | **TRANSCEND Feature implementation** |  | 2012-06-06 → 2012-06-04 (-2d) | 151.5d? → 150d? | 50% → 46% | 29d → 33d |  |  |
| 73 | **Version Control and Archive** |  | 2012-03-01 A → 2012-03-01 |  | 100% → 89% | none → 100.6d |  |  |
| 81 | **Permission and Role base security** |  | 2012-06-06 → 2012-06-04 (-2d) | 88.5d → 87d | 41% → 38% | 29d → 33d |  |  |
| 83 | **JIRA CAINT-1101 - Implementation:Role based security in caIntegrator to support TRANSCEND** |  | 2012-05-30 → 2012-05-28 (-2d) | 78.5d → 77d |  | 29d → 0d |  |  |
| 88 | JIRA CAINT-1107 Modify study management service to CRUD authorized elements.(8) | 2012-04-12 → 2012-04-11 (-1d) | 2012-04-24 → 2012-04-20 (-4d) |  |  |  | 87, 127, caGrid upgrade Testing → 87, 127 |  |
| 89 | JIRA CAINT-1108 Update Manage Query service to check permissions to see allowed items (columns, values, experiment IDs).(8) | 2012-04-24 → 2012-04-23 (-1d) | 2012-05-04 → 2012-05-02 (-2d) |  |  |  |  |  |
| 90 | JIRA CAINT-1109 Update Perform Analysis service to check permissions to see allowed items (columns, values, experiment IDs).(8) | 2012-05-04 → 2012-05-03 (-1d) | 2012-05-17 → 2012-05-15 (-2d) |  |  |  |  |  |
| 91 | JIRA CAINT-1110 Create action and jsp for new admin screen.(5) | 2012-05-17 → 2012-05-16 (-1d) | 2012-05-24 → 2012-05-22 (-2d) |  |  |  |  |  |
| 92 | JIRA CAINT-1111 Update integration (nightly) tests to pass.(3) | 2012-05-24 → 2012-05-23 (-1d) | 2012-05-30 → 2012-05-28 (-2d) |  |  | 29d → 0d |  |  |
| 94 | Documentation for Role Based Security | 2012-05-24 → 2012-05-03 (-21d) | 2012-05-31 → 2012-05-09 (-22d) |  |  | 0d → 51d | 91 → 89 |  |
| 95 | QA - Permission and Role based security | 2012-05-30 → 2012-05-29 (-1d) | 2012-06-06 → 2012-06-04 (-2d) |  |  | 29d → 33d |  |  |
| 96 | UAT for role based security | 2012-05-30 → 2012-05-29 (-1d) | 2012-05-31 → 2012-05-29 (-2d) |  |  | 33d → 10.4d |  |  |
| 97 | **Automatic Refresh with caArray** |  | 2012-05-15 → 2012-05-16 (+1d) | 58d? → 59d? | 16% → 15% | 45.1d → 46.6d |  |  |
| 109 | Documentation for Automatic Refresh | 2012-05-02 → 2012-05-10 (+8d) | 2012-05-09 → 2012-05-16 (+7d) | 5d → 4d |  | 16.1d → 20d | 106 → 98 |  |
| 112 | **Single Sign-On (caArray and caIntegrator)** |  | 2012-05-23 → 2012-05-24 (+1d) | 38d? → 39d? |  | 28.5d → 40d |  |  |
| 122 | Documentation for Single Sign-On | 2012-05-11 → 2012-05-21 (+10d) | 2012-05-11 → 2012-05-24 (+13d) | 1d? → 4d |  | 13.5d → 40d | 118 → 114 |  |
| 124 | **New Maintenance, Bugs, Tech Stack Upgrade & Performance** |  | 2012-05-16 → 2012-05-30 (+14d) | 65.4d? → 75.4d? |  | 44.1d → 51d |  |  |
| 125 | **Tech Stack Pending Work** |  | 2012-05-16 → 2012-05-30 (+14d) | 65.4d? → 75.4d? |  | 44.1d → 51d |  |  |
| 126 | UPT Upgrade to JBOSS 5.0 |  |  |  |  |  |  | constraint start no earlier than 2012-02-29 → start no earlier than 2012-03-12 |
| 127 | JIRA CAINT(1085) Phase -2 Add UPT deployment config and instructions to the DEV/QA/tiers PTE. |  |  |  |  | 1.5d → 0d | 126, 87 → none | constraint none → start no earlier than 2012-03-30 |
| 129 | caCore upgrade 1.5 | 2012-02-23 → 2012-04-12 (+49d) | 2012-05-31 → 2012-04-12 (-49d) | 70.1d? → 0.5d |  | 0d → 68.5d |  | was named Documentaion; constraint none → start no earlier than 2012-04-12; resources none → JP |
| 138 | **Performance requirements** |  | 2012-05-04 → 2012-05-30 (+26d) | 30d → 47.4d |  | 51.5d → 36.6d |  |  |
| 141 | Fix any issues | 2012-04-23 → 2012-05-16 (+23d) | 2012-05-04 → 2012-05-30 (+26d) |  |  | 51.5d → 36.6d | 140, 133 → 140, 132 | resources JP → ABE |
| 142 | **Release to Prod (1.4)** | 2012-05-24 → 2012-05-29 (+5d) | 2012-07-17 → 2012-07-19 (+2d) |  |  |  |  |  |
| 143 | **Prep for Release** | 2012-05-24 → 2012-05-29 (+5d) | 2012-06-04 → 2012-06-06 (+2d) |  |  |  |  |  |
| 144 | Appscan on Dev | 2012-05-24 → 2012-05-29 (+5d) | 2012-05-28 → 2012-05-30 (+2d) |  |  |  | 91 → 92 |  |
| 145 | Fix Any issues from Appscan | 2012-05-28 → 2012-05-31 (+3d) | 2012-06-04 → 2012-06-06 (+2d) |  |  |  |  | resources ABE → JP |
| 146 | 508 compliance check | 2012-05-28 → 2012-05-29 (+1d) |  |  |  | 2d → 35d | 144 → 92 | resources JP → ABE |
| 147 | Documentation Updates | 2012-05-31 → 2012-05-29 (-2d) | 2012-06-04 → 2012-06-05 (+1d) | 2d → 6d |  | 0d → 32d | 129 → 92 |  |
| 148 | Prep: Announcements and other updates (landing page etc) | 2012-05-28 → 2012-05-31 (+3d) | 2012-05-29 → 2012-05-31 (+2d) |  |  | 4d → 35d |  |  |
| 149 | Release Notes | 2012-05-28 → 2012-05-31 (+3d) | 2012-05-29 → 2012-05-31 (+2d) |  |  | 4d → 35d |  |  |
| 150 | Integration Test | 2012-06-04 → 2012-06-07 (+3d) | 2012-06-18 → 2012-06-20 (+2d) |  |  |  | 143 → 145 |  |
| 151 | **RC1** | 2012-06-18 → 2012-06-21 (+3d) | 2012-06-27 → 2012-06-29 (+2d) |  |  |  |  |  |
| 152 | RC1 to Stage | 2012-06-18 → 2012-06-21 (+3d) | 2012-06-22 → 2012-06-26 (+4d) |  |  |  |  |  |
| 153 | QA | 2012-06-22 → 2012-06-27 (+5d) | 2012-06-27 → 2012-06-29 (+2d) |  |  |  |  |  |
| 154 | Appscan | 2012-06-18 → 2012-06-21 (+3d) | 2012-06-21 → 2012-06-25 (+4d) |  |  |  |  |  |
| 155 | **RC2** | 2012-06-27 → 2012-07-02 (+5d) | 2012-07-12 → 2012-07-16 (+4d) |  |  |  |  |  |
| 156 | Fix any Issue | 2012-06-27 → 2012-07-02 (+5d) | 2012-07-04 → 2012-07-06 (+2d) |  |  |  |  |  |
| 157 | RC2 to Stage | 2012-07-04 → 2012-07-09 (+5d) | 2012-07-09 → 2012-07-11 (+2d) |  |  |  |  |  |
| 158 | QA | 2012-07-09 → 2012-07-12 (+3d) | 2012-07-12 → 2012-07-16 (+4d) |  |  |  |  |  |
| 159 | Appscan | 2012-07-09 → 2012-07-12 (+3d) | 2012-07-12 → 2012-07-16 (+4d) |  |  |  |  |  |
| 160 | Prod Release/Final UAT for TRANSCEND | 2012-07-12 → 2012-07-17 (+5d) | 2012-07-17 → 2012-07-19 (+2d) |  |  |  |  |  |

## Version 42 (saved 2012-04-10, file caintegrator_project_plan.mpp)

Last finish 2012-07-19 → 2012-07-23 (+4d). Complete tasks 78 → 80.

Added:

| ID | Task | Duration | Start | Finish | Predecessors | Constraint | Resources |
| --- | --- | --- | --- | --- | --- | --- | --- |
| 108 | JIRA CAINT-1119:Modify the Map Samples screen with "Clear new data notification" | 3d | 2012-05-04 | 2012-05-09 | 107 |  | ABE |
| 109 | JIRA CAINT-1129:create process for querying caArray to get "new data" indicators - integratw with real caArray service | 2d | 2012-05-09 | 2012-05-11 | 108 |  | ABE |
| 134 | JIRA CAINT-1097 Aempting to create a long Gene or Subject List description results in 500 error | 1d | 2012-04-06 A | 2012-04-06 A |  | start no earlier than 2012-04-06 | ABE |

Changed:

| ID | Task | Start | Finish | Duration | Complete | Total float | Predecessors | Other |
| --- | --- | --- | --- | --- | --- | --- | --- | --- |
| 34 | **CaIntegrator Version 1.4** |  | 2012-07-19 → 2012-07-23 (+4d) | 243d? → 244.5d? | 52% → 55% | 14.4d → 0d |  |  |
| 63 | **TRANSCEND Feature implementation** |  | 2012-06-04 → 2012-06-06 (+2d) | 150d? → 151.5d? | 46% → 53% |  |  |  |
| 81 | **Permission and Role base security** |  | 2012-06-04 → 2012-06-06 (+2d) | 87d → 88.5d |  |  |  |  |
| 83 | **JIRA CAINT-1101 - Implementation:Role based security in caIntegrator to support TRANSCEND** |  | 2012-05-28 → 2012-05-30 (+2d) | 77d → 78.5d |  |  |  |  |
| 88 | JIRA CAINT-1107 Modify study management service to CRUD authorized elements.(8) | 2012-04-11 → 2012-04-12 (+1d) | 2012-04-20 → 2012-04-24 (+4d) |  |  |  | 87, 129 → 87, 129, 131 |  |
| 89 | JIRA CAINT-1108 Update Manage Query service to check permissions to see allowed items (columns, values, experiment IDs).(8) | 2012-04-23 → 2012-04-24 (+1d) | 2012-05-02 → 2012-05-04 (+2d) |  |  |  |  |  |
| 90 | JIRA CAINT-1109 Update Perform Analysis service to check permissions to see allowed items (columns, values, experiment IDs).(8) | 2012-05-03 → 2012-05-04 (+1d) | 2012-05-15 → 2012-05-17 (+2d) |  |  |  |  |  |
| 91 | JIRA CAINT-1110 Create action and jsp for new admin screen.(5) | 2012-05-16 → 2012-05-17 (+1d) | 2012-05-22 → 2012-05-24 (+2d) |  |  |  |  |  |
| 92 | JIRA CAINT-1111 Update integration (nightly) tests to pass.(3) | 2012-05-23 → 2012-05-24 (+1d) | 2012-05-28 → 2012-05-30 (+2d) |  |  |  |  |  |
| 94 | Documentation for Role Based Security | 2012-05-03 → 2012-05-04 (+1d) | 2012-05-09 → 2012-05-11 (+2d) |  |  |  |  |  |
| 95 | QA - Permission and Role based security | 2012-05-29 → 2012-05-30 (+1d) | 2012-06-04 → 2012-06-06 (+2d) |  |  |  |  |  |
| 96 | UAT for role based security | 2012-05-29 → 2012-05-30 (+1d) | 2012-05-29 → 2012-05-31 (+2d) |  |  | 10.4d → 37d |  |  |
| 97 | **Automatic Refresh with caArray** |  | 2012-05-16 → 2012-05-23 (+7d) | 59d? → 64d? | 15% → 44% | 46.6d → 43.1d |  |  |
| 98 | **JIRA CAINT-1094 - Implementation: Automatic Refresh with caArray** |  | 2012-05-10 → 2012-05-17 (+7d) | 55d → 60d | 18% → 50% | 36.6d → 33.1d |  |  |
| 102 | On Hold until for new developer | 2012-03-13 A | 2012-04-09 A |  | 0% → 100% | 36.6d → none |  |  |
| 103 | JIRA CAINT-1118 :Modify the Map Samples screen and action to query new samples. Integration with internally mocked caArray API. |  |  |  |  | 36.6d → 33.1d |  | was named Create method (or asynch process) for querying caArray to get new data indicators for all experiments that the user has access to.(5) |
| 104 | JIRA CAINT-1115 :create process for querying caArray to get "new data" indicators |  | 2012-04-18 → 2012-04-24 (+6d) | 2d → 6d |  | 36.6d → 33.1d |  | was named Modify Manage Studies screen and action to read and display new data flag. (1) |
| 105 | JIRA CAINT-1116: Modify Manage Studies screen and action. | 2012-04-18 → 2012-04-24 (+6d) | 2012-04-20 → 2012-04-26 (+6d) |  |  | 36.6d → 33.1d |  | was named Modify Edit Study screen and action to read and display genomic data source flag.(1) |
| 106 | JIRA CAINT-1117: Modify Edit screen and action. | 2012-04-20 → 2012-04-26 (+6d) | 2012-05-02 → 2012-04-30 (-2d) | 8d → 2d |  | 36.6d → 33.1d |  | was named Modify the Map Samples screen to query caArray for current samples and produce a UI to indicate what has added/removed. (8) |
| 107 | JIRA CAINT-1128:Modify the Map Samples screen and action to query new samples. Integration with real caArray API. | 2012-05-02 → 2012-04-30 (-2d) | 2012-05-08 → 2012-05-04 (-4d) |  |  | 36.6d → 33.1d |  | was named Modify the Map Samples screen and action to handle a new checkbox for Clear new data notification. (3) |
| 110 | JIRA CAINT-1120:Integrate and test with real caArray service. | 2012-05-08 → 2012-05-11 (+3d) | 2012-05-10 → 2012-05-17 (+7d) | 2d → 4d |  | 36.6d → 33.1d | 107 → 109 | was named Integrate and test with real caArray service.(3) |
| 111 | Documentation for Automatic Refresh | 2012-05-10 → 2012-05-17 (+7d) | 2012-05-16 → 2012-05-23 (+7d) |  |  | 20d → 43.1d |  |  |
| 112 | QA - Automatic Refresh with caArray | 2012-05-10 → 2012-05-17 (+7d) | 2012-05-15 → 2012-05-22 (+7d) |  |  | 21d → 44.1d |  |  |
| 113 | Demo for Automatic Refresh | 2012-05-10 → 2012-05-17 (+7d) | 2012-05-11 → 2012-05-18 (+7d) |  |  | 23d → 46.1d |  |  |
| 126 | **New Maintenance, Bugs, Tech Stack Upgrade & Performance** |  | 2012-05-30 → 2012-06-06 (+7d) | 75.4d? → 80.4d? | 2% → 4% | 51d → 33.1d |  |  |
| 127 | **Tech Stack Pending Work** |  | 2012-05-30 → 2012-06-06 (+7d) | 75.4d? → 80.4d? | 2% → 4% | 51d → 33.1d |  |  |
| 129 | JIRA CAINT(1085) Phase -2 Add UPT deployment config and instructions to the DEV/QA/tiers PTE. |  | 2012-04-10 → 2012-04-11 (+1d) |  |  | 0d → 0.5d |  |  |
| 130 | Test QA tier | 2012-04-11 → 2012-04-12 (+1d) | 2012-04-11 → 2012-04-12 (+1d) |  |  | 85.4d → 71.5d |  |  |
| 133 | **Bug fixes** | 2012-05-10 → 2012-04-06 A (-34d) | 2012-05-16 → 2012-05-23 (+7d) | 4d → 33.4d | 0% → 20% | 36.6d → 33.1d |  |  |
| 135 | JIRA CAINT-1091 Generating a KM plot from a study with 300 annotation columns causes an internal server error | 2012-05-10 → 2012-05-17 (+7d) | 2012-05-16 → 2012-05-23 (+7d) |  |  | 36.6d → 33.1d |  |  |
| 141 | **Performance requirements** |  | 2012-05-30 → 2012-06-06 (+7d) | 47.4d → 52.4d |  | 36.6d → 33.1d |  |  |
| 144 | Fix any issues | 2012-05-16 → 2012-05-23 (+7d) | 2012-05-30 → 2012-06-06 (+7d) |  |  | 36.6d → 33.1d |  |  |
| 145 | **Release to Prod (1.4)** | 2012-05-29 → 2012-05-30 (+1d) | 2012-07-19 → 2012-07-23 (+4d) |  |  |  |  |  |
| 146 | **Prep for Release** | 2012-05-29 → 2012-05-30 (+1d) | 2012-06-06 → 2012-06-08 (+2d) |  |  |  |  |  |
| 147 | Appscan on Dev | 2012-05-29 → 2012-05-30 (+1d) | 2012-05-30 → 2012-06-01 (+2d) |  |  |  |  |  |
| 148 | Fix Any issues from Appscan | 2012-05-31 → 2012-06-01 (+1d) | 2012-06-06 → 2012-06-08 (+2d) |  |  |  |  |  |
| 149 | 508 compliance check | 2012-05-29 → 2012-05-30 (+1d) | 2012-05-31 → 2012-06-04 (+4d) |  |  |  |  |  |
| 150 | Documentation Updates | 2012-05-29 → 2012-05-30 (+1d) | 2012-06-05 → 2012-06-07 (+2d) |  |  |  |  |  |
| 151 | Prep: Announcements and other updates (landing page etc) | 2012-05-31 → 2012-06-01 (+1d) | 2012-05-31 → 2012-06-04 (+4d) |  |  |  |  |  |
| 152 | Release Notes | 2012-05-31 → 2012-06-01 (+1d) | 2012-05-31 → 2012-06-04 (+4d) |  |  |  |  |  |
| 153 | Integration Test | 2012-06-07 → 2012-06-08 (+1d) | 2012-06-20 → 2012-06-22 (+2d) |  |  |  |  |  |
| 154 | **RC1** | 2012-06-21 → 2012-06-22 (+1d) | 2012-06-29 → 2012-07-03 (+4d) |  |  |  |  |  |
| 155 | RC1 to Stage | 2012-06-21 → 2012-06-22 (+1d) | 2012-06-26 → 2012-06-28 (+2d) |  |  |  |  |  |
| 156 | QA | 2012-06-27 → 2012-06-28 (+1d) | 2012-06-29 → 2012-07-03 (+4d) |  |  |  |  |  |
| 157 | Appscan | 2012-06-21 → 2012-06-22 (+1d) | 2012-06-25 → 2012-06-27 (+2d) |  |  |  |  |  |
| 158 | **RC2** | 2012-07-02 → 2012-07-03 (+1d) | 2012-07-16 → 2012-07-18 (+2d) |  |  |  |  |  |
| 159 | Fix any Issue | 2012-07-02 → 2012-07-03 (+1d) | 2012-07-06 → 2012-07-10 (+4d) |  |  |  |  |  |
| 160 | RC2 to Stage | 2012-07-09 → 2012-07-10 (+1d) | 2012-07-11 → 2012-07-13 (+2d) |  |  |  |  |  |
| 161 | QA | 2012-07-12 → 2012-07-13 (+1d) | 2012-07-16 → 2012-07-18 (+2d) |  |  |  |  |  |
| 162 | Appscan | 2012-07-12 → 2012-07-13 (+1d) | 2012-07-16 → 2012-07-18 (+2d) |  |  |  |  |  |
| 163 | Prod Release/Final UAT for TRANSCEND | 2012-07-17 → 2012-07-18 (+1d) | 2012-07-19 → 2012-07-23 (+4d) |  |  |  |  |  |

## Version 43 (saved 2012-04-17, file caintegrator_project_plan.mpp)

Last finish 2012-07-23 → 2012-07-26 (+3d). Complete tasks 80 → 86.

Changed:

| ID | Task | Start | Finish | Duration | Complete | Total float | Predecessors | Other |
| --- | --- | --- | --- | --- | --- | --- | --- | --- |
| 34 | **CaIntegrator Version 1.4** |  | 2012-07-23 → 2012-07-26 (+3d) | 244.5d? → 248d? | 55% → 59% |  |  |  |
| 63 | **TRANSCEND Feature implementation** |  | 2012-06-06 → 2012-06-11 (+5d) | 151.5d? → 155d? | 53% → 55% |  |  |  |
| 81 | **Permission and Role base security** |  | 2012-06-06 → 2012-06-11 (+5d) | 88.5d → 92d |  |  |  |  |
| 83 | **JIRA CAINT-1101 - Implementation:Role based security in caIntegrator to support TRANSCEND** |  | 2012-05-30 → 2012-06-04 (+5d) | 78.5d → 82d |  |  |  |  |
| 88 | JIRA CAINT-1107 Modify study management service to CRUD authorized elements.(8) | 2012-04-12 → 2012-04-18 (+6d) | 2012-04-24 → 2012-04-27 (+3d) |  |  |  |  |  |
| 89 | JIRA CAINT-1108 Update Manage Query service to check permissions to see allowed items (columns, values, experiment IDs).(8) | 2012-04-24 → 2012-04-30 (+6d) | 2012-05-04 → 2012-05-09 (+5d) |  |  |  |  |  |
| 90 | JIRA CAINT-1109 Update Perform Analysis service to check permissions to see allowed items (columns, values, experiment IDs).(8) | 2012-05-04 → 2012-05-10 (+6d) | 2012-05-17 → 2012-05-22 (+5d) |  |  |  |  |  |
| 91 | JIRA CAINT-1110 Create action and jsp for new admin screen.(5) | 2012-05-17 → 2012-05-23 (+6d) | 2012-05-24 → 2012-05-29 (+5d) |  |  |  |  |  |
| 92 | JIRA CAINT-1111 Update integration (nightly) tests to pass.(3) | 2012-05-24 → 2012-05-30 (+6d) | 2012-05-30 → 2012-06-04 (+5d) |  |  |  |  |  |
| 94 | Documentation for Role Based Security | 2012-05-04 → 2012-05-10 (+6d) | 2012-05-11 → 2012-05-16 (+5d) |  |  |  |  |  |
| 95 | QA - Permission and Role based security | 2012-05-30 → 2012-06-05 (+6d) | 2012-06-06 → 2012-06-11 (+5d) |  |  |  |  |  |
| 96 | UAT for role based security | 2012-05-30 → 2012-06-05 (+6d) | 2012-05-31 → 2012-06-05 (+5d) |  |  |  |  |  |
| 97 | **Automatic Refresh with caArray** |  |  |  | 44% → 52% | 43.1d → 46.6d |  |  |
| 98 | **JIRA CAINT-1094 - Implementation: Automatic Refresh with caArray** |  |  |  | 50% → 59% | 33.1d → 36.6d |  |  |
| 103 | JIRA CAINT-1118 :Modify the Map Samples screen and action to query new samples. Integration with internally mocked caArray API. | 2012-04-09 A | 2012-04-16 A |  | 0% → 100% | 33.1d → none |  |  |
| 126 | **New Maintenance, Bugs, Tech Stack Upgrade & Performance** |  |  |  | 4% → 28% | 33.1d → 36.6d |  |  |
| 127 | **Tech Stack Pending Work** |  |  |  | 4% → 28% | 33.1d → 36.6d |  |  |
| 129 | JIRA CAINT(1085) Phase -2 Add UPT deployment config and instructions to the DEV/QA/tiers PTE. | 2012-03-30 A | 2012-04-11 → 2012-04-16 A (+5d) | 3d → 5d | 0% → 100% | 0.5d → none |  |  |
| 130 | Test QA tier | 2012-04-12 → 2012-04-17 (+5d) | 2012-04-12 → 2012-04-17 (+5d) |  |  | 71.5d → 72d |  |  |
| 131 | caGrid upgrade 1.4 | 2012-04-12 → 2012-04-17 (+5d) | 2012-04-12 → 2012-04-17 (+5d) | 0.5d → 1d |  |  | none → 129 | was named caCore upgrade 1.5 |
| 132 | Test caCore upgrade | 2012-04-12 → 2012-04-18 (+6d) | 2012-04-16 → 2012-04-19 (+3d) |  |  |  |  |  |
| 136 | **Other Maintenance** | 2012-02-14 A | 2012-03-14 A |  | 0% → 100% | 92.5d → none |  |  |
| 137 | MATKC Support | 2012-02-14 A | 2012-02-21 A |  | 0% → 100% | 108.5d → none |  |  |
| 138 | Other Ongoing Support - MAT-KC, Planning | 2012-02-29 A | 2012-02-29 A |  | 0% → 100% | 102.5d → none |  |  |
| 139 | IGV Disclaimer, other support | 2012-03-09 A | 2012-03-09 A |  | 0% → 100% | 95.5d → none |  |  |
| 140 | caGrid upgrade analysis | 2012-03-13 A | 2012-03-14 A |  | 0% → 100% | 92.5d → none |  |  |
| 145 | **Release to Prod (1.4)** | 2012-05-30 → 2012-06-05 (+6d) | 2012-07-23 → 2012-07-26 (+3d) |  |  |  |  |  |
| 146 | **Prep for Release** | 2012-05-30 → 2012-06-05 (+6d) | 2012-06-08 → 2012-06-13 (+5d) |  |  |  |  |  |
| 147 | Appscan on Dev | 2012-05-30 → 2012-06-05 (+6d) | 2012-06-01 → 2012-06-06 (+5d) |  |  |  |  |  |
| 148 | Fix Any issues from Appscan | 2012-06-01 → 2012-06-07 (+6d) | 2012-06-08 → 2012-06-13 (+5d) |  |  |  |  |  |
| 149 | 508 compliance check | 2012-05-30 → 2012-06-05 (+6d) | 2012-06-04 → 2012-06-07 (+3d) |  |  |  |  |  |
| 150 | Documentation Updates | 2012-05-30 → 2012-06-05 (+6d) | 2012-06-07 → 2012-06-12 (+5d) |  |  |  |  |  |
| 151 | Prep: Announcements and other updates (landing page etc) | 2012-06-01 → 2012-06-07 (+6d) | 2012-06-04 → 2012-06-07 (+3d) |  |  |  |  |  |
| 152 | Release Notes | 2012-06-01 → 2012-06-07 (+6d) | 2012-06-04 → 2012-06-07 (+3d) |  |  |  |  |  |
| 153 | Integration Test | 2012-06-08 → 2012-06-14 (+6d) | 2012-06-22 → 2012-06-27 (+5d) |  |  |  |  |  |
| 154 | **RC1** | 2012-06-22 → 2012-06-28 (+6d) | 2012-07-03 → 2012-07-06 (+3d) |  |  |  |  |  |
| 155 | RC1 to Stage | 2012-06-22 → 2012-06-28 (+6d) | 2012-06-28 → 2012-07-03 (+5d) |  |  |  |  |  |
| 156 | QA | 2012-06-28 → 2012-07-04 (+6d) | 2012-07-03 → 2012-07-06 (+3d) |  |  |  |  |  |
| 157 | Appscan | 2012-06-22 → 2012-06-28 (+6d) | 2012-06-27 → 2012-07-02 (+5d) |  |  |  |  |  |
| 158 | **RC2** | 2012-07-03 → 2012-07-09 (+6d) | 2012-07-18 → 2012-07-23 (+5d) |  |  |  |  |  |
| 159 | Fix any Issue | 2012-07-03 → 2012-07-09 (+6d) | 2012-07-10 → 2012-07-13 (+3d) |  |  |  |  |  |
| 160 | RC2 to Stage | 2012-07-10 → 2012-07-16 (+6d) | 2012-07-13 → 2012-07-18 (+5d) |  |  |  |  |  |
| 161 | QA | 2012-07-13 → 2012-07-19 (+6d) | 2012-07-18 → 2012-07-23 (+5d) |  |  |  |  |  |
| 162 | Appscan | 2012-07-13 → 2012-07-19 (+6d) | 2012-07-18 → 2012-07-23 (+5d) |  |  |  |  |  |
| 163 | Prod Release/Final UAT for TRANSCEND | 2012-07-18 → 2012-07-24 (+6d) | 2012-07-23 → 2012-07-26 (+3d) |  |  |  |  |  |

## Version 44 (saved 2012-04-23, file caintegrator_project_plan.mpp)

Last finish stays 2012-07-26. Complete tasks 86 → 88.

Changed:

| ID | Task | Start | Finish | Duration | Complete | Total float | Predecessors | Other |
| --- | --- | --- | --- | --- | --- | --- | --- | --- |
| 34 | **CaIntegrator Version 1.4** |  |  |  | 59% → 60% |  |  |  |
| 63 | **TRANSCEND Feature implementation** |  |  |  | 55% → 57% |  |  |  |
| 97 | **Automatic Refresh with caArray** |  |  |  | 52% → 61% |  |  |  |
| 98 | **JIRA CAINT-1094 - Implementation: Automatic Refresh with caArray** |  |  |  | 59% → 70% |  |  |  |
| 104 | JIRA CAINT-1115 :create process for querying caArray to get "new data" indicators | 2012-04-16 A | 2012-04-24 A |  | 0% → 100% | 36.6d → none |  |  |
| 116 | **JIRA CAINT-1122 Single Sign-on** |  |  |  |  |  |  | resources PS → AS |
| 117 | Verify CAS SSO server exists for us on the DEV tier, get uid and password to create credentials, learn user creation UI and setup users. (1) |  |  |  |  |  |  | resources PS → AS |
| 118 | read and investigate installation options for CAS and decide if CAS is compatible with existing acegi credential lib. (3) |  |  |  |  |  |  | resources PS → AS |
| 119 | Add CAS libaries to local svn repo, modify web.xml to support CAS filters, be sure nothing breaks. (2) |  |  |  |  |  |  | resources PS → AS |
| 120 | modify cai authentication classes to remove or modify acegi.(5) |  |  |  |  |  |  | resources PS → AS |
| 126 | **New Maintenance, Bugs, Tech Stack Upgrade & Performance** |  |  |  | 28% → 30% |  |  |  |
| 127 | **Tech Stack Pending Work** |  |  |  | 28% → 30% |  |  |  |
| 130 | Test QA tier | 2012-04-17 → 2012-04-23 (+6d) | 2012-04-17 → 2012-04-24 (+7d) | 1d → 2d |  | 72d → 67d | 129 → none | constraint none → start no earlier than 2012-04-23 |
| 131 | caGrid upgrade 1.4 | 2012-04-17 A | 2012-04-17 A |  | 0% → 100% | 0d → none |  |  |

## Version 45 (saved 2012-04-28, file caintegrator_project_plan.mpp)

Last finish 2012-07-26 → 2012-07-18 (-8d). Complete tasks 88 → 95.

Added:

| ID | Task | Duration | Start | Finish | Constraint | Resources |
| --- | --- | --- | --- | --- | --- | --- |
| 132 | caGrid upgrade 2nd time 1.4 | 1d? | 2012-04-27 | 2012-04-27 | start no earlier than 2012-04-27 | ABE |

Changed:

| ID | Task | Start | Finish | Duration | Complete | Total float | Predecessors | Other |
| --- | --- | --- | --- | --- | --- | --- | --- | --- |
| 34 | **CaIntegrator Version 1.4** |  | 2012-07-26 → 2012-07-18 (-8d) | 248d? → 242d? | 60% → 64% |  |  |  |
| 63 | **TRANSCEND Feature implementation** |  | 2012-06-11 → 2012-06-01 (-10d) | 155d? → 149d? | 57% → 66% |  |  |  |
| 81 | **Permission and Role base security** |  | 2012-06-11 → 2012-06-01 (-10d) | 92d → 86d | 38% → 48% |  |  |  |
| 83 | **JIRA CAINT-1101 - Implementation:Role based security in caIntegrator to support TRANSCEND** |  | 2012-06-04 → 2012-05-25 (-10d) | 82d → 76d | 41% → 54% |  |  |  |
| 88 | JIRA CAINT-1107 Modify study management service to CRUD authorized elements.(8) | 2012-04-18 A | 2012-04-27 → 2012-04-26 A (-1d) | 8d → 7d | 0% → 100% | 0d → none |  |  |
| 89 | JIRA CAINT-1108 Update Manage Query service to check permissions to see allowed items (columns, values, experiment IDs).(8) | 2012-04-30 → 2012-04-27 (-3d) | 2012-05-09 → 2012-05-08 (-1d) |  |  |  |  |  |
| 90 | JIRA CAINT-1109 Update Perform Analysis service to check permissions to see allowed items (columns, values, experiment IDs).(8) | 2012-05-10 → 2012-05-09 (-1d) | 2012-05-22 → 2012-05-21 (-1d) |  |  |  |  |  |
| 91 | JIRA CAINT-1110 Create action and jsp for new admin screen.(5) | 2012-05-23 → 2012-04-27 (-26d) | 2012-05-29 → 2012-05-04 (-25d) |  |  | 0d → 11.6d | 90 → 98 | resources JP → ABE |
| 92 | JIRA CAINT-1111 Update integration (nightly) tests to pass.(3) | 2012-05-30 → 2012-05-22 (-8d) | 2012-06-04 → 2012-05-25 (-10d) |  |  |  | 91 → 91, 90 |  |
| 94 | Documentation for Role Based Security | 2012-05-10 → 2012-05-09 (-1d) | 2012-05-16 → 2012-05-15 (-1d) |  |  | 51d → 37d |  |  |
| 95 | QA - Permission and Role based security | 2012-06-05 → 2012-05-28 (-8d) | 2012-06-11 → 2012-06-01 (-10d) |  |  |  |  |  |
| 96 | UAT for role based security | 2012-06-05 → 2012-05-28 (-8d) | 2012-06-05 → 2012-05-28 (-8d) |  |  |  |  |  |
| 97 | **Automatic Refresh with caArray** |  | 2012-05-23 → 2012-05-03 (-20d) | 64d? → 50d? | 61% → 85% | 46.6d → 54.6d |  |  |
| 98 | **JIRA CAINT-1094 - Implementation: Automatic Refresh with caArray** |  | 2012-05-17 → 2012-04-27 A (-20d) | 60d → 46d | 70% → 100% | 36.6d → none |  |  |
| 105 | JIRA CAINT-1116: Modify Manage Studies screen and action. | 2012-04-24 A | 2012-04-26 A |  | 0% → 100% | 36.6d → none |  |  |
| 106 | JIRA CAINT-1117: Modify Edit screen and action. | 2012-04-26 A | 2012-04-30 → 2012-04-27 A (-3d) | 2d → 1d | 0% → 100% | 36.6d → none |  |  |
| 107 | JIRA CAINT-1128:Modify the Map Samples screen and action to query new samples. Integration with real caArray API. | 2012-04-30 → 2012-04-26 A (-4d) | 2012-05-04 → 2012-04-27 A (-7d) | 4d → 1d | 0% → 100% | 36.6d → none | 106 → 105 |  |
| 108 | JIRA CAINT-1119:Modify the Map Samples screen with "Clear new data notification" | 2012-05-04 → 2012-04-26 A (-8d) | 2012-05-09 → 2012-04-27 A (-12d) | 3d → 1d | 0% → 100% | 36.6d → none | 107 → 105 |  |
| 109 | JIRA CAINT-1129:create process for querying caArray to get "new data" indicators - integratw with real caArray service | 2012-05-09 → 2012-04-26 A (-13d) | 2012-05-11 → 2012-04-27 A (-14d) | 2d → 1d | 0% → 100% | 36.6d → none | 108 → 105 |  |
| 110 | JIRA CAINT-1120:Integrate and test with real caArray service. | 2012-05-11 → 2012-04-26 A (-15d) | 2012-05-17 → 2012-04-27 A (-20d) | 4d → 1d | 0% → 100% | 36.6d → none | 109 → 105 |  |
| 111 | Documentation for Automatic Refresh | 2012-05-17 → 2012-04-27 (-20d) | 2012-05-23 → 2012-05-03 (-20d) |  |  | 46.6d → 45.6d |  |  |
| 112 | QA - Automatic Refresh with caArray | 2012-05-17 → 2012-04-27 (-20d) | 2012-05-22 → 2012-05-02 (-20d) |  |  | 47.6d → 45.6d |  |  |
| 113 | Demo for Automatic Refresh | 2012-05-17 → 2012-05-02 (-15d) | 2012-05-18 → 2012-05-03 (-15d) |  |  | 49.6d → 45.6d | 98 → 112 |  |
| 126 | **New Maintenance, Bugs, Tech Stack Upgrade & Performance** |  | 2012-06-06 → 2012-05-17 (-20d) | 80.4d? → 66.4d? | 30% → 29% | 36.6d → 35.6d |  |  |
| 127 | **Tech Stack Pending Work** |  | 2012-06-06 → 2012-05-17 (-20d) | 80.4d? → 66.4d? | 30% → 29% | 36.6d → 44.6d |  |  |
| 133 | Test caCore upgrade | 2012-04-18 → 2012-04-30 (+12d) | 2012-04-19 → 2012-05-01 (+12d) |  |  | 70d → 47d | 131 → 132 |  |
| 134 | **Bug fixes** |  | 2012-05-23 → 2012-05-03 (-20d) | 33.4d → 19.4d |  | 36.6d → 35.6d |  |  |
| 136 | JIRA CAINT-1091 Generating a KM plot from a study with 300 annotation columns causes an internal server error | 2012-05-17 → 2012-04-27 (-20d) | 2012-05-23 → 2012-05-03 (-20d) |  |  | 36.6d → 35.6d |  |  |
| 142 | **Performance requirements** |  | 2012-06-06 → 2012-05-17 (-20d) | 52.4d → 38.4d |  | 36.6d → 35.6d |  |  |
| 145 | Fix any issues | 2012-05-23 → 2012-05-03 (-20d) | 2012-06-06 → 2012-05-17 (-20d) |  |  | 36.6d → 35.6d |  |  |
| 146 | **Release to Prod (1.4)** | 2012-06-05 → 2012-05-28 (-8d) | 2012-07-26 → 2012-07-18 (-8d) |  |  |  |  |  |
| 147 | **Prep for Release** | 2012-06-05 → 2012-05-28 (-8d) | 2012-06-13 → 2012-06-05 (-8d) |  |  |  |  |  |
| 148 | Appscan on Dev | 2012-06-05 → 2012-05-28 (-8d) | 2012-06-06 → 2012-05-29 (-8d) |  |  |  |  |  |
| 149 | Fix Any issues from Appscan | 2012-06-07 → 2012-05-30 (-8d) | 2012-06-13 → 2012-06-05 (-8d) |  |  |  |  |  |
| 150 | 508 compliance check | 2012-06-05 → 2012-05-28 (-8d) | 2012-06-07 → 2012-05-30 (-8d) |  |  |  |  |  |
| 151 | Documentation Updates | 2012-06-05 → 2012-05-28 (-8d) | 2012-06-12 → 2012-06-04 (-8d) |  |  |  |  |  |
| 152 | Prep: Announcements and other updates (landing page etc) | 2012-06-07 → 2012-05-30 (-8d) | 2012-06-07 → 2012-05-30 (-8d) |  |  |  |  |  |
| 153 | Release Notes | 2012-06-07 → 2012-05-30 (-8d) | 2012-06-07 → 2012-05-30 (-8d) |  |  |  |  |  |
| 154 | Integration Test | 2012-06-14 → 2012-06-06 (-8d) | 2012-06-27 → 2012-06-19 (-8d) |  |  |  |  |  |
| 155 | **RC1** | 2012-06-28 → 2012-06-20 (-8d) | 2012-07-06 → 2012-06-28 (-8d) |  |  |  |  |  |
| 156 | RC1 to Stage | 2012-06-28 → 2012-06-20 (-8d) | 2012-07-03 → 2012-06-25 (-8d) |  |  |  |  |  |
| 157 | QA | 2012-07-04 → 2012-06-26 (-8d) | 2012-07-06 → 2012-06-28 (-8d) |  |  |  |  |  |
| 158 | Appscan | 2012-06-28 → 2012-06-20 (-8d) | 2012-07-02 → 2012-06-22 (-10d) |  |  |  |  |  |
| 159 | **RC2** | 2012-07-09 → 2012-06-29 (-10d) | 2012-07-23 → 2012-07-13 (-10d) |  |  |  |  |  |
| 160 | Fix any Issue | 2012-07-09 → 2012-06-29 (-10d) | 2012-07-13 → 2012-07-05 (-8d) |  |  |  |  |  |
| 161 | RC2 to Stage | 2012-07-16 → 2012-07-06 (-10d) | 2012-07-18 → 2012-07-10 (-8d) |  |  |  |  |  |
| 162 | QA | 2012-07-19 → 2012-07-11 (-8d) | 2012-07-23 → 2012-07-13 (-10d) |  |  |  |  |  |
| 163 | Appscan | 2012-07-19 → 2012-07-11 (-8d) | 2012-07-23 → 2012-07-13 (-10d) |  |  |  |  |  |
| 164 | Prod Release/Final UAT for TRANSCEND | 2012-07-24 → 2012-07-16 (-8d) | 2012-07-26 → 2012-07-18 (-8d) |  |  |  |  |  |

## Version 46 (saved 2012-05-08, file caintegrator_project_plan.mpp)

Last finish 2012-07-18 → 2012-07-19 (+1d). Complete tasks 95 → 99.

Removed: 120 modify cai authentication classes to remove or modify acegi.(5); 121 Confirm that caArray rmi API still works with a caArray installation modified for SSO. Verify that we can use caArray userids that were created in CAS. Handle any issues. (2); 122 Add CAS libraries to NEXUS and confirm functionality. Run CI build, NIGHTLY build. Run deployment to DEV tier. (1)

Changed:

| ID | Task | Start | Finish | Duration | Complete | Total float | Predecessors | Other |
| --- | --- | --- | --- | --- | --- | --- | --- | --- |
| 34 | **CaIntegrator Version 1.4** |  | 2012-07-18 → 2012-07-19 (+1d) | 242d? → 243d? | 64% → 66% |  |  |  |
| 63 | **TRANSCEND Feature implementation** |  | 2012-06-01 → 2012-06-05 (+4d) | 149d? → 151d? | 66% → 68% |  |  |  |
| 81 | **Permission and Role base security** |  | 2012-06-01 → 2012-06-05 (+4d) | 86d → 88d |  |  |  |  |
| 83 | **JIRA CAINT-1101 - Implementation:Role based security in caIntegrator to support TRANSCEND** |  | 2012-05-25 → 2012-05-29 (+4d) | 76d → 78d | 54% → 55% |  |  |  |
| 88 | JIRA CAINT-1107 Modify study management service to CRUD authorized elements.(8) | 2012-04-18 A → 2012-05-01 A (+13d) | 2012-04-26 A → 2012-05-07 A (+11d) | 7d → 5d |  |  |  |  |
| 89 | JIRA CAINT-1108 Update Manage Query service to check permissions to see allowed items (columns, values, experiment IDs).(8) | 2012-04-27 → 2012-05-08 (+11d) | 2012-05-08 → 2012-05-10 (+2d) | 8d → 3d |  |  | 88 → 88, 129 |  |
| 90 | JIRA CAINT-1109 Update Perform Analysis service to check permissions to see allowed items (columns, values, experiment IDs).(8) | 2012-05-09 → 2012-05-11 (+2d) | 2012-05-21 → 2012-05-23 (+2d) |  |  |  |  |  |
| 91 | JIRA CAINT-1110 Create action and jsp for new admin screen.(5) |  | 2012-05-04 → 2012-05-09 (+5d) | 5d → 8d |  | 11.6d → 10.6d |  |  |
| 92 | JIRA CAINT-1111 Update integration (nightly) tests to pass.(3) | 2012-05-22 → 2012-05-24 (+2d) | 2012-05-25 → 2012-05-29 (+4d) |  |  |  |  |  |
| 94 | Documentation for Role Based Security | 2012-05-09 → 2012-05-11 (+2d) | 2012-05-15 → 2012-05-17 (+2d) |  |  | 37d → 46d |  |  |
| 95 | QA - Permission and Role based security | 2012-05-28 → 2012-05-30 (+2d) | 2012-06-01 → 2012-06-05 (+4d) |  |  |  |  |  |
| 96 | Demo for role based security | 2012-05-28 → 2012-05-30 (+2d) | 2012-05-28 → 2012-05-30 (+2d) |  |  |  |  | was named UAT for role based security |
| 97 | **Automatic Refresh with caArray** |  | 2012-05-03 → 2012-05-09 (+6d) | 50d? → 54.6d? | 85% → 81% | 54.6d → 52d |  |  |
| 111 | Documentation for Automatic Refresh |  | 2012-05-03 → 2012-05-04 (+1d) | 4d → 5d |  | 45.6d → 55.6d |  |  |
| 112 | QA - Automatic Refresh with caArray |  | 2012-05-02 → 2012-05-04 (+2d) | 3d → 5d |  | 45.6d → 55.6d |  |  |
| 113 | Demo for Automatic Refresh | 2012-05-02 → 2012-05-09 (+7d) | 2012-05-03 → 2012-05-09 (+6d) |  |  | 45.6d → 52d | 112 → none | constraint none → start no earlier than 2012-05-09 |
| 114 | **Single Sign-On (caArray and caIntegrator)** | 2012-04-02 A | 2012-05-24 → 2012-05-22 (-2d) | 39d? → 37d? | 0% → 22% | 39d → 43d |  |  |
| 116 | **JIRA CAINT-1122 Single Sign-on** | 2012-04-23 A | 2012-05-18 → 2012-05-16 (-2d) | 20d? → 18d | 0% → 33% | 39d → 43d |  |  |
| 117 | JIRA CAINT-1158 SSO - 1: CAS integration with caIntegrator. | 2012-04-23 A | 2012-04-23 → 2012-04-30 A (+7d) | 1d? → 6d | 0% → 100% | 30d → none |  | was named Verify CAS SSO server exists for us on the DEV tier, get uid and password to create credentials, learn user creation UI and setup users. (1) |
| 118 | JIRA CAINT-1159 SSO - 2: Build infrastructure for enabling SSO via selectable configuration. | 2012-04-24 → 2012-05-01 (+7d) | 2012-04-27 → 2012-05-09 (+12d) | 4d → 7d |  | 30d → 43d |  | was named read and investigate installation options for CAS and decide if CAS is compatible with existing acegi credential lib. (3) |
| 119 | JIRA CAINT-1160 SSO - 3: Integration with caArray. | 2012-04-30 → 2012-05-10 (+10d) | 2012-05-03 → 2012-05-16 (+13d) | 4d → 5d |  | 30d → 43d |  | was named Add CAS libaries to local svn repo, modify web.xml to support CAS filters, be sure nothing breaks. (2) |
| 120 | QA -Single Sign-On (caArray and caIntegrator) | 2012-05-21 → 2012-05-17 (-4d) | 2012-05-23 → 2012-05-21 (-2d) |  |  | 31d → 44d |  |  |
| 121 | Documentation for Single Sign-On | 2012-05-21 → 2012-05-17 (-4d) | 2012-05-24 → 2012-05-22 (-2d) |  |  | 30d → 43d |  |  |
| 122 | Demo for Single Sign-On (caArray and caIntegrator) | 2012-05-21 → 2012-05-17 (-4d) | 2012-05-21 → 2012-05-17 (-4d) |  |  | 33d → 46d |  |  |
| 123 | **New Maintenance, Bugs, Tech Stack Upgrade & Performance** |  | 2012-05-17 → 2012-05-29 (+12d) | 66.4d? → 74.4d? | 29% → 39% | 35.6d → 38.6d |  |  |
| 124 | **Tech Stack Pending Work** |  | 2012-05-17 → 2012-05-29 (+12d) | 66.4d? → 74.4d? | 29% → 39% | 44.6d → 38.6d |  |  |
| 127 | Test QA tier | 2012-04-23 A | 2012-04-24 A |  | 0% → 100% | 52d → none |  |  |
| 129 | caGrid upgrade 2nd time 1.4 | 2012-04-27 A | 2012-04-27 → 2012-04-30 A (+3d) | 1d? → 2d | 0% → 100% | 47d → none |  | resources ABE → JP |
| 130 | Test caCore upgrade | 2012-04-30 → 2012-05-01 A (+1d) | 2012-05-01 → 2012-05-02 A (+1d) |  | 0% → 100% | 47d → none |  |  |
| 131 | **Bug fixes** |  | 2012-05-03 → 2012-05-15 (+12d) | 19.4d → 27.4d |  | 35.6d → 38.6d |  |  |
| 133 | JIRA CAINT-1091 Generating a KM plot from a study with 300 annotation columns causes an internal server error | 2012-04-27 → 2012-05-09 (+12d) | 2012-05-03 → 2012-05-15 (+12d) |  |  | 35.6d → 38.6d | 110 → 91 |  |
| 139 | **Performance requirements** |  | 2012-05-17 → 2012-05-29 (+12d) | 38.4d → 46.4d |  | 35.6d → 38.6d |  |  |
| 142 | Fix any issues | 2012-05-03 → 2012-05-15 (+12d) | 2012-05-17 → 2012-05-29 (+12d) |  |  | 35.6d → 38.6d |  |  |
| 143 | **Release to Prod (1.4)** | 2012-05-28 → 2012-05-30 (+2d) | 2012-07-18 → 2012-07-19 (+1d) | 38d? → 37d? |  |  |  |  |
| 144 | **Prep for Release** | 2012-05-28 → 2012-05-30 (+2d) | 2012-06-05 → 2012-06-07 (+2d) |  |  |  |  |  |
| 145 | Appscan on Dev | 2012-05-28 → 2012-05-30 (+2d) | 2012-05-29 → 2012-05-31 (+2d) |  |  |  |  |  |
| 146 | Fix Any issues from Appscan | 2012-05-30 → 2012-06-01 (+2d) | 2012-06-05 → 2012-06-07 (+2d) |  |  |  |  |  |
| 147 | 508 compliance check | 2012-05-28 → 2012-05-30 (+2d) | 2012-05-30 → 2012-06-01 (+2d) |  |  |  |  |  |
| 148 | Documentation Updates | 2012-05-28 → 2012-05-30 (+2d) | 2012-06-04 → 2012-06-06 (+2d) |  |  |  |  |  |
| 149 | Prep: Announcements and other updates (landing page etc) | 2012-05-30 → 2012-06-01 (+2d) | 2012-05-30 → 2012-06-01 (+2d) |  |  |  |  |  |
| 150 | Release Notes | 2012-05-30 → 2012-06-01 (+2d) | 2012-05-30 → 2012-06-01 (+2d) |  |  |  |  |  |
| 151 | Integration Test | 2012-06-06 → 2012-06-08 (+2d) | 2012-06-19 → 2012-06-20 (+1d) | 10d → 9d |  |  |  |  |
| 152 | **RC1** | 2012-06-20 → 2012-06-21 (+1d) | 2012-06-28 → 2012-06-29 (+1d) |  |  |  |  |  |
| 153 | RC1 to Stage | 2012-06-20 → 2012-06-21 (+1d) | 2012-06-25 → 2012-06-26 (+1d) |  |  |  |  |  |
| 154 | QA | 2012-06-26 → 2012-06-27 (+1d) | 2012-06-28 → 2012-06-29 (+1d) |  |  |  |  |  |
| 155 | Appscan | 2012-06-20 → 2012-06-21 (+1d) | 2012-06-22 → 2012-06-25 (+3d) |  |  |  |  |  |
| 156 | **RC2** | 2012-06-29 → 2012-07-02 (+3d) | 2012-07-13 → 2012-07-16 (+3d) |  |  |  |  |  |
| 157 | Fix any Issue | 2012-06-29 → 2012-07-02 (+3d) | 2012-07-05 → 2012-07-06 (+1d) |  |  |  |  |  |
| 158 | RC2 to Stage | 2012-07-06 → 2012-07-09 (+3d) | 2012-07-10 → 2012-07-11 (+1d) |  |  |  |  |  |
| 159 | QA | 2012-07-11 → 2012-07-12 (+1d) | 2012-07-13 → 2012-07-16 (+3d) |  |  |  |  |  |
| 160 | Appscan | 2012-07-11 → 2012-07-12 (+1d) | 2012-07-13 → 2012-07-16 (+3d) |  |  |  |  |  |
| 161 | Prod Release/Final UAT for TRANSCEND | 2012-07-16 → 2012-07-17 (+1d) | 2012-07-18 → 2012-07-19 (+1d) |  |  |  |  |  |

## Version 47 (saved 2012-05-15, file caintegrator_project_plan.mpp)

Last finish stays 2012-07-19. Complete tasks 99 → 103.

Added:

| ID | Task | Duration | Start | Finish | Predecessors | Resources |
| --- | --- | --- | --- | --- | --- | --- |
| 131 | UPT prod version Integration | 1d? | 2012-05-14 A | 2012-05-14 A |  | JP |
| 132 | UPT prod version Integration - Test | 1d? | 2012-05-15 | 2012-05-15 | 131 | HS |
| 135 | JIRA CAINT-1161 Attempting to Map Samples with Status of Sample generates Error | 3d | 2012-05-15 | 2012-05-18 | 91 | ABE |

Changed:

| ID | Task | Start | Finish | Duration | Complete | Total float | Predecessors | Other |
| --- | --- | --- | --- | --- | --- | --- | --- | --- |
| 34 | **CaIntegrator Version 1.4** |  |  |  | 66% → 68% |  |  |  |
| 63 | **TRANSCEND Feature implementation** |  |  |  | 68% → 74% | 33d → 32d |  |  |
| 81 | **Permission and Role base security** |  |  |  | 48% → 49% | 33d → 32d |  |  |
| 83 | **JIRA CAINT-1101 - Implementation:Role based security in caIntegrator to support TRANSCEND** |  |  |  | 55% → 56% |  |  |  |
| 89 | JIRA CAINT-1108 Update Manage Query service to check permissions to see allowed items (columns, values, experiment IDs).(8) | 2012-05-08 A | 2012-05-10 A |  | 0% → 100% | 0d → none |  |  |
| 91 | JIRA CAINT-1110 Create action and jsp for new admin screen.(5) |  | 2012-05-09 → 2012-05-15 (+6d) | 8d → 12d |  | 10.6d → 6.6d |  |  |
| 94 | Documentation for Role Based Security | 2012-05-11 → 2012-05-30 (+19d) | 2012-05-17 → 2012-06-05 (+19d) |  |  | 46d → 32d | 89 → 83 |  |
| 97 | **Automatic Refresh with caArray** |  | 2012-05-09 → 2012-05-16 (+7d) | 54.6d? → 59.6d? | 81% → 89% | 52d → 46d |  |  |
| 112 | QA - Automatic Refresh with caArray | 2012-04-27 A | 2012-05-04 A |  | 0% → 100% | 55.6d → none |  |  |
| 113 | Demo for Automatic Refresh | 2012-05-09 → 2012-05-16 (+7d) | 2012-05-09 → 2012-05-16 (+7d) |  |  | 52d → 46d |  | constraint start no earlier than 2012-05-09 → start no earlier than 2012-05-16 |
| 114 | **Single Sign-On (caArray and caIntegrator)** |  | 2012-05-22 → 2012-05-23 (+1d) | 37d? → 38d? | 22% → 50% | 43d → 41d |  |  |
| 116 | **JIRA CAINT-1122 Single Sign-on** |  | 2012-05-16 → 2012-05-17 (+1d) | 18d → 19d | 33% → 74% | 43d → 41d |  |  |
| 118 | JIRA CAINT-1159 SSO - 2: Build infrastructure for enabling SSO via selectable configuration. | 2012-05-01 A | 2012-05-09 → 2012-05-10 A (+1d) | 7d → 8d | 0% → 100% | 43d → none |  |  |
| 119 | JIRA CAINT-1160 SSO - 3: Integration with caArray. | 2012-05-10 → 2012-05-11 (+1d) | 2012-05-16 → 2012-05-17 (+1d) |  |  | 43d → 41d |  |  |
| 120 | QA -Single Sign-On (caArray and caIntegrator) | 2012-05-17 → 2012-05-18 (+1d) | 2012-05-21 → 2012-05-22 (+1d) |  |  | 44d → 42d |  |  |
| 121 | Documentation for Single Sign-On | 2012-05-17 → 2012-05-18 (+1d) | 2012-05-22 → 2012-05-23 (+1d) |  |  | 43d → 41d |  |  |
| 122 | Demo for Single Sign-On (caArray and caIntegrator) | 2012-05-17 → 2012-05-18 (+1d) | 2012-05-17 → 2012-05-18 (+1d) |  |  | 46d → 44d |  |  |
| 123 | **New Maintenance, Bugs, Tech Stack Upgrade & Performance** |  | 2012-05-29 → 2012-06-07 (+9d) | 74.4d? → 81.4d? | 39% → 38% | 38.6d → 30.6d |  |  |
| 124 | **Tech Stack Pending Work** |  | 2012-05-29 → 2012-06-07 (+9d) | 74.4d? → 81.4d? | 39% → 38% | 38.6d → 30.6d |  |  |
| 133 | **Bug fixes** |  | 2012-05-15 → 2012-05-24 (+9d) | 27.4d → 34.4d | 20% → 13% | 38.6d → 30.6d |  |  |
| 136 | JIRA CAINT-1091 Generating a KM plot from a study with 300 annotation columns causes an internal server error | 2012-05-09 → 2012-05-18 (+9d) | 2012-05-15 → 2012-05-24 (+9d) |  |  | 38.6d → 30.6d | 91 → 135 |  |
| 142 | **Performance requirements** |  | 2012-05-29 → 2012-06-07 (+9d) | 46.4d → 53.4d |  | 38.6d → 30.6d |  |  |
| 143 | Define Requirements |  |  |  |  | 55d → 54d |  | resources SJ → none |
| 144 | Load Test and Verify |  |  |  |  | 55d → 54d |  | resources TBD → none |
| 145 | Fix any issues | 2012-05-15 → 2012-05-24 (+9d) | 2012-05-29 → 2012-06-07 (+9d) |  |  | 38.6d → 30.6d |  | resources ABE → none |
| 149 | Fix Any issues from Appscan |  |  |  |  |  |  | resources JP → AS |
| 160 | Fix any Issue |  |  |  |  |  |  | resources JP → ABE |

## Version 48 (saved 2012-05-21, file caintegrator_project_plan.mpp)

Last finish 2012-07-19 → 2012-07-18 (-1d). Complete tasks 103 → 106.

Added:

| ID | Task | Duration | Start | Finish | Constraint | Resources |
| --- | --- | --- | --- | --- | --- | --- |
| 135 | JIRA CAINT-1127 USBAT see a disclaimer when launching IGV | 1d? | 2012-05-21 | 2012-05-21 | start no earlier than 2012-05-21 | JP |

Changed:

| ID | Task | Start | Finish | Duration | Complete | Total float | Predecessors | Other |
| --- | --- | --- | --- | --- | --- | --- | --- | --- |
| 34 | **CaIntegrator Version 1.4** |  | 2012-07-19 → 2012-07-18 (-1d) | 243d? → 242d? | 68% → 73% |  |  |  |
| 63 | **TRANSCEND Feature implementation** |  |  |  | 74% → 82% | 32d → 31d |  |  |
| 81 | **Permission and Role base security** |  |  |  | 49% → 78% | 32d → 31d |  |  |
| 83 | **JIRA CAINT-1101 - Implementation:Role based security in caIntegrator to support TRANSCEND** |  |  |  | 56% → 93% |  |  |  |
| 90 | JIRA CAINT-1109 Update Perform Analysis service to check permissions to see allowed items (columns, values, experiment IDs).(8) | 2012-05-11 A | 2012-05-23 A |  | 0% → 100% | 0d → none |  |  |
| 91 | JIRA CAINT-1110 Create action and jsp for new admin screen.(5) | 2012-04-27 A | 2012-05-15 → 2012-05-18 A (+3d) | 12d → 15d | 0% → 100% | 6.6d → none |  |  |
| 114 | **Single Sign-On (caArray and caIntegrator)** |  | 2012-05-23 → 2012-05-28 (+5d) | 38d? → 41d? | 50% → 45% | 41d → 37d |  |  |
| 116 | **JIRA CAINT-1122 Single Sign-on** |  | 2012-05-17 → 2012-05-22 (+5d) | 19d → 22d | 74% → 64% | 41d → 37d |  |  |
| 119 | JIRA CAINT-1160 SSO - 3: Integration with caArray. |  | 2012-05-17 → 2012-05-22 (+5d) | 5d → 8d |  | 41d → 37d |  |  |
| 120 | QA -Single Sign-On (caArray and caIntegrator) | 2012-05-18 → 2012-05-23 (+5d) | 2012-05-22 → 2012-05-25 (+3d) |  |  | 42d → 38d |  |  |
| 121 | Documentation for Single Sign-On | 2012-05-18 → 2012-05-23 (+5d) | 2012-05-23 → 2012-05-28 (+5d) |  |  | 41d → 37d |  |  |
| 122 | Demo for Single Sign-On (caArray and caIntegrator) | 2012-05-18 → 2012-05-23 (+5d) | 2012-05-18 → 2012-05-23 (+5d) |  |  | 44d → 40d |  |  |
| 123 | **New Maintenance, Bugs, Tech Stack Upgrade & Performance** |  | 2012-06-07 → 2012-06-12 (+5d) | 81.4d? → 85d? | 38% → 39% | 30.6d → 26d |  |  |
| 124 | **Tech Stack Pending Work** |  | 2012-06-07 → 2012-06-12 (+5d) | 81.4d? → 85d? | 38% → 39% | 30.6d → 26d |  |  |
| 132 | UPT prod version Integration - Test | 2012-05-15 A | 2012-05-15 A |  | 0% → 100% | 47d → none |  |  |
| 133 | **Bug fixes** |  | 2012-05-24 → 2012-05-29 (+5d) | 34.4d → 38d? | 13% → 11% | 30.6d → 36d |  |  |
| 136 | JIRA CAINT-1161 Attempting to Map Samples with Status of Sample generates Error | 2012-05-15 → 2012-05-21 (+6d) | 2012-05-18 → 2012-05-23 (+5d) |  |  | 30.6d → 26d | 91 → none | constraint none → start no earlier than 2012-05-21 |
| 137 | JIRA CAINT-1091 Generating a KM plot from a study with 300 annotation columns causes an internal server error | 2012-05-18 → 2012-05-24 (+6d) | 2012-05-24 → 2012-05-29 (+5d) |  |  | 30.6d → 26d |  |  |
| 143 | **Performance requirements** |  | 2012-06-07 → 2012-06-12 (+5d) | 53.4d → 57d |  | 30.6d → 26d |  |  |
| 146 | Fix any issues | 2012-05-24 → 2012-05-30 (+6d) | 2012-06-07 → 2012-06-12 (+5d) |  |  | 30.6d → 26d |  |  |
| 147 | **Release to Prod (1.4)** |  | 2012-07-19 → 2012-07-18 (-1d) | 37d? → 36d? |  |  |  |  |
| 165 | Prod Release/Final UAT for TRANSCEND |  | 2012-07-19 → 2012-07-18 (-1d) | 3d → 2d |  |  |  |  |

## Version 49 (saved 2012-05-25, file caintegrator_project_plan.mpp)

Last finish 2012-07-18 → 2012-07-23 (+5d). Complete tasks 106 → 111.

Added:

| ID | Task | Duration | Start | Finish | Predecessors |
| --- | --- | --- | --- | --- | --- |
| 137 | JIRA CAINT-1164 TRANSCEND - Updates to Installation Instructions. Documentation. | 1d? | 2012-05-24 | 2012-05-24 | 136 |
| 138 | JIRA CAINT-1169 Update Genomic Data Source configuration to utilize SSO when SSO is enabled. | 1d? | 2012-05-25 | 2012-05-25 | 137 |
| 139 | JIRA CAINT-1170 Update data refresh task to support SSO | 1d? | 2012-05-29 | 2012-05-29 | 138 |
| 140 | JIRA CAINT- New Bug | 1d? | 2012-05-30 | 2012-05-30 | 139 |

Changed:

| ID | Task | Start | Finish | Duration | Complete | Total float | Predecessors | Other |
| --- | --- | --- | --- | --- | --- | --- | --- | --- |
| 34 | **CaIntegrator Version 1.4** |  | 2012-07-18 → 2012-07-23 (+5d) | 242d? → 244d? | 73% → 74% |  |  |  |
| 63 | **TRANSCEND Feature implementation** |  | 2012-06-05 → 2012-06-04 (-1d) | 151d? → 149d? | 82% → 84% | 31d → 35d |  |  |
| 81 | **Permission and Role base security** |  | 2012-06-05 → 2012-06-04 (-1d) | 88d → 86d | 78% → 77% | 31d → 35d |  |  |
| 83 | **JIRA CAINT-1101 - Implementation:Role based security in caIntegrator to support TRANSCEND** |  | 2012-05-29 → 2012-06-01 (+3d) | 78d → 80d | 93% → 92% |  |  |  |
| 92 | JIRA CAINT-1111 Update integration (nightly) tests to pass.(3) | 2012-05-24 → 2012-05-25 (+1d) | 2012-05-29 → 2012-06-01 (+3d) | 4d → 5d |  |  |  | constraint none → start no earlier than 2012-05-25; resources JP → SL |
| 94 | Documentation for Role Based Security | 2012-05-30 → 2012-05-25 (-5d) | 2012-06-05 → 2012-06-01 (-4d) |  |  | 31d → 36d | 83 → none | constraint none → start no earlier than 2012-05-25 |
| 95 | QA - Permission and Role based security | 2012-05-30 → 2012-05-25 (-5d) | 2012-06-05 → 2012-06-01 (-4d) |  |  | 31d → 36d | 83 → none | constraint none → start no earlier than 2012-05-25 |
| 96 | Demo for role based security | 2012-05-30 → 2012-06-04 (+5d) | 2012-05-30 → 2012-06-04 (+5d) |  |  |  |  |  |
| 97 | **Automatic Refresh with caArray** |  | 2012-05-16 A |  | 89% → 100% | 45d → none |  |  |
| 111 | Documentation for Automatic Refresh | 2012-04-27 A | 2012-05-04 A |  | 0% → 100% | 53.6d → none |  |  |
| 113 | Demo for Automatic Refresh | 2012-05-16 A | 2012-05-16 A |  | 0% → 100% | 45d → none |  |  |
| 114 | **Single Sign-On (caArray and caIntegrator)** |  | 2012-05-28 → 2012-05-29 (+1d) |  | 45% → 48% | 37d → 39d |  |  |
| 115 | CBIIT Installation of CAS/open LDAP | 2012-04-02 A | 2012-04-02 A |  | 0% → 100% | 77d → none |  |  |
| 121 | Documentation for Single Sign-On |  | 2012-05-28 → 2012-05-29 (+1d) |  |  | 37d → 39d |  |  |
| 123 | **New Maintenance, Bugs, Tech Stack Upgrade & Performance** |  | 2012-06-12 → 2012-06-19 (+7d) | 85d? → 89d? | 39% → 42% | 26d → 24d |  |  |
| 124 | **Tech Stack Pending Work** |  | 2012-06-12 → 2012-06-19 (+7d) | 85d? → 89d? | 39% → 42% | 26d → 24d |  |  |
| 133 | **Bug fixes** |  | 2012-05-29 → 2012-06-05 (+7d) | 38d? → 42d? | 11% → 38% | 36d → 24d |  |  |
| 135 | JIRA CAINT-1127 USBAT see a disclaimer when launching IGV | 2012-05-21 A | 2012-05-21 A |  | 0% → 100% | 42d → none |  |  |
| 136 | JIRA CAINT-1161 Attempting to Map Samples with Status of Sample generates Error | 2012-05-21 A | 2012-05-23 A |  | 0% → 100% | 26d → none |  |  |
| 142 | JIRA CAINT-1091 Generating a KM plot from a study with 300 annotation columns causes an internal server error | 2012-05-24 → 2012-05-31 (+7d) | 2012-05-29 → 2012-06-05 (+7d) |  |  | 26d → 24d | 136 → 140 |  |
| 148 | **Performance requirements** |  | 2012-06-12 → 2012-06-19 (+7d) | 57d → 61d |  | 26d → 24d |  |  |
| 151 | Fix any issues | 2012-05-30 → 2012-06-06 (+7d) | 2012-06-12 → 2012-06-19 (+7d) |  |  | 26d → 24d |  |  |
| 152 | **Release to Prod (1.4)** | 2012-05-30 → 2012-06-04 (+5d) | 2012-07-18 → 2012-07-23 (+5d) |  |  |  |  |  |
| 153 | **Prep for Release** | 2012-05-30 → 2012-06-04 (+5d) | 2012-06-07 → 2012-06-12 (+5d) |  |  |  |  |  |
| 154 | Appscan on Dev | 2012-05-30 → 2012-06-04 (+5d) | 2012-05-31 → 2012-06-05 (+5d) |  |  |  |  |  |
| 155 | Fix Any issues from Appscan | 2012-06-01 → 2012-06-06 (+5d) | 2012-06-07 → 2012-06-12 (+5d) |  |  |  |  |  |
| 156 | 508 compliance check | 2012-05-30 → 2012-06-04 (+5d) | 2012-06-01 → 2012-06-06 (+5d) |  |  |  |  |  |
| 157 | Documentation Updates | 2012-05-30 → 2012-06-04 (+5d) | 2012-06-06 → 2012-06-11 (+5d) |  |  |  |  |  |
| 158 | Prep: Announcements and other updates (landing page etc) | 2012-06-01 → 2012-06-06 (+5d) | 2012-06-01 → 2012-06-06 (+5d) |  |  |  |  |  |
| 159 | Release Notes | 2012-06-01 → 2012-06-06 (+5d) | 2012-06-01 → 2012-06-06 (+5d) |  |  |  |  |  |
| 160 | Integration Test | 2012-06-08 → 2012-06-13 (+5d) | 2012-06-20 → 2012-06-25 (+5d) |  |  |  |  |  |
| 161 | **RC1** | 2012-06-21 → 2012-06-26 (+5d) | 2012-06-29 → 2012-07-04 (+5d) |  |  |  |  |  |
| 162 | RC1 to Stage | 2012-06-21 → 2012-06-26 (+5d) | 2012-06-26 → 2012-06-29 (+3d) |  |  |  |  |  |
| 163 | QA | 2012-06-27 → 2012-07-02 (+5d) | 2012-06-29 → 2012-07-04 (+5d) |  |  |  |  |  |
| 164 | Appscan | 2012-06-21 → 2012-06-26 (+5d) | 2012-06-25 → 2012-06-28 (+3d) |  |  |  |  |  |
| 165 | **RC2** | 2012-07-02 → 2012-07-05 (+3d) | 2012-07-16 → 2012-07-19 (+3d) |  |  |  |  |  |
| 166 | Fix any Issue | 2012-07-02 → 2012-07-05 (+3d) | 2012-07-06 → 2012-07-11 (+5d) |  |  |  |  |  |
| 167 | RC2 to Stage | 2012-07-09 → 2012-07-12 (+3d) | 2012-07-11 → 2012-07-16 (+5d) |  |  |  |  |  |
| 168 | QA | 2012-07-12 → 2012-07-17 (+5d) | 2012-07-16 → 2012-07-19 (+3d) |  |  |  |  |  |
| 169 | Appscan | 2012-07-12 → 2012-07-17 (+5d) | 2012-07-16 → 2012-07-19 (+3d) |  |  |  |  |  |
| 170 | Prod Release/Final UAT for TRANSCEND | 2012-07-17 → 2012-07-20 (+3d) | 2012-07-18 → 2012-07-23 (+5d) |  |  |  |  |  |

## Version 50 (saved 2012-05-29, file caintegrator_project_plan.mpp)

Last finish 2012-07-23 → 2012-07-18 (-5d). Complete tasks 111 → 113.

Added:

| ID | Task | Duration | Start | Finish | Predecessors | Resources |
| --- | --- | --- | --- | --- | --- | --- |
| 120 | JIRA CAINT-1160 SSO - 3: Integration with caArray - part 2 | 2d | 2012-06-06 | 2012-06-07 | 119, 140, 139 | SL |
| 142 | JIRA CAINT- AIM Issues | 1d? | 2012-06-06 | 2012-06-06 | 141 |  |

Changed:

| ID | Task | Start | Finish | Duration | Complete | Total float | Predecessors | Other |
| --- | --- | --- | --- | --- | --- | --- | --- | --- |
| 34 | **CaIntegrator Version 1.4** |  | 2012-07-23 → 2012-07-18 (-5d) | 244d? → 241d? | 74% → 75% |  |  |  |
| 63 | **TRANSCEND Feature implementation** |  | 2012-06-04 → 2012-06-13 (+9d) | 149d? → 156d? | 84% → 89% | 35d → 25d |  |  |
| 81 | **Permission and Role base security** |  | 2012-06-04 → 2012-06-01 (-3d) | 86d → 85d | 77% → 83% | 35d → 33d |  |  |
| 83 | **JIRA CAINT-1101 - Implementation:Role based security in caIntegrator to support TRANSCEND** |  | 2012-06-01 → 2012-05-29 A (-3d) | 80d → 77d | 92% → 100% | 0d → none |  |  |
| 92 | JIRA CAINT-1111 Update integration (nightly) tests to pass.(3) | 2012-05-25 → 2012-05-23 A (-2d) | 2012-06-01 → 2012-05-29 A (-3d) | 5d → 4d | 0% → 100% | 0d → none |  |  |
| 96 | Demo for role based security | 2012-06-04 → 2012-05-30 (-5d) | 2012-06-04 → 2012-05-30 (-5d) |  |  |  |  |  |
| 114 | **Single Sign-On (caArray and caIntegrator)** |  | 2012-05-29 → 2012-06-13 (+15d) | 41d? → 52d? | 48% → 70% | 39d → 25d |  |  |
| 116 | **JIRA CAINT-1122 Single Sign-on** |  | 2012-05-22 → 2012-06-07 (+16d) | 22d → 33d | 64% → 92% | 39d → 25d |  |  |
| 119 | JIRA CAINT-1160 SSO - 3: Integration with caArray - part 1 | 2012-05-11 A | 2012-05-22 A |  | 0% → 100% | 39d → none |  | was named JIRA CAINT-1160 SSO - 3: Integration with caArray.; resources AS → SL |
| 121 | QA -Single Sign-On (caArray and caIntegrator) | 2012-05-23 → 2012-06-08 (+16d) | 2012-05-25 → 2012-06-12 (+18d) |  |  | 40d → 26d |  |  |
| 122 | Documentation for Single Sign-On | 2012-05-23 → 2012-06-08 (+16d) | 2012-05-29 → 2012-06-13 (+15d) |  |  | 39d → 25d |  |  |
| 123 | Demo for Single Sign-On (caArray and caIntegrator) | 2012-05-23 → 2012-06-08 (+16d) | 2012-05-23 → 2012-06-08 (+16d) |  |  | 42d → 28d |  |  |
| 124 | **New Maintenance, Bugs, Tech Stack Upgrade & Performance** |  | 2012-06-19 → 2012-06-26 (+7d) | 89d? → 94d? | 42% → 38% | 24d → 16d |  |  |
| 125 | **Tech Stack Pending Work** |  | 2012-06-19 → 2012-06-26 (+7d) | 89d? → 94d? | 42% → 38% | 24d → 16d |  |  |
| 134 | **Bug fixes** |  | 2012-06-05 → 2012-06-12 (+7d) | 42d? → 47d? | 38% → 24% | 24d → 20d |  |  |
| 138 | JIRA CAINT-1164 Updates to Installation Instructions. Documentation. | 2012-05-24 → 2012-05-29 (+5d) | 2012-05-24 → 2012-05-29 (+5d) |  |  | 24d → 16d | 137 → none | was named JIRA CAINT-1164 TRANSCEND - Updates to Installation Instructions. Documentation.; constraint none → start no earlier than 2012-05-29; resources none → ABE |
| 139 | JIRA CAINT-1169 Update Genomic Data Source configuration to utilize SSO when SSO is enabled. | 2012-05-25 → 2012-05-30 (+5d) | 2012-05-25 → 2012-06-05 (+11d) | 1d? → 5d |  | 24d → 25d |  | resources none → SL |
| 140 | JIRA CAINT-1170 Update data refresh task to support SSO | 2012-05-29 → 2012-05-30 (+1d) | 2012-05-29 → 2012-06-01 (+3d) | 1d? → 3d |  | 24d → 16d | 139 → 138 | resources none → ABE |
| 141 | JIRA CAINT- New Bug - Auto Refresh | 2012-05-30 → 2012-06-04 (+5d) | 2012-05-30 → 2012-06-05 (+6d) | 1d? → 2d |  | 24d → 16d |  | was named JIRA CAINT- New Bug; resources none → ABE |
| 143 | JIRA CAINT-1091 Generating a KM plot from a study with 300 annotation columns causes an internal server error | 2012-05-31 → 2012-06-07 (+7d) | 2012-06-05 → 2012-06-12 (+7d) |  |  | 24d → 16d | 141 → 142 | resources ABE → none |
| 149 | **Performance requirements** |  | 2012-06-19 → 2012-06-26 (+7d) | 61d → 66d |  | 24d → 16d |  |  |
| 152 | Fix any issues | 2012-06-06 → 2012-06-13 (+7d) | 2012-06-19 → 2012-06-26 (+7d) |  |  | 24d → 16d |  |  |
| 153 | **Release to Prod (1.4)** | 2012-06-04 → 2012-05-30 (-5d) | 2012-07-23 → 2012-07-18 (-5d) |  |  |  |  |  |
| 154 | **Prep for Release** | 2012-06-04 → 2012-05-30 (-5d) | 2012-06-12 → 2012-06-07 (-5d) |  |  |  |  |  |
| 155 | Appscan on Dev | 2012-06-04 → 2012-05-30 (-5d) | 2012-06-05 → 2012-05-31 (-5d) |  |  |  |  |  |
| 156 | Fix Any issues from Appscan | 2012-06-06 → 2012-06-01 (-5d) | 2012-06-12 → 2012-06-07 (-5d) |  |  |  |  |  |
| 157 | 508 compliance check | 2012-06-04 → 2012-05-30 (-5d) | 2012-06-06 → 2012-06-01 (-5d) |  |  |  |  |  |
| 158 | Documentation Updates | 2012-06-04 → 2012-05-30 (-5d) | 2012-06-11 → 2012-06-06 (-5d) |  |  |  |  |  |
| 159 | Prep: Announcements and other updates (landing page etc) | 2012-06-06 → 2012-06-01 (-5d) | 2012-06-06 → 2012-06-01 (-5d) |  |  |  |  |  |
| 160 | Release Notes | 2012-06-06 → 2012-06-01 (-5d) | 2012-06-06 → 2012-06-01 (-5d) |  |  |  |  |  |
| 161 | Integration Test | 2012-06-13 → 2012-06-08 (-5d) | 2012-06-25 → 2012-06-20 (-5d) |  |  |  |  |  |
| 162 | **RC1** | 2012-06-26 → 2012-06-21 (-5d) | 2012-07-04 → 2012-06-29 (-5d) |  |  |  |  |  |
| 163 | RC1 to Stage | 2012-06-26 → 2012-06-21 (-5d) | 2012-06-29 → 2012-06-26 (-3d) |  |  |  |  |  |
| 164 | QA | 2012-07-02 → 2012-06-27 (-5d) | 2012-07-04 → 2012-06-29 (-5d) |  |  |  |  |  |
| 165 | Appscan | 2012-06-26 → 2012-06-21 (-5d) | 2012-06-28 → 2012-06-25 (-3d) |  |  |  |  |  |
| 166 | **RC2** | 2012-07-05 → 2012-07-02 (-3d) | 2012-07-19 → 2012-07-16 (-3d) |  |  |  |  |  |
| 167 | Fix any Issue | 2012-07-05 → 2012-07-02 (-3d) | 2012-07-11 → 2012-07-06 (-5d) |  |  |  |  |  |
| 168 | RC2 to Stage | 2012-07-12 → 2012-07-09 (-3d) | 2012-07-16 → 2012-07-11 (-5d) |  |  |  |  |  |
| 169 | QA | 2012-07-17 → 2012-07-12 (-5d) | 2012-07-19 → 2012-07-16 (-3d) |  |  |  |  |  |
| 170 | Appscan | 2012-07-17 → 2012-07-12 (-5d) | 2012-07-19 → 2012-07-16 (-3d) |  |  |  |  |  |
| 171 | Prod Release/Final UAT for TRANSCEND | 2012-07-20 → 2012-07-17 (-3d) | 2012-07-23 → 2012-07-18 (-5d) |  |  |  |  |  |

## Version 51 (saved 2012-06-05, file caintegrator_project_plan.mpp)

Last finish 2012-07-18 → 2012-07-17 (-1d). Complete tasks 113 → 117.

Added:

| ID | Task | Duration | Start | Finish | Predecessors | Constraint | Resources |
| --- | --- | --- | --- | --- | --- | --- | --- |
| 138 | **Iteration 20** | 5d | 2012-05-31 | 2012-06-06 |  |  |  |
| 139 | JIRA CAINT-1169 SSO -Update Genomic Data Source configuration to utilize SSO when SSO is enabled. | 5d | 2012-05-31 | 2012-06-06 |  | start no earlier than 2012-05-31 | SL |
| 140 | JIRA CAINT-1170 SSO-Update data refresh task to support SSO | 3d | 2012-06-04 | 2012-06-06 |  | start no earlier than 2012-06-04 | ABE |
| 141 | **Iteration 21** | 10d? | 2012-06-07 | 2012-06-20 | 138 |  |  |
| 142 | JIRA CAINT-1160 SSO - Integration with caArray | 2d | 2012-06-07 | 2012-06-08 |  |  | SL |
| 143 | JIRA CAINT-1091 M&B: Generating a KM plot from a study with 300 annotation columns causes an internal server error | 6d | 2012-06-11 | 2012-06-18 | 142 |  | SL |
| 144 | JIRA CAINT-1173 M&B: Annotations not visible in IGV | 4d | 2012-06-07 | 2012-06-12 |  |  | ABE |
| 145 | JIRA CAINT-1174 M&B: Expressions not visible in IGV | 3d | 2012-06-13 | 2012-06-15 | 144 |  | ABE |
| 146 | JIRA CAINT-1162 M&B: Error message referencing Goby Alignment files IGV | 3d | 2012-06-18 | 2012-06-20 | 145 |  | ABE |
| 147 | Documentation (SSO, Role based,Wiki, Upgrade guide) | 10d | 2012-06-07 | 2012-06-20 |  |  |  |
| 148 | Appscan | 3d | 2012-06-11 | 2012-06-13 | 142 |  |  |
| 149 | 508 Scan | 1d? | 2012-06-07 | 2012-06-07 |  |  |  |
| 150 | QA - SSO, M&B | 5d | 2012-06-11 | 2012-06-15 | 142 |  |  |
| 153 | Drop to UCSF - Draft | 1d? | 2012-06-21 | 2012-06-21 | 141 |  |  |
| 169 | Final Drop to UCSF | 1d? | 2012-07-17 | 2012-07-17 | 164 |  |  |

Removed: 93 Sample Data Set from UCSF; 94 Documentation for Role Based Security; 95 QA - Permission and Role based security; 120 JIRA CAINT-1160 SSO - 3: Integration with caArray - part 2; 121 QA -Single Sign-On (caArray and caIntegrator); 122 Documentation for Single Sign-On; 123 Demo for Single Sign-On (caArray and caIntegrator); 139 JIRA CAINT-1169 Update Genomic Data Source configuration to utilize SSO when SSO is enabled.; 140 JIRA CAINT-1170 Update data refresh task to support SSO; 142 JIRA CAINT- AIM Issues; 143 JIRA CAINT-1091 Generating a KM plot from a study with 300 annotation columns causes an internal server error; 149 Performance requirements; 150 Define Requirements; 151 Load Test and Verify; 152 Fix any issues; 155 Appscan on Dev; 172 NOT INCLUDED (Generic Platform, NBIA , Performance eval)

Changed:

| ID | Task | Start | Finish | Duration | Complete | Total float | Predecessors | Other |
| --- | --- | --- | --- | --- | --- | --- | --- | --- |
| 34 | **CaIntegrator Version 1.4** |  | 2012-07-18 → 2012-07-17 (-1d) | 241d? → 240d? | 75% → 83% |  |  |  |
| 63 | **TRANSCEND Feature implementation** |  | 2012-06-13 → 2012-05-30 A (-14d) | 156d? → 146d? | 89% → 100% | 25d → none |  |  |
| 73 | **Version Control and Archive** |  | 2012-03-01 A |  | 89% → 100% | 98.6d → none |  |  |
| 77 | Documentation for Version Control & Archive | 2012-02-23 A | 2012-03-01 A |  | 0% → 100% | 98.6d → none |  |  |
| 81 | **Permission and Role base security** |  | 2012-06-01 → 2012-05-30 A (-2d) | 85d → 83d | 83% → 100% | 33d → none |  |  |
| 93 | Demo for role based security | 2012-05-30 A | 2012-05-30 A |  | 0% → 100% | 35d → none |  |  |
| 111 | **Single Sign-On (caArray and caIntegrator)** |  | 2012-06-13 → 2012-05-22 A (-22d) | 52d? → 37d? | 70% → 100% | 25d → none |  |  |
| 113 | **JIRA CAINT-1122 Single Sign-on** |  | 2012-06-07 → 2012-05-22 A (-16d) | 33d → 22d | 92% → 100% | 25d → none |  |  |
| 117 | **New Maintenance, Bugs, Tech Stack Upgrade & Performance** |  | 2012-06-26 → 2012-06-05 A (-21d) | 94d? → 79d? | 38% → 100% | 16d → none |  |  |
| 118 | **Tech Stack Pending Work** |  | 2012-06-26 → 2012-06-05 A (-21d) | 94d? → 79d? | 38% → 100% | 16d → none |  |  |
| 127 | **Bug fixes** |  | 2012-06-12 → 2012-06-05 A (-7d) | 47d? → 42d? | 24% → 100% | 20d → none |  |  |
| 131 | JIRA CAINT-1164 Updates to Installation Instructions. Documentation. | 2012-05-29 A | 2012-05-29 A |  | 0% → 100% | 16d → none |  |  |
| 132 | JIRA CAINT- New Bug - Auto Refresh | 2012-06-04 A | 2012-06-05 A |  | 0% → 100% | 16d → none | JIRA CAINT-1170 Update data refresh task to support SSO → none |  |
| 151 | **Release to Prod (1.4)** | 2012-05-30 → 2012-06-21 (+22d) | 2012-07-18 → 2012-07-17 (-1d) | 36d? → 19d? |  |  |  |  |
| 152 | **Prep for Release** | 2012-05-30 → 2012-06-21 (+22d) | 2012-06-07 → 2012-06-28 (+21d) | 7d? → 6d? |  | 0d → 13d |  |  |
| 154 | Fix Any issues from Appscan | 2012-06-01 → 2012-06-21 (+20d) | 2012-06-07 → 2012-06-25 (+18d) | 5d → 3d |  | 0d → 15d | Appscan on Dev → 141 | resources AS → ABE |
| 155 | 508 compliance check | 2012-05-30 → 2012-06-26 (+27d) | 2012-06-01 → 2012-06-26 (+25d) | 3d → 1d |  | 33d → 15d | 92 → 154 |  |
| 156 | Documentation Updates | 2012-05-30 → 2012-06-21 (+22d) | 2012-06-06 → 2012-06-28 (+22d) |  |  | 30d → 13d | 92 → 141 |  |
| 157 | Prep: Announcements and other updates (landing page etc) | 2012-06-01 → 2012-06-21 (+20d) | 2012-06-01 → 2012-06-21 (+20d) |  |  | 33d → 18d | Appscan on Dev → 141 |  |
| 158 | Release Notes | 2012-06-01 → 2012-06-21 (+20d) | 2012-06-01 → 2012-06-21 (+20d) |  |  | 33d → 18d | Appscan on Dev → 141 |  |
| 159 | Integration Test | 2012-06-08 → 2012-06-21 (+13d) | 2012-06-20 → 2012-06-29 (+9d) | 9d → 7d |  |  | 154 → 141 |  |
| 160 | **RC1** | 2012-06-21 → 2012-07-02 (+11d) | 2012-06-29 → 2012-07-06 (+7d) | 7d → 5d |  |  |  |  |
| 161 | RC1 to Stage | 2012-06-21 → 2012-07-02 (+11d) | 2012-06-26 → 2012-07-04 (+8d) | 4d → 3d |  |  |  |  |
| 162 | QA | 2012-06-27 → 2012-07-05 (+8d) | 2012-06-29 → 2012-07-06 (+7d) | 3d → 2d |  |  |  |  |
| 163 | Appscan | 2012-06-21 → 2012-07-02 (+11d) | 2012-06-25 → 2012-07-04 (+9d) |  |  | 17d → 9d |  |  |
| 164 | **RC2** | 2012-07-02 → 2012-07-09 (+7d) |  | 11d → 6d |  |  |  |  |
| 165 | Fix any Issue | 2012-07-02 → 2012-07-09 (+7d) | 2012-07-06 → 2012-07-10 (+4d) | 5d → 2d |  |  |  |  |
| 166 | RC2 to Stage | 2012-07-09 → 2012-07-11 (+2d) |  | 3d → 1d |  |  |  |  |
| 167 | QA |  | 2012-07-16 → 2012-07-12 (-4d) | 3d → 1d |  | 0d → 2d |  |  |
| 170 | Prod Release/Final UAT for TRANSCEND |  | 2012-07-18 → 2012-07-17 (-1d) | 2d → 1d |  |  |  |  |

## Version 52 (saved 2012-06-13, file caintegrator_project_plan.mpp)

Last finish stays 2012-07-17. Complete tasks 117 → 119.

Added:

| ID | Task | Duration | Start | Finish | Predecessors | Constraint | Resources |
| --- | --- | --- | --- | --- | --- | --- | --- |
| 142 | JIRA CAINT-1170 SSO-Update data refresh task to support SSO - Phase 2 | 2d | 2012-06-07 | 2012-06-08 | 140 | start no earlier than 2012-06-04 | ABE |
| 147 | JIRA CAINT-1174 Expression data is not displayed in the IGV when launched from the left-hand men | 1d? | 2012-06-15 | 2012-06-15 |  | start no earlier than 2012-06-15 |  |
| 148 | JIRA CAINT-1162 Error message referencing Goby alignment files is displayed when launching IGV | 1d? | 2012-06-18 | 2012-06-18 |  | start no earlier than 2012-06-18 |  |
| 149 | JIRA CAINT-1175 An error occurs if a user attempts to revert to an original mapping file after remapping | 1d? | 2012-06-19 | 2012-06-19 | 148 |  |  |
| 150 | JIRA CAINT-1169 Update Genomic Data Source configuration to utilize SSO when SSO is enabled. | 1d | 2012-06-20 | 2012-06-20 |  | start no earlier than 2012-06-20 | ABE |

Removed: 145 JIRA CAINT-1174 M&B: Expressions not visible in IGV

Changed:

| ID | Task | Start | Finish | Duration | Complete | Total float | Predecessors | Other |
| --- | --- | --- | --- | --- | --- | --- | --- | --- |
| 138 | **Iteration 20** | 2012-05-31 A | 2012-06-06 A |  | 0% → 100% | 0d → none |  |  |
| 139 | JIRA CAINT-1169 SSO -Phase 1 Genomic Data Source configuration to utilize SSO when SSO is enabled. | 2012-05-31 A | 2012-06-06 A |  | 0% → 100% | 0d → none |  | was named JIRA CAINT-1169 SSO -Update Genomic Data Source configuration to utilize SSO when SSO is enabled. |
| 140 | JIRA CAINT-1170 SSO-Update data refresh task to support SSO Phase 1 | 2012-06-04 A | 2012-06-06 A |  | 0% → 100% | 0d → none |  | was named JIRA CAINT-1170 SSO-Update data refresh task to support SSO |
| 143 | JIRA CAINT-1091 Generating a KM plot from a study with 300 annotation columns causes slow performanc | 2012-06-07 → 2012-06-11 (+4d) | 2012-06-08 → 2012-06-13 (+5d) | 2d → 3d |  | 2d → 3d | none → 142 | was named JIRA CAINT-1160 SSO - Integration with caArray; resources SL → ABE |
| 144 | JIRA CAINT-1177 Deploy caIntegrator instance in SSO mode on de | 2012-06-11 → 2012-06-14 (+3d) | 2012-06-18 → 2012-06-15 (-3d) | 6d → 2d |  | 2d → 3d |  | was named JIRA CAINT-1091 M&B: Generating a KM plot from a study with 300 annotation columns causes an internal server error; resources SL → ABE |
| 145 | JIRA CAINT-1182 Role-based permissions for genomic data are not properly restricting dat | 2012-06-07 → 2012-06-11 (+4d) | 2012-06-12 → 2012-06-14 (+2d) |  |  | 0d → 1d |  | was named JIRA CAINT-1173 M&B: Annotations not visible in IGV; constraint none → start no earlier than 2012-06-11; resources ABE → SL |
| 146 | JIRA CAINT-1173 Annotations are not visible in IGV | 2012-06-18 → 2012-06-15 (-3d) | 2012-06-20 → 2012-06-19 (-1d) |  |  | 0d → 1d | JIRA CAINT-1174 M&B: Expressions not visible in IGV → 145 | was named JIRA CAINT-1162 M&B: Error message referencing Goby Alignment files IGV |
| 152 | Appscan | 2012-06-11 → 2012-06-15 (+4d) | 2012-06-13 → 2012-06-19 (+6d) |  |  | 5d → 1d | 143 → none | constraint none → start no earlier than 2012-06-15; resources none → Systems |
| 153 | 508 Scan | 2012-06-07 → 2012-06-11 (+4d) | 2012-06-07 → 2012-06-15 (+8d) | 1d? → 5d |  | 9d → 3d |  | constraint none → start no earlier than 2012-06-11; resources none → HS |
| 154 | QA - SSO, Role Based Security and Other bugs | 2012-06-11 → 2012-06-07 (-4d) | 2012-06-15 → 2012-06-20 (+5d) | 5d → 10d |  | 3d → 0d | 143 → none | was named QA - SSO, M&B; constraint none → start no earlier than 2012-06-07; resources none → HS |

## Version 53 (saved 2012-06-19, file caintegrator_project_plan.mpp)

Last finish 2012-07-17 → 2012-07-19 (+2d). Complete tasks 119 → 126.

Added:

| ID | Task | Duration | Start | Finish | Predecessors | Resources |
| --- | --- | --- | --- | --- | --- | --- |
| 146 | JIRA CAINT-1183 Text on the Edit Study page should change to clarify use of Group Authorization | 1d? | 2012-06-15 A | 2012-06-15 A | 145 | ABE |
| 148 | JIRA CAINT-1185 Editing authorizations before loading subject annotation source produces NullPointerException | 0.5d | 2012-06-18 A | 2012-06-18 A | 146 | ABE |
| 150 | JIRA CAINT-1180 Role-based permissions for clinical data is not properly restricting data | 2d | 2012-06-19 | 2012-06-20 | 145 | SL |
| 153 | JIRA CAINT-1181 Role-based restriction of subjects should be configured using permissible values | 1d? | 2012-06-21 | 2012-06-21 | 150 | SL |
| 154 | JIRA CAINT-1039 Convert caIntegrator from published help system to wiki-based help | 1d? | 2012-06-22 | 2012-06-22 | 153 | ABE |

Removed: 150 JIRA CAINT-1169 Update Genomic Data Source configuration to utilize SSO when SSO is enabled.

Changed:

| ID | Task | Start | Finish | Duration | Complete | Total float | Predecessors | Other |
| --- | --- | --- | --- | --- | --- | --- | --- | --- |
| 34 | **CaIntegrator Version 1.4** |  | 2012-07-17 → 2012-07-19 (+2d) | 240d? → 242d? | 83% → 85% |  |  |  |
| 141 | **Iteration 21** | 2012-06-07 A | 2012-06-20 → 2012-06-22 (+2d) | 10d? → 12d? | 0% → 30% |  |  |  |
| 142 | JIRA CAINT-1170 SSO-Update data refresh task to support SSO - Phase 2 | 2012-06-07 A | 2012-06-08 A |  | 0% → 100% | 3d → none |  |  |
| 143 | JIRA CAINT-1091 Generating a KM plot from a study with 300 annotation columns causes slow performanc | 2012-06-11 A | 2012-06-13 A |  | 0% → 100% | 3d → none |  |  |
| 144 | JIRA CAINT-1177 Deploy caIntegrator instance in SSO mode on de | 2012-06-14 A | 2012-06-15 A |  | 0% → 100% | 3d → none |  |  |
| 145 | JIRA CAINT-1182 Role-based permissions for genomic data are not properly restricting dat | 2012-06-11 A | 2012-06-14 → 2012-06-18 A (+4d) | 4d → 6d | 0% → 100% | 1d → none |  |  |
| 147 | JIRA CAINT-1175 An error occurs if a user attempts to revert to an original mapping file after remapping | 2012-06-19 → 2012-06-18 A (-1d) | 2012-06-19 → 2012-06-18 A (-1d) | 1d? → 0.5d | 0% → 100% | 1d → none | 149 → 146 | resources none → ABE |
| 149 | JIRA CAINT-1162 Error message referencing Goby alignment files is displayed when launching IGV | 2012-06-18 → 2012-06-19 (+1d) | 2012-06-18 → 2012-06-19 (+1d) |  |  |  | none → 148 | constraint start no earlier than 2012-06-18 → start no earlier than 2012-06-19; resources none → ABE |
| 151 | JIRA CAINT-1173 Annotations are not visible in IGV | 2012-06-15 → 2012-06-20 (+5d) | 2012-06-19 → 2012-06-20 (+1d) | 3d → 1d |  |  | 145 → 149 |  |
| 152 | JIRA CAINT-1174 Expression data is not displayed in the IGV when launched from the left-hand men | 2012-06-15 → 2012-06-21 (+6d) | 2012-06-15 → 2012-06-21 (+6d) |  |  | 3d → 1d | none → 151 | constraint start no earlier than 2012-06-15 → none; resources none → ABE |
| 155 | Documentation (SSO, Role based, Upgrade guide) |  |  |  |  | 0d → 2d |  | was named Documentation (SSO, Role based,Wiki, Upgrade guide) |
| 156 | Appscan | 2012-06-15 → 2012-06-19 (+4d) | 2012-06-19 → 2012-06-21 (+2d) |  |  |  |  | constraint start no earlier than 2012-06-15 → start no earlier than 2012-06-19 |
| 158 | QA - SSO, Role Based Security and above bugs |  |  |  |  | 0d → 2d |  | was named QA - SSO, Role Based Security and Other bugs |
| 159 | **Release to Prod (1.4)** | 2012-06-21 → 2012-06-25 (+4d) | 2012-07-17 → 2012-07-19 (+2d) |  |  |  |  |  |
| 160 | **Prep for Release** | 2012-06-21 → 2012-06-25 (+4d) | 2012-06-28 → 2012-07-02 (+4d) |  |  |  |  |  |
| 161 | Drop to UCSF - Draft | 2012-06-21 → 2012-06-25 (+4d) | 2012-06-21 → 2012-06-25 (+4d) |  |  |  |  |  |
| 162 | Fix Any issues from Appscan | 2012-06-21 → 2012-06-25 (+4d) | 2012-06-25 → 2012-06-27 (+2d) |  |  |  |  |  |
| 163 | 508 compliance check | 2012-06-26 → 2012-06-28 (+2d) | 2012-06-26 → 2012-06-28 (+2d) |  |  |  |  |  |
| 164 | Documentation Updates | 2012-06-21 → 2012-06-25 (+4d) | 2012-06-28 → 2012-07-02 (+4d) |  |  |  |  |  |
| 165 | Prep: Announcements and other updates (landing page etc) | 2012-06-21 → 2012-06-25 (+4d) | 2012-06-21 → 2012-06-25 (+4d) |  |  |  |  |  |
| 166 | Release Notes | 2012-06-21 → 2012-06-25 (+4d) | 2012-06-21 → 2012-06-25 (+4d) |  |  |  |  |  |
| 167 | Integration Test | 2012-06-21 → 2012-06-25 (+4d) | 2012-06-29 → 2012-07-03 (+4d) |  |  |  |  |  |
| 168 | **RC1** | 2012-07-02 → 2012-07-04 (+2d) | 2012-07-06 → 2012-07-10 (+4d) |  |  |  |  |  |
| 169 | RC1 to Stage | 2012-07-02 → 2012-07-04 (+2d) | 2012-07-04 → 2012-07-06 (+2d) |  |  |  |  |  |
| 170 | QA | 2012-07-05 → 2012-07-09 (+4d) | 2012-07-06 → 2012-07-10 (+4d) |  |  |  |  |  |
| 171 | Appscan | 2012-07-02 → 2012-07-04 (+2d) | 2012-07-04 → 2012-07-06 (+2d) |  |  |  |  |  |
| 172 | **RC2** | 2012-07-09 → 2012-07-11 (+2d) | 2012-07-16 → 2012-07-18 (+2d) |  |  |  |  |  |
| 173 | Fix any Issue | 2012-07-09 → 2012-07-11 (+2d) | 2012-07-10 → 2012-07-12 (+2d) |  |  |  |  |  |
| 174 | RC2 to Stage | 2012-07-11 → 2012-07-13 (+2d) | 2012-07-11 → 2012-07-13 (+2d) |  |  |  |  |  |
| 175 | QA | 2012-07-12 → 2012-07-16 (+4d) | 2012-07-12 → 2012-07-16 (+4d) |  |  |  |  |  |
| 176 | Appscan | 2012-07-12 → 2012-07-16 (+4d) | 2012-07-16 → 2012-07-18 (+2d) |  |  |  |  |  |
| 177 | Final Drop to UCSF | 2012-07-17 → 2012-07-19 (+2d) | 2012-07-17 → 2012-07-19 (+2d) |  |  |  |  |  |
| 178 | Prod Release/Final UAT for TRANSCEND | 2012-07-17 → 2012-07-19 (+2d) | 2012-07-17 → 2012-07-19 (+2d) |  |  |  |  |  |

## Version 54 (saved 2012-06-26, file caintegrator_project_plan.mpp)

Last finish 2012-07-19 → 2012-07-17 (-2d). Complete tasks 126 → 129.

Removed: 149 JIRA CAINT-1162 Error message referencing Goby alignment files is displayed when launching IGV; 151 JIRA CAINT-1173 Annotations are not visible in IGV; 152 JIRA CAINT-1174 Expression data is not displayed in the IGV when launched from the left-hand men

Changed:

| ID | Task | Start | Finish | Duration | Complete | Total float | Other |
| --- | --- | --- | --- | --- | --- | --- | --- |
| 34 | **CaIntegrator Version 1.4** |  | 2012-07-19 → 2012-07-17 (-2d) | 242d? → 240d? | 85% → 90% |  |  |
| 141 | **Iteration 21** |  | 2012-06-22 → 2012-06-28 (+6d) | 12d? → 16d? | 30% → 54% |  |  |
| 149 | JIRA CAINT-1180 Role-based permissions for clinical data is not properly restricting data | 2012-06-19 A | 2012-06-20 A |  | 0% → 100% | 0d → none |  |
| 150 | JIRA CAINT-1181 Role-based restriction of subjects should be configured using permissible values |  | 2012-06-21 → 2012-06-26 (+5d) | 1d? → 4d |  | 0d → 2d |  |
| 151 | JIRA CAINT-1039 Convert caIntegrator from published help system to wiki-based help | 2012-06-22 A | 2012-06-22 → 2012-06-25 A (+3d) | 1d? → 2d | 0% → 100% | 0d → none |  |
| 152 | Documentation (SSO, Role based, Upgrade guide) | 2012-06-07 A |  |  | 0% → 90% | 2d → 6d |  |
| 153 | Appscan | 2012-06-19 A | 2012-06-21 A |  | 0% → 100% | 1d → none |  |
| 154 | 508 Scan | 2012-06-11 → 2012-06-22 (+11d) | 2012-06-15 → 2012-06-28 (+13d) |  |  | 5d → 0d | constraint start no earlier than 2012-06-11 → start no earlier than 2012-06-22; resources HS → ABE |
| 155 | QA - SSO, Role Based Security and all bugs |  | 2012-06-20 → 2012-06-28 (+8d) | 10d → 16d |  | 2d → 0d | was named QA - SSO, Role Based Security and above bugs |
| 156 | **Release to Prod (1.4)** | 2012-06-25 → 2012-06-29 (+4d) | 2012-07-19 → 2012-07-17 (-2d) | 19d? → 13d? |  |  |  |
| 157 | **Prep for Release** | 2012-06-25 → 2012-06-29 (+4d) | 2012-07-02 → 2012-07-03 (+1d) | 6d? → 3d? |  | 13d → 10d |  |
| 158 | Drop to UCSF - Draft | 2012-06-25 → 2012-06-29 (+4d) | 2012-06-25 → 2012-06-29 (+4d) |  |  | 18d → 12d |  |
| 159 | Fix Any issues from Appscan | 2012-06-25 → 2012-06-29 (+4d) | 2012-06-27 → 2012-06-29 (+2d) | 3d → 1d |  | 15d → 11d |  |
| 160 | 508 compliance check | 2012-06-28 → 2012-07-02 (+4d) | 2012-06-28 → 2012-07-02 (+4d) |  |  | 15d → 11d |  |
| 161 | Documentation Updates | 2012-06-25 → 2012-06-29 (+4d) | 2012-07-02 → 2012-07-03 (+1d) | 6d → 3d |  | 13d → 10d |  |
| 162 | Prep: Announcements and other updates (landing page etc) | 2012-06-25 → 2012-06-29 (+4d) | 2012-06-25 → 2012-06-29 (+4d) |  |  | 18d → 12d |  |
| 163 | Release Notes | 2012-06-25 → 2012-06-29 (+4d) | 2012-06-25 → 2012-06-29 (+4d) |  |  | 18d → 12d |  |
| 164 | Integration Test | 2012-06-25 → 2012-06-29 (+4d) | 2012-07-03 → 2012-07-06 (+3d) | 7d → 6d |  |  |  |
| 165 | **RC1** | 2012-07-04 → 2012-07-09 (+5d) | 2012-07-10 → 2012-07-11 (+1d) | 5d → 3d |  |  |  |
| 166 | RC1 to Stage | 2012-07-04 → 2012-07-09 (+5d) | 2012-07-06 → 2012-07-10 (+4d) | 3d → 2d |  |  |  |
| 167 | QA | 2012-07-09 → 2012-07-11 (+2d) | 2012-07-10 → 2012-07-11 (+1d) | 2d → 1d |  |  |  |
| 168 | Appscan | 2012-07-04 → 2012-07-09 (+5d) | 2012-07-06 → 2012-07-09 (+3d) | 3d → 1d |  | 9d → 6d |  |
| 169 | **RC2** | 2012-07-11 → 2012-07-12 (+1d) | 2012-07-18 → 2012-07-16 (-2d) | 6d → 3d |  |  |  |
| 170 | Fix any Issue | 2012-07-11 → 2012-07-12 (+1d) |  | 2d → 1d |  |  |  |
| 173 | Appscan |  | 2012-07-18 → 2012-07-16 (-2d) | 3d → 1d |  |  |  |
| 174 | Final Drop to UCSF | 2012-07-19 → 2012-07-17 (-2d) | 2012-07-19 → 2012-07-17 (-2d) |  |  |  |  |
| 175 | Prod Release/Final UAT for TRANSCEND | 2012-07-19 → 2012-07-17 (-2d) | 2012-07-19 → 2012-07-17 (-2d) |  |  |  |  |

## Version 55 (saved 2012-07-03, file caintegrator_project_plan.mpp)

Last finish 2012-07-17 → 2012-07-13 (-4d). Complete tasks 129 → 132.

Removed: 159 Fix Any issues from Appscan; 160 508 compliance check; 162 Prep: Announcements and other updates (landing page etc); 169 RC2; 170 Fix any Issue; 171 RC2 to Stage; 172 QA; 173 Appscan

Changed:

| ID | Task | Start | Finish | Duration | Complete | Total float | Predecessors | Other |
| --- | --- | --- | --- | --- | --- | --- | --- | --- |
| 34 | **CaIntegrator Version 1.4** |  | 2012-07-17 → 2012-07-13 (-4d) | 240d? → 237d? | 90% → 93% |  |  |  |
| 141 | **Iteration 21** |  |  |  | 54% → 72% |  |  |  |
| 150 | JIRA CAINT-1181 Role-based restriction of subjects should be configured using permissible values | 2012-06-21 A | 2012-06-26 A |  | 0% → 100% | 2d → none |  |  |
| 152 | Documentation (SSO, Role based, Upgrade guide) |  | 2012-06-20 A |  | 90% → 100% | 6d → none |  |  |
| 154 | 508 Scan | 2012-06-22 A | 2012-06-28 A |  | 0% → 100% | 0d → none |  |  |
| 156 | **Release to Prod (1.4)** |  | 2012-07-17 → 2012-07-13 (-4d) | 13d? → 10d? |  |  |  |  |
| 157 | **Prep for Release** |  | 2012-07-03 → 2012-07-06 (+3d) | 3d? → 5d? |  | 10d → 0d |  |  |
| 158 | Integration Test |  |  | 6d → 5d |  |  |  |  |
| 159 | Drop to UCSF - Draft | 2012-06-29 → 2012-07-03 (+4d) | 2012-06-29 → 2012-07-03 (+4d) |  |  | 12d → 2d | 141 → none | constraint none → start no earlier than 2012-07-03; resources none → ABE |
| 160 | Documentation - final | 2012-06-29 → 2012-07-03 (+4d) | 2012-07-03 → 2012-07-06 (+3d) |  |  | 10d → 0d | 141 → none | was named Documentation Updates; constraint none → start no earlier than 2012-07-03; resources JH → ABE/JH |
| 162 | **RC1** |  |  |  |  |  | 158 → none |  |
| 163 | RC1 to Stage |  |  |  |  |  | 158 → 157 |  |
| 165 | Appscan | 2012-07-09 → 2012-07-11 (+2d) | 2012-07-09 → 2012-07-11 (+2d) |  |  | 6d → 0d | 158 → 163 |  |
| 166 | Final Drop to UCSF | 2012-07-17 → 2012-07-12 (-5d) | 2012-07-17 → 2012-07-12 (-5d) |  |  | 0d → 1d | RC2 → 162 | resources none → ABE |
| 167 | Prod Release at NCI | 2012-07-17 → 2012-07-12 (-5d) | 2012-07-17 → 2012-07-13 (-4d) | 1d → 2d |  |  | RC2 → 162 | was named Prod Release/Final UAT for TRANSCEND |

## Version 56 (saved 2012-07-10, file caintegrator_project_plan.mpp)

Last finish 2012-07-13 → 2012-07-17 (+4d). Complete tasks 132 → 135.

Changed:

| ID | Task | Start | Finish | Duration | Complete | Total float | Predecessors | Other |
| --- | --- | --- | --- | --- | --- | --- | --- | --- |
| 34 | **CaIntegrator Version 1.4** |  | 2012-07-13 → 2012-07-17 (+4d) | 237d? → 239d? | 93% → 97% |  |  |  |
| 141 | **Iteration 21** |  | 2012-06-28 A |  | 72% → 100% | 0d → none |  |  |
| 155 | QA - SSO, Role Based Security and all bugs | 2012-06-07 A | 2012-06-28 A |  | 0% → 100% | 0d → none |  |  |
| 156 | **Release to Prod (1.4)** | 2012-06-29 A | 2012-07-13 → 2012-07-17 (+4d) | 10d? → 12d? | 0% → 20% |  |  |  |
| 157 | **Prep for Release** | 2012-06-29 A | 2012-07-06 → 2012-07-11 (+5d) | 5d? → 8d? | 0% → 31% | 0d → 4d |  |  |
| 158 | Integration Test |  | 2012-07-06 → 2012-07-11 (+5d) | 5d → 8d |  | 0d → 4d |  |  |
| 159 | Drop to UCSF - Draft | 2012-07-03 → 2012-07-09 A (+6d) | 2012-07-03 → 2012-07-09 A (+6d) |  | 0% → 100% | 2d → none |  | constraint start no earlier than 2012-07-03 → start no earlier than 2012-07-09 |
| 160 | Documentation - final | 2012-07-03 A | 2012-07-06 A |  | 0% → 100% | 0d → none |  |  |
| 161 | Release Notes | 2012-06-29 → 2012-07-11 (+12d) | 2012-06-29 → 2012-07-11 (+12d) |  |  |  |  | constraint none → start no earlier than 2012-07-11 |
| 162 | **RC1** | 2012-07-09 → 2012-07-11 (+2d) | 2012-07-11 → 2012-07-13 (+2d) |  |  |  |  |  |
| 163 | RC1 to Stage | 2012-07-09 → 2012-07-11 (+2d) | 2012-07-10 → 2012-07-12 (+2d) |  |  |  | 157 → none | constraint none → start no earlier than 2012-07-11 |
| 164 | QA | 2012-07-11 → 2012-07-13 (+2d) | 2012-07-11 → 2012-07-13 (+2d) |  |  |  |  |  |
| 165 | Appscan | 2012-07-11 → 2012-07-13 (+2d) | 2012-07-11 → 2012-07-13 (+2d) |  |  |  |  |  |
| 166 | Final Drop to UCSF | 2012-07-12 → 2012-07-16 (+4d) | 2012-07-12 → 2012-07-16 (+4d) |  |  |  |  |  |
| 167 | Prod Release at NCI | 2012-07-12 → 2012-07-16 (+4d) | 2012-07-13 → 2012-07-17 (+4d) |  |  |  |  |  |
